# 01. Programa de Obra - 6 Casas - Altozano

Schedule from MS Project XML, 2026-05-11 to 2027-01-20, status date 2026-06-08, A marks actual dates.

## Calendars

- METTA: Mon-Fri 08:00-12:00, 13:00-17:00; Sat 08:00-13:00; Sun off. Exceptions (off unless hours are given): 2026-09-16 (Independencia de Mx), 2026-11-16 (Revolucion MX), 2026-12-24 to 2026-12-25 (Navidad), 2026-12-31 to 2027-01-01 (Año Nuevo).

## Resources

| Resource |
| --- |
| Artico - Trazo y nivelación |
| Artico - Excavación a mano material tipo B |
| Artico - Acarreo en carretilla 20 m |
| Artico - Cimbra perimetral losa de cimentación |
| Artico - Sistema antitermitas PVC |
| Artico - Hule negro en cimentación |
| Artico - Ramaleo poliducto eléctrico cimentación |
| Artico - Ramaleo eléctrico base-medición a centro de carga |
| Artico - Ramaleo eléctrico exterior |
| Artico - Ramaleo para cable poliducto 3/4 |
| Artico - Ramaleo para TV poliducto 3/4 |
| Artico - Ramaleo hidráulico CPVC 1" cimentación |
| Artico - Ramaleo hidráulico CPVC 3/4" cimentación |
| Artico - Ramaleo hidráulico CPVC 1/2" cimentación |
| Artico - Prueba hidráulica |
| Artico - Ramaleo sanitario PVC 4" cimentación |
| Artico - Ramaleo sanitario PVC 2" cimentación |
| Artico - Prueba sanitaria |
| Artico - Acero contratrabe CT-1 |
| Artico - Acero contratrabe CT-2 |
| Artico - Malla electrosoldada 6-6/8-8 |
| Artico - Bastón de refuerzo LS |
| Artico - Bastón de refuerzo LI |
| Artico - Colado losa de cimentación f’c=200 |
| Artico - Curado de concreto |
| Artico - Acero zapata ZT-1 |
| Artico - Acero zapata ZT-2 |
| Artico - Colado zapatas aisladas f’c=200 |
| Artico - Cimbra frontera zapatas |
| Artico - Castillo K1 |
| Artico - Castillo K2 |
| Artico - Castillo K3 |
| Artico - Castillo K4 |
| Artico - Castillo K5 |
| Artico - Refuerzo de muro K6 |
| Artico - Columna C1 |
| Artico - Columna C2 |
| Artico - Dala de cerramiento CR-1 |
| Artico - Dala de cerramiento CR-2 |
| Artico - Cadena block dala |
| Artico - Muro de ladrillo aparente |
| Artico - Muro de block planta baja |
| Artico - Escalera de concreto armado |
| Artico - Vigueta pretensada 1.40 m |
| Artico - Vigueta pretensada 1.95 m |
| Artico - Vigueta pretensada 3.35 m |
| Artico - Vigueta pretensada 3.50 m |
| Artico - Vigueta pretensada 3.75 m |
| Artico - Vigueta pretensada 3.90 m |
| Artico - Bovedilla poliestireno entrepiso |
| Artico - Dala de coronamiento |
| Artico - Nervadura NR-1 |
| Artico - Nervadura NR-2 |
| Artico - Trabe TR-1 |
| Artico - Malla 66-10/10 losa de compresión |
| Artico - Cimbra losa de azotea |
| Artico - Concreto losa de entrepiso f’c=200 |
| Artico - Curado de concreto |
| Artico - Cimbra exterior corta losa |
| Artico - Ramaleo poliducto eléctrico entrepiso |
| Artico - Ramaleo para cable poliducto 3/4 |
| Artico - Ramaleo para TV poliducto 3/4 |
| Artico - Ramaleo hidráulico CPVC 3/4" |
| Artico - Ramaleo hidráulico CPVC 1/2" |
| Artico - Prueba hidráulica |
| Artico - Ramaleo sanitario PVC 4" |
| Artico - Ramaleo sanitario PVC 2" |
| Artico - Prueba sanitaria |
| Artico - Castillo K1 |
| Artico - Castillo K2 |
| Artico - Castillo K3 |
| Artico - Castillo K4 |
| Artico - Castillo K5 |
| Artico - Refuerzo de muro K6 |
| Artico - Dala de cerramiento CR-1 |
| Artico - Cadena block dala |
| Artico - Muro de ladrillo aparente |
| Artico - Muro de block planta alta |
| Artico - Cortalosa CL-1 |
| Artico - Vigueta pretensada V11-40 390 |
| Artico - Vigueta pretensada V11-30 280 |
| Artico - Vigueta pretensada V11-30 285 |
| Artico - Vigueta pretensada V11-30 220 |
| Artico - Vigueta pretensada V11-40 75 |
| Artico - Vigueta pretensada V11-40 195 |
| Artico - Vigueta pretensada V11-50 450 |
| Artico - Bovedilla poliestireno azotea |
| Artico - Malla 66-10/10 losa de compresión |
| Artico - Concreto losa de azotea f’c=200 |
| Artico - Curado de concreto |
| Artico - Cimbra losa de azotea |
| Artico - Ramaleo de poliducto para instalacion electrica en azotea |
| Artico - Castillo K1 |
| Artico - Dala de cerramiento en pretil |
| Artico - Muro de block 12x15x40 |
| Artico - Chaflán en azotea |
| Artico - Aplanado exterior Mortermax fino |
| Artico - Acabado de azotea para impermeabilizar |
| Artico - Curado de concreto |
| Artico - Primera limpieza de obra |
| Artico - Primera carga y acarreo de escombro |
| Artico - Impermeabilización de pretil Kover 5 años |
| Artico - Impermeabilización de losa Kover 5 años |
| Artico - Lavadero de granito |
| Artico - Ramaleo hidráulico exterior CPVC 1 1/4" |
| Artico - Ramaleo hidráulico exterior CPVC 1" |
| Artico - Ramaleo hidráulico exterior CPVC 3/4" |
| Artico - Ramaleo hidráulico exterior CPVC 1/2" |
| Artico - Prueba hidráulica |
| Artico - Ramaleo sanitario exterior PVC 4" |
| Artico - Ramaleo sanitario exterior PVC 2" |
| Artico - Prueba sanitaria |
| Artico - Centro de carga muros PB |
| Artico - Firme de concreto 8 cm |
| Artico - Curado de concreto |
| Artico - Cisterna 2800 L con instalación |
| Artico - Banqueta y huellas de concreto |
| Artico - Curado de concreto |
| Artico - Número oficial |
| Artico - Detallado de rodapié exterior |
| Artico - Detallado de muros interiores |
| Artico - Aplanado grueso fachada |
| Artico - Aplanado fino estuco fachada |
| Artico - Pintura acrílica 1-0102P |
| Artico - Pintura acrílica 1-1404D |
| Artico - Yeso pulido en muros |
| Artico - Pintura vinílica 699 Cottage White |
| Artico - Pintura vinílica 691 Pacific Bungalow |
| Artico - Yeso pulido en plafones |
| Artico - Pintura vinílica Nano White |
| Artico - Perfilado de puertas y ventanas |
| Artico - Piso Moonside Crema 60x60 |
| Artico - Zoclo piso 60x60 Moonside Crema |
| Artico - Piso Moonside Crema 60x60 |
| Artico - Zoclo piso 60x60 Moonside Crema |
| Artico - Piso porcelánico Acali 20x20 beige |
| Artico - Impermeabilización en regadera |
| Artico - Azulejo Moonside Crema 60x60 |
| Artico - Fabricacion de nicho decorativo en baños |
| Artico - Sardinel en regadera |
| Artico - Piso Moonside Crema 60x60 |
| Artico - Zoclo piso 60x60 Moonside Crema |
| Artico - Rastrilleo, afine y nivelado de tierra |
| Artico - Segunda limpieza de obra |
| Artico - Segunda carga y acarreo de escombro |
| Artico - Puerta ventana P-05 corrediza |
| Artico - Ventana corrediza V-01 |
| Artico - Ventana corrediza V-03 |
| Artico - Ventana corrediza V-05 |
| Artico - Ventana corrediza tipo XO |
| Artico - Ventana fija escalera |
| Artico - Puerta P-01 de seguridad |
| Artico - Puerta P-03 interior |
| Artico - Puerta P-02 interior |
| Artico - Puerta exterior lavandería |
| Artico - Alimentación eléctrica base a centro de carga |
| Artico - Interruptor termomagnético 1x15 A |
| Artico - Interruptor termomagnético 1x20 A |
| Artico - Interruptor termomagnético 2x20 A |
| Artico - Salida para apagador 3 vías |
| Artico - Salida para apagador triple |
| Artico - Salida para apagador doble |
| Artico - Salida para apagador sencillo |
| Artico - Salida de alumbrado en losa |
| Artico - Salida de alumbrado en muro |
| Artico - Salida para contacto 220 V |
| Artico - Salida para contacto doble |
| Artico - Salida para contacto doble área húmeda |
| Artico - Salida TV / telefonía / intercom |
| Artico - Extractor 4" baño |
| Artico - Prueba eléctrica |
| Artico - Murete convencional |
| Artico - Tubo PVC 3/4" red de condensados |
| Artico - Caja PVC para lavadora |
| Artico - Salida para secadora PVC 4" |
| Artico - Salida hidráulica para boiler |
| Artico - Salida hidráulica para llave de jardín |
| Artico - Salida hidráulica para lavabo |
| Artico - Salida hidráulica para purificación |
| Artico - Salida sanitaria para lavabo |
| Artico - Salida hidráulica para lavadero |
| Artico - Salida sanitaria para lavadero |
| Artico - Salida hidráulica para lavadora |
| Artico - Salida sanitaria para lavadora |
| Artico - Salida hidráulica para regadera |
| Artico - Salida sanitaria para regadera |
| Artico - Salida hidráulica para WC |
| Artico - Salida sanitaria para WC |
| Artico - Salida hidráulica para zinc |
| Artico - Salida sanitaria para zinc |
| Artico - Tubo para ventila de baño 2" |
| Artico - Tubo para minisplit PVC 3" |
| Artico - Cuadro de medición |
| Artico - Prueba sanitaria |
| Artico - Prueba hidráulica |
| Artico - Salida hidráulica para tanque hidroneumático |
| Artico - Salida hidráulica para Active Driver |
| Artico - Ramaleo para gas 1/2" |
| Artico - Excavación a mano material tipo B |
| Artico - WC one piece Smart Corona |
| Artico - Lavabo Tarento Vanity |
| Artico - Regadera y monomando Thames |
| Artico - Coladera cuadrada para inserto cerámico |
| Artico - Toallero argolla Thames |
| Artico - Toallero barra Thames |
| Artico - Portapapel Thames |
| Artico - Gancho percha Thames |
| Artico - Electronivel Rotoplas 5 m |
| Artico - Manómetro |
| Artico - Interruptor de presión 30-50 PSI |
| Artico - Tanque hidroneumático FPS-24LX |
| Artico - Bomba sumergible Dominator 1.2 HP |
| Artico - Cisterna prefabricada 2800 L |
| Artico - Roseta de cerámica para luminaria |
| Artico - Spot Brighton |
| Artico - Arbotante bidireccional 12W |
| Artico - Limpieza fina para entrega |
| Artico - Tercera limpieza de obra |
| Artico - Tercera carga y acarreo de escombro |
| Artico - Barda de block aparente |

## Schedule

| ID | WBS | Task | Type | Duration | Start | Finish | Predecessors | Complete | Remaining | Baseline start | Baseline finish | Baseline duration | Total slack |
| --- | --- | --- | --- | --- | --- | --- | --- | --- | --- | --- | --- | --- | --- |
| 1 | 1 | **ALTOZANO - METTA - 6 CASAS** |  | 199d | 2026-05-11 A | 2027-01-20 |  | 4% | 191.36d | 2026-05-11 | 2027-01-20 | 199d | 0d |
| 2 | 1.1 | **HITOS IMPORTANTES** |  | 25d | 2026-05-11 A | 2026-06-10 |  |  | 25d | 2026-05-11 | 2026-06-10 | 25d | 0d |
| 3 | 1.1.1 | INICIO DEL PROYECTO | milestone | 0d | 2026-05-11 A | 2026-05-11 A |  | 100% |  | 2026-05-11 | 2026-05-11 |  |  |
| 4 | 1.1.2 | INICIO LOTE-04 M-661 ARTICO-A | milestone | 0d | 2026-05-11 A | 2026-05-11 A | 3 | 100% |  | 2026-05-11 | 2026-05-11 |  |  |
| 5 | 1.1.3 | INICIO LOTE-02 M-661 CORSAC-B | milestone | 0d | 2026-05-20 A | 2026-05-20 A | 3FS+8d | 100% |  | 2026-05-20 | 2026-05-20 |  |  |
| 6 | 1.1.4 | INICIO LOTE-03 M-661 CORSAC-A | milestone | 0d | 2026-05-20 A | 2026-05-20 A | 3FS+8d | 100% |  | 2026-05-20 | 2026-05-20 |  |  |
| 7 | 1.1.5 | INICIO LOTE-20 M-663 ARTICO-A | milestone | 0d | 2026-05-29 A | 2026-05-29 A | 3FS+16d | 100% |  | 2026-05-29 | 2026-05-29 |  |  |
| 8 | 1.1.6 | INICIO LOTE-21 M-663 CORSAC-A | milestone | 0d | 2026-05-29 A | 2026-05-29 A | 3FS+16d | 100% |  | 2026-05-29 | 2026-05-29 |  |  |
| 9 | 1.1.7 | INICIO LOTE-22 M-663 CORSAC-B | milestone | 0d | 2026-06-10 | 2026-06-10 | 3FS+25d |  |  | 2026-06-10 | 2026-06-10 |  | 0d |
| 10 | 1.2 | **LOTE 04 M-661 ARTICO-A** |  | 175d | 2026-05-11 A | 2026-12-16 |  | 11% | 155.45d | 2026-05-11 | 2026-12-16 | 175d | 24d |
| 11 | 1.2.1 | **HITOS IMPORTANTES DEL LOTE** |  | 175d | 2026-05-11 A | 2026-12-16 |  |  | 175d | 2026-05-11 | 2026-12-16 | 175d | 24d |
| 12 | 1.2.1.1 | Inicio del Lote-04 M-661 Artico-A | milestone | 0d | 2026-05-11 A | 2026-05-11 A | 4 | 100% |  | 2026-05-11 | 2026-05-11 |  |  |
| 13 | 1.2.1.2 | Colado de Losa de Cimentación | milestone | 0d | 2026-06-01 A | 2026-06-01 A | 43 | 100% |  | 2026-06-01 | 2026-06-01 |  |  |
| 14 | 1.2.1.3 | Colado de Losa de Entrepiso | milestone | 0d | 2026-07-08 | 2026-07-08 | 80 |  |  | 2026-07-08 | 2026-07-08 |  | 151d |
| 15 | 1.2.1.4 | Colado de Losa de Azotea | milestone | 0d | 2026-08-14 | 2026-08-14 | 115 |  |  | 2026-08-14 | 2026-08-14 |  | 121d |
| 16 | 1.2.1.5 | Entrega de vivienda | milestone | 0d | 2026-12-16 | 2026-12-16 | 264, 265, 266 |  |  | 2026-12-16 | 2026-12-16 |  | 24d |
| 17 | 1.2.2 | **TRABAJOS PRELIMINARES** |  | 2d | 2026-05-11 A | 2026-05-12 A |  | 100% |  | 2026-05-11 | 2026-05-12 | 2d |  |
| 18 | 1.2.2.1 | Trazo y nivelación |  | 2d | 2026-05-11 A | 2026-05-12 A | 12 | 100% |  | 2026-05-11 | 2026-05-12 | 2d |  |
| 19 | 1.2.3 | **EXCAVACIONES** |  | 3d | 2026-05-13 A | 2026-05-15 A |  | 100% |  | 2026-05-13 | 2026-05-15 | 3d |  |
| 20 | 1.2.3.1 | Excavación a mano material tipo B |  | 3d | 2026-05-13 A | 2026-05-15 A | 18 | 100% |  | 2026-05-13 | 2026-05-15 | 3d |  |
| 21 | 1.2.3.2 | Acarreo en carretilla 20 m |  | 2d | 2026-05-14 A | 2026-05-15 A | 20SS+1d | 100% |  | 2026-05-14 | 2026-05-15 | 2d |  |
| 22 | 1.2.4 | **CIMENTACION** |  | 13d | 2026-05-16 A | 2026-06-02 A |  | 100% |  | 2026-05-16 | 2026-06-02 | 13d |  |
| 23 | 1.2.4.1 | Cimbra perimetral losa de cimentación |  | 3d | 2026-05-16 A | 2026-05-20 A | 20, 21 | 100% |  | 2026-05-16 | 2026-05-20 | 3d |  |
| 24 | 1.2.4.2 | Sistema antitermitas PVC |  | 3d | 2026-05-16 A | 2026-05-20 A | 20, 21 | 100% |  | 2026-05-16 | 2026-05-20 | 3d |  |
| 25 | 1.2.4.3 | Hule negro en cimentación |  | 1d | 2026-05-20 A | 2026-05-21 A | 24 | 100% |  | 2026-05-20 | 2026-05-21 | 1d |  |
| 26 | 1.2.4.4 | Ramaleo poliducto eléctrico cimentación |  | 2d | 2026-05-21 A | 2026-05-23 A | 25 | 100% |  | 2026-05-21 | 2026-05-23 | 2d |  |
| 27 | 1.2.4.5 | Ramaleo eléctrico base-medición a centro de carga |  | 1d | 2026-05-21 A | 2026-05-22 A | 25 | 100% |  | 2026-05-21 | 2026-05-22 | 1d |  |
| 28 | 1.2.4.6 | Ramaleo eléctrico exterior |  | 1d | 2026-05-23 A | 2026-05-25 A | 26, 27 | 100% |  | 2026-05-23 | 2026-05-25 | 1d |  |
| 29 | 1.2.4.7 | Ramaleo para cable poliducto 3/4 |  | 1d | 2026-05-23 A | 2026-05-25 A | 26, 27 | 100% |  | 2026-05-23 | 2026-05-25 | 1d |  |
| 30 | 1.2.4.8 | Ramaleo para TV poliducto 3/4 |  | 1d | 2026-05-23 A | 2026-05-25 A | 26, 27 | 100% |  | 2026-05-23 | 2026-05-25 | 1d |  |
| 31 | 1.2.4.9 | Ramaleo hidráulico CPVC 1 cimentación |  | 1d | 2026-05-21 A | 2026-05-22 A | 25 | 100% |  | 2026-05-21 | 2026-05-22 | 1d |  |
| 32 | 1.2.4.10 | Ramaleo hidráulico CPVC 3/4 cimentación |  | 2d | 2026-05-22 A | 2026-05-25 A | 31 | 100% |  | 2026-05-22 | 2026-05-25 | 2d |  |
| 33 | 1.2.4.11 | Ramaleo hidráulico CPVC 1/2 cimentación |  | 2d | 2026-05-25 A | 2026-05-27 A | 32 | 100% |  | 2026-05-25 | 2026-05-27 | 2d |  |
| 34 | 1.2.4.12 | Prueba hidráulica |  | 1d | 2026-05-27 A | 2026-05-28 A | 31, 32, 33 | 100% |  | 2026-05-27 | 2026-05-28 | 1d |  |
| 35 | 1.2.4.13 | Ramaleo sanitario PVC 4 cimentación |  | 2d | 2026-05-22 A | 2026-05-25 A | 25FS+1d | 100% |  | 2026-05-22 | 2026-05-25 | 2d |  |
| 36 | 1.2.4.14 | Ramaleo sanitario PVC 2 cimentación |  | 1d | 2026-05-25 A | 2026-05-26 A | 35 | 100% |  | 2026-05-25 | 2026-05-26 | 1d |  |
| 37 | 1.2.4.15 | Prueba sanitaria |  | 1d | 2026-05-26 A | 2026-05-27 A | 35, 36 | 100% |  | 2026-05-26 | 2026-05-27 | 1d |  |
| 38 | 1.2.4.16 | Acero contratrabe CT-1 |  | 4d | 2026-05-20 A | 2026-05-25 A | 23 | 100% |  | 2026-05-20 | 2026-05-25 | 4d |  |
| 39 | 1.2.4.17 | Acero contratrabe CT-2 |  | 4d | 2026-05-20 A | 2026-05-25 A | 23 | 100% |  | 2026-05-20 | 2026-05-25 | 4d |  |
| 40 | 1.2.4.18 | Malla electrosoldada 6-6/8-8 |  | 2d | 2026-05-27 A | 2026-05-29 A | 38, 39, 41, 42 | 100% |  | 2026-05-27 | 2026-05-29 | 2d |  |
| 41 | 1.2.4.19 | Bastón de refuerzo LS |  | 2d | 2026-05-25 A | 2026-05-27 A | 38, 39 | 100% |  | 2026-05-25 | 2026-05-27 | 2d |  |
| 42 | 1.2.4.20 | Bastón de refuerzo LI |  | 2d | 2026-05-25 A | 2026-05-27 A | 38, 39 | 100% |  | 2026-05-25 | 2026-05-27 | 2d |  |
| 43 | 1.2.4.21 | Colado losa de cimentación f’c=200 |  | 1d | 2026-05-29 A | 2026-06-01 A | 23, 25, 38, 39, 40, 41, 42, 37, 34, 28, 29, 30 | 100% |  | 2026-05-29 | 2026-06-01 | 1d |  |
| 44 | 1.2.4.22 | Curado de concreto |  | 1d | 2026-06-01 A | 2026-06-02 A | 43 | 100% |  | 2026-06-01 | 2026-06-02 | 1d |  |
| 45 | 1.2.4.23 | Acero zapata ZT-1 |  | 4d | 2026-05-25 A | 2026-05-29 A | 38, 39 | 100% |  | 2026-05-25 | 2026-05-29 | 4d |  |
| 46 | 1.2.4.24 | Acero zapata ZT-2 |  | 4d | 2026-05-25 A | 2026-05-29 A | 38, 39 | 100% |  | 2026-05-25 | 2026-05-29 | 4d |  |
| 47 | 1.2.4.25 | Colado zapatas aisladas f’c=200 |  | 1d | 2026-06-01 A | 2026-06-02 A | 48 | 100% |  | 2026-06-01 | 2026-06-02 | 1d |  |
| 48 | 1.2.4.26 | Cimbra frontera zapatas |  | 3d | 2026-05-27 A | 2026-06-01 A | 45FS-2d, 46FS-2d | 100% |  | 2026-05-27 | 2026-06-01 | 3d |  |

| ID | WBS | Task | Duration | Start | Finish | Predecessors | Complete | Remaining | Baseline start | Baseline finish | Baseline duration | Total slack | Free slack |
| --- | --- | --- | --- | --- | --- | --- | --- | --- | --- | --- | --- | --- | --- |
| 49 | 1.2.5 | **MUROS, PLANTA BAJA. CASTILLOS Y CERRAMIENTOS** | 20d | 2026-05-26 A | 2026-06-19 |  | 51% | 9.86d | 2026-05-26 | 2026-06-19 | 20d | 166d |  |
| 50 | 1.2.5.1 | Anclaje de castillos y Columnas PB | 5d | 2026-05-26 A | 2026-06-02 A | 38FS+1d, 39FS+1d | 100% |  | 2026-05-26 | 2026-06-02 | 5d |  |  |
| 51 | 1.2.5.2 | Castillo K1 | 4d | 2026-06-02 A | 2026-06-06 A | 50, 44 | 100% |  | 2026-06-02 | 2026-06-06 | 4d |  |  |
| 52 | 1.2.5.3 | Castillo K2 | 4d | 2026-06-02 A | 2026-06-06 A | 50, 44 | 100% |  | 2026-06-02 | 2026-06-06 | 4d |  |  |
| 53 | 1.2.5.4 | Castillo K3 | 3d | 2026-06-04 A | 2026-06-08 A | 51FS-2d | 100% |  | 2026-06-04 | 2026-06-08 | 3d |  |  |
| 54 | 1.2.5.5 | Castillo K4 | 3d | 2026-06-04 A | 2026-06-08 A | 51FS-2d | 100% |  | 2026-06-04 | 2026-06-08 | 3d |  |  |
| 55 | 1.2.5.6 | Castillo K5 | 3d | 2026-06-06 A | 2026-06-10 | 53FS-1d, 54FS-1d | 50% | 1.5d | 2026-06-06 | 2026-06-10 | 3d | 0.5d | 0d |
| 56 | 1.2.5.7 | Refuerzo de muro K6 | 3d | 2026-06-08 A | 2026-06-11 | 55FS-2d | 17% | 2.5d | 2026-06-08 | 2026-06-11 | 3d | 169d | 0d |
| 57 | 1.2.5.8 | Columna C1 | 4d | 2026-06-02 A | 2026-06-06 A | 50, 44 | 100% |  | 2026-06-02 | 2026-06-06 | 4d |  |  |
| 58 | 1.2.5.9 | Columna C2 | 4d | 2026-06-06 A | 2026-06-11 | 57 | 38% | 2.5d | 2026-06-06 | 2026-06-11 | 4d | 173d |  |
| 59 | 1.2.5.10 | Dala de cerramiento CR-1 | 4d | 2026-06-08 A | 2026-06-12 | 51, 52, 53 | 13% | 3.5d | 2026-06-08 | 2026-06-12 | 4d | 172d |  |
| 60 | 1.2.5.11 | Dala de cerramiento CR-2 | 3d | 2026-06-08 A | 2026-06-11 | 51, 52, 53 | 17% | 2.5d | 2026-06-08 | 2026-06-11 | 3d | 173d |  |
| 61 | 1.2.5.12 | Cadena block dala | 4d | 2026-06-11 | 2026-06-16 | 56 |  |  | 2026-06-11 | 2026-06-16 | 4d | 169d |  |
| 62 | 1.2.5.13 | Muro de ladrillo aparente | 15d | 2026-06-02 A | 2026-06-19 | 44 | 37% | 9.5d | 2026-06-02 | 2026-06-19 | 15d | 24d | 0d |
| 63 | 1.2.5.14 | Muro de block planta baja | 13d | 2026-06-04 A | 2026-06-19 | 44FS+2d | 27% | 9.5d | 2026-06-04 | 2026-06-19 | 13d | 24d | 0d |
| 64 | 1.2.6 | **ESCALERA** | 14d | 2026-07-09 | 2026-07-27 |  |  |  | 2026-07-09 | 2026-07-27 | 14d | 137d |  |
| 65 | 1.2.6.1 | Escalera de concreto armado | 14d | 2026-07-09 | 2026-07-27 | 80 |  |  | 2026-07-09 | 2026-07-27 | 14d | 137d |  |
| 66 | 1.2.7 | **LOSA DE ENTREPISO (viegueta y caseton)** | 18d | 2026-06-17 | 2026-07-09 |  |  |  | 2026-06-17 | 2026-07-09 | 18d | 27d |  |
| 67 | 1.2.7.1 | Vigueta pretensada 1.40 m | 3d | 2026-06-17 | 2026-06-22 | 62FS-2d, 63FS-2d |  |  | 2026-06-17 | 2026-06-22 | 3d | 29d | 4d |
| 68 | 1.2.7.2 | Vigueta pretensada 1.95 m | 4d | 2026-06-18 | 2026-06-24 | 62FS-1d, 63FS-1d |  |  | 2026-06-18 | 2026-06-24 | 4d | 27d | 2d |
| 69 | 1.2.7.3 | Vigueta pretensada 3.35 m | 4d | 2026-06-19 | 2026-06-25 | 62, 63 |  |  | 2026-06-19 | 2026-06-25 | 4d | 26d | 1d |
| 70 | 1.2.7.4 | Vigueta pretensada 3.50 m | 4d | 2026-06-22 | 2026-06-26 | 62FS+1d, 63FS+1d |  |  | 2026-06-22 | 2026-06-26 | 4d | 25d | 0d |
| 71 | 1.2.7.5 | Vigueta pretensada 3.75 m | 4d | 2026-06-22 | 2026-06-26 | 62FS+1d, 63FS+1d |  |  | 2026-06-22 | 2026-06-26 | 4d | 25d | 0d |
| 72 | 1.2.7.6 | Vigueta pretensada 3.90 m | 4d | 2026-06-22 | 2026-06-26 | 62FS+1d, 63FS+1d |  |  | 2026-06-22 | 2026-06-26 | 4d | 25d | 0d |
| 73 | 1.2.7.7 | Bovedilla poliestireno entrepiso | 2d | 2026-06-26 | 2026-06-29 | 67, 68, 69, 70, 71, 72 |  |  | 2026-06-26 | 2026-06-29 | 2d | 25d | 0d |
| 74 | 1.2.7.8 | Dala de coronamiento | 3d | 2026-06-26 | 2026-06-30 | 79FS-1d, 67, 68, 69, 70, 71, 72 |  |  | 2026-06-26 | 2026-06-30 | 3d | 28d | 3d |
| 75 | 1.2.7.9 | Nervadura NR-1 | 3d | 2026-06-27 | 2026-07-01 | 79, 67, 68, 69, 70, 71, 72 |  |  | 2026-06-27 | 2026-07-01 | 3d | 24d | 0d |
| 76 | 1.2.7.10 | Nervadura NR-2 | 3d | 2026-06-27 | 2026-07-01 | 75SS |  |  | 2026-06-27 | 2026-07-01 | 3d | 26d | 0d |
| 77 | 1.2.7.11 | Trabe TR-1 | 5d | 2026-06-27 | 2026-07-03 | 75SS |  |  | 2026-06-27 | 2026-07-03 | 5d | 24d | 0d |
| 78 | 1.2.7.12 | Malla 66-10/10 losa de compresión | 2d | 2026-07-03 | 2026-07-06 | 73, 74, 88, 91 |  |  | 2026-07-03 | 2026-07-06 | 2d | 25d | 1d |
| 79 | 1.2.7.13 | Cimbra losa de azotea | 5d | 2026-06-22 | 2026-06-27 | 62FS+1d, 63FS+1d |  |  | 2026-06-22 | 2026-06-27 | 5d | 24d | 0d |
| 80 | 1.2.7.14 | Concreto losa de entrepiso f’c=200 | 1d | 2026-07-08 | 2026-07-08 | 75, 76, 77, 78, 85, 88, 91, 82, 93 |  |  | 2026-07-08 | 2026-07-08 | 1d | 24d | 0d |
| 81 | 1.2.7.15 | Curado de concreto | 1d | 2026-07-09 | 2026-07-09 | 80 |  |  | 2026-07-09 | 2026-07-09 | 1d | 24d | 0d |
| 82 | 1.2.7.16 | Cimbra exterior corta losa | 3d | 2026-06-30 | 2026-07-03 | 75FS-1d, 76FS-1d |  |  | 2026-06-30 | 2026-07-03 | 3d | 27d | 3d |
| 83 | 1.2.7.17 | Ramaleo poliducto eléctrico entrepiso | 2d | 2026-06-29 | 2026-07-01 | 73 |  |  | 2026-06-29 | 2026-07-01 | 2d | 28d | 0d |
| 84 | 1.2.7.18 | Ramaleo para cable poliducto 3/4 | 1d | 2026-06-29 | 2026-06-30 | 73 |  |  | 2026-06-29 | 2026-06-30 | 1d | 158d |  |
| 85 | 1.2.7.19 | Ramaleo para TV poliducto 3/4 | 1d | 2026-07-01 | 2026-07-02 | 83 |  |  | 2026-07-01 | 2026-07-02 | 1d | 28d | 4d |
| 86 | 1.2.7.20 | Ramaleo hidráulico CPVC 3/4 | 2d | 2026-06-30 | 2026-07-02 | 73FS+1d |  |  | 2026-06-30 | 2026-07-02 | 2d | 25d | 0d |
| 87 | 1.2.7.21 | Ramaleo hidráulico CPVC 1/2 | 1d | 2026-07-02 | 2026-07-03 | 86 |  |  | 2026-07-02 | 2026-07-03 | 1d | 25d | 0d |
| 88 | 1.2.7.22 | Prueba hidráulica | 1d | 2026-07-02 | 2026-07-03 | 86, 87FS-1d |  |  | 2026-07-02 | 2026-07-03 | 1d | 25d | 0d |
| 89 | 1.2.7.23 | Ramaleo sanitario PVC 4 | 2d | 2026-06-30 | 2026-07-02 | 73FS+1d |  |  | 2026-06-30 | 2026-07-02 | 2d | 25d | 0d |
| 90 | 1.2.7.24 | Ramaleo sanitario PVC 2 | 1d | 2026-07-02 | 2026-07-03 | 89 |  |  | 2026-07-02 | 2026-07-03 | 1d | 25d | 0d |
| 91 | 1.2.7.25 | Prueba sanitaria | 1d | 2026-07-02 | 2026-07-03 | 89, 90FS-1d |  |  | 2026-07-02 | 2026-07-03 | 1d | 25d | 0d |

| ID | WBS | Task | Duration | Start | Finish | Predecessors | Baseline start | Baseline finish | Baseline duration | Total slack | Free slack |
| --- | --- | --- | --- | --- | --- | --- | --- | --- | --- | --- | --- |
| 92 | 1.2.8 | **MUROS EN PLANTA ALTA, CASTILLOS Y CERRM.** | 21d | 2026-07-02 | 2026-07-29 |  | 2026-07-02 | 2026-07-29 | 21d | 24d |  |
| 93 | 1.2.8.1 | Anclaje de castillos y Columnas PA | 4d | 2026-07-02 | 2026-07-07 | 75FS-1d, 76FS-1d, 77FS-1d | 2026-07-02 | 2026-07-07 | 4d | 24d | 0d |
| 94 | 1.2.8.2 | Castillo K1 | 4d | 2026-07-10 | 2026-07-15 | 81 | 2026-07-10 | 2026-07-15 | 4d | 28d | 0d |
| 95 | 1.2.8.3 | Castillo K2 | 4d | 2026-07-11 | 2026-07-16 | 81FS+1d | 2026-07-11 | 2026-07-16 | 4d | 27d | 0d |
| 96 | 1.2.8.4 | Castillo K3 | 3d | 2026-07-13 | 2026-07-16 | 81FS+2d | 2026-07-13 | 2026-07-16 | 3d | 27d | 0d |
| 97 | 1.2.8.5 | Castillo K4 | 3d | 2026-07-15 | 2026-07-18 | 94 | 2026-07-15 | 2026-07-18 | 3d | 28d | 1d |
| 98 | 1.2.8.6 | Castillo K5 | 3d | 2026-07-15 | 2026-07-18 | 94 | 2026-07-15 | 2026-07-18 | 3d | 28d | 1d |
| 99 | 1.2.8.7 | Refuerzo de muro K6 | 3d | 2026-07-16 | 2026-07-20 | 94, 95, 96 | 2026-07-16 | 2026-07-20 | 3d | 27d | 0d |
| 100 | 1.2.8.8 | Dala de cerramiento CR-1 | 4d | 2026-07-20 | 2026-07-24 | 97, 98, 99 | 2026-07-20 | 2026-07-24 | 4d | 27d | 0d |
| 101 | 1.2.8.9 | Cadena block dala | 3d | 2026-07-24 | 2026-07-29 | 99, 100 | 2026-07-24 | 2026-07-29 | 3d | 27d | 0d |
| 102 | 1.2.8.10 | Muro de ladrillo aparente | 15d | 2026-07-10 | 2026-07-29 | 81 | 2026-07-10 | 2026-07-29 | 15d | 24d | 0d |
| 103 | 1.2.8.11 | Muro de block planta alta | 14d | 2026-07-11 | 2026-07-29 | 81FS+1d | 2026-07-11 | 2026-07-29 | 14d | 24d | 0d |
| 104 | 1.2.9 | **LOSA AZOTEA** | 15d | 2026-07-29 | 2026-08-17 |  | 2026-07-29 | 2026-08-17 | 15d | 24d |  |
| 105 | 1.2.9.1 | Cortalosa CL-1 | 2d | 2026-08-11 | 2026-08-13 | 113 | 2026-08-11 | 2026-08-13 | 2d | 24d | 0d |
| 106 | 1.2.9.2 | Vigueta pretensada V11-40 390 | 5d | 2026-07-29 | 2026-08-04 | 102, 103, 101 | 2026-07-29 | 2026-08-04 | 5d | 27d | 3d |
| 107 | 1.2.9.3 | Vigueta pretensada V11-30 280 | 5d | 2026-07-29 | 2026-08-04 | 102, 103 | 2026-07-29 | 2026-08-04 | 5d | 27d | 3d |
| 108 | 1.2.9.4 | Vigueta pretensada V11-30 285 | 5d | 2026-07-29 | 2026-08-04 | 102, 103 | 2026-07-29 | 2026-08-04 | 5d | 27d | 3d |
| 109 | 1.2.9.5 | Vigueta pretensada V11-30 220 | 5d | 2026-07-31 | 2026-08-06 | 102FS+2d, 103FS+2d | 2026-07-31 | 2026-08-06 | 5d | 25d | 1d |
| 110 | 1.2.9.6 | Vigueta pretensada V11-40 75 | 5d | 2026-07-31 | 2026-08-06 | 102FS+2d, 103FS+2d | 2026-07-31 | 2026-08-06 | 5d | 25d | 1d |
| 111 | 1.2.9.7 | Vigueta pretensada V11-40 195 | 5d | 2026-08-01 | 2026-08-07 | 102FS+3d, 103FS+3d | 2026-08-01 | 2026-08-07 | 5d | 24d | 0d |
| 112 | 1.2.9.8 | Vigueta pretensada V11-50 450 | 5d | 2026-08-01 | 2026-08-07 | 102FS+3d, 103FS+3d | 2026-08-01 | 2026-08-07 | 5d | 24d | 0d |
| 113 | 1.2.9.9 | Bovedilla poliestireno azotea | 3d | 2026-08-07 | 2026-08-11 | 106, 107, 108, 109, 110, 111, 112 | 2026-08-07 | 2026-08-11 | 3d | 24d | 0d |
| 114 | 1.2.9.10 | Malla 66-10/10 losa de compresión | 2d | 2026-08-11 | 2026-08-13 | 113 | 2026-08-11 | 2026-08-13 | 2d | 24d | 0d |
| 115 | 1.2.9.11 | Concreto losa de azotea f’c=200 | 1d | 2026-08-13 | 2026-08-14 | 105, 113, 114, 118, 117 | 2026-08-13 | 2026-08-14 | 1d | 24d | 0d |
| 116 | 1.2.9.12 | Curado de concreto | 1d | 2026-08-14 | 2026-08-17 | 115 | 2026-08-14 | 2026-08-17 | 1d | 24d | 0d |
| 117 | 1.2.9.13 | Cimbra losa de azotea | 5d | 2026-07-29 | 2026-08-04 | 102, 103 | 2026-07-29 | 2026-08-04 | 5d | 32d | 8d |
| 118 | 1.2.9.14 | Ramaleo de poliducto para inst. electrica en azotea | 2d | 2026-08-11 | 2026-08-13 | 113 | 2026-08-11 | 2026-08-13 | 2d | 24d | 0d |

| ID | WBS | Task | Duration | Start | Finish | Predecessors | Baseline start | Baseline finish | Baseline duration | Total slack | Free slack |
| --- | --- | --- | --- | --- | --- | --- | --- | --- | --- | --- | --- |
| 119 | 1.2.10 | **PRETIL Y ACABADOS DE AZOTEA** | 19d | 2026-08-17 | 2026-09-09 |  | 2026-08-17 | 2026-09-09 | 19d | 24d |  |
| 120 | 1.2.10.1 | Castillo K1 | 5d | 2026-08-19 | 2026-08-25 | 122SS+2d | 2026-08-19 | 2026-08-25 | 5d | 24d | 0d |
| 121 | 1.2.10.2 | Dala de cerramiento en pretil | 4d | 2026-08-22 | 2026-08-27 | 120FS-2d, 122FS-2d | 2026-08-22 | 2026-08-27 | 4d | 24d | 0d |
| 122 | 1.2.10.3 | Muro de block 12x15x40 | 5d | 2026-08-17 | 2026-08-22 | 116 | 2026-08-17 | 2026-08-22 | 5d | 24d | 0d |
| 123 | 1.2.10.4 | Chaflán en azotea | 4d | 2026-08-25 | 2026-08-29 | 122, 120 | 2026-08-25 | 2026-08-29 | 4d | 24d | 0d |
| 124 | 1.2.10.5 | Aplanado exterior Mortermax fino | 5d | 2026-08-27 | 2026-09-02 | 123FS-2d, 121 | 2026-08-27 | 2026-09-02 | 5d | 24d | 0d |
| 125 | 1.2.10.6 | Acabado de azotea para impermeabilizar | 4d | 2026-09-04 | 2026-09-09 | 126 | 2026-09-04 | 2026-09-09 | 4d | 24d | 0d |
| 126 | 1.2.10.7 | Curado de concreto | 1d | 2026-09-03 | 2026-09-03 | 123, 124 | 2026-09-03 | 2026-09-03 | 1d | 24d | 0d |
| 127 | 1.2.11 | **PRIMERA LIMPIEZA DE OBRA** | 4d | 2026-08-17 | 2026-08-21 |  | 2026-08-17 | 2026-08-21 | 4d | 77d |  |
| 128 | 1.2.11.1 | Primera limpieza de obra | 2d | 2026-08-17 | 2026-08-19 | 116 | 2026-08-17 | 2026-08-19 | 2d | 77d | 0d |
| 129 | 1.2.11.2 | Primera carga y acarreo de escombro | 2d | 2026-08-19 | 2026-08-21 | 128 | 2026-08-19 | 2026-08-21 | 2d | 77d | 1d |
| 130 | 1.2.12 | **IMPERMEABILIZACION** | 5d | 2026-09-09 | 2026-09-15 |  | 2026-09-09 | 2026-09-15 | 5d | 24d |  |
| 131 | 1.2.12.1 | Impermeabilización de pretil Kover 5 años | 4d | 2026-09-09 | 2026-09-14 | 125 | 2026-09-09 | 2026-09-14 | 4d | 25d | 1d |
| 132 | 1.2.12.2 | Impermeabilización de losa Kover 5 años | 5d | 2026-09-09 | 2026-09-15 | 125 | 2026-09-09 | 2026-09-15 | 5d | 24d | 0d |
| 133 | 1.2.13 | **ALBAÑILERIA** | 62d | 2026-08-22 | 2026-11-09 |  | 2026-08-22 | 2026-11-09 | 62d | 43d |  |
| 134 | 1.2.13.1 | Lavadero de granito | 4d | 2026-10-06 | 2026-10-12 | 158SS+8d | 2026-10-06 | 2026-10-12 | 4d | 76d |  |
| 135 | 1.2.13.2 | Ramaleo hidráulico exterior CPVC 1 1/4 | 3d | 2026-09-15 | 2026-09-21 | 131, 132 | 2026-09-15 | 2026-09-21 | 3d | 24d | 0d |
| 136 | 1.2.13.3 | Ramaleo hidráulico exterior CPVC 1 | 2d | 2026-09-15 | 2026-09-18 | 135SS | 2026-09-15 | 2026-09-18 | 2d | 24d | 0d |
| 137 | 1.2.13.4 | Ramaleo hidráulico exterior CPVC 3/4 | 2d | 2026-09-18 | 2026-09-22 | 136 | 2026-09-18 | 2026-09-22 | 2d | 24d | 0d |
| 138 | 1.2.13.5 | Ramaleo hidráulico exterior CPVC 1/2 | 2d | 2026-09-18 | 2026-09-22 | 136 | 2026-09-18 | 2026-09-22 | 2d | 24d | 0d |
| 139 | 1.2.13.6 | Prueba hidráulica | 1d | 2026-09-22 | 2026-09-23 | 135, 136, 137, 138 | 2026-09-22 | 2026-09-23 | 1d | 24d | 0d |
| 140 | 1.2.13.7 | Ramaleo sanitario exterior PVC 4 | 4d | 2026-09-15 | 2026-09-22 | 131, 132 | 2026-09-15 | 2026-09-22 | 4d | 24d | 0d |
| 141 | 1.2.13.8 | Ramaleo sanitario exterior PVC 2 | 3d | 2026-09-17 | 2026-09-22 | 140SS+1d | 2026-09-17 | 2026-09-22 | 3d | 24d | 0d |
| 142 | 1.2.13.9 | Prueba sanitaria | 1d | 2026-09-22 | 2026-09-23 | 140, 141 | 2026-09-22 | 2026-09-23 | 1d | 24d | 0d |
| 143 | 1.2.13.10 | Centro de carga muros PB | 4d | 2026-09-21 | 2026-09-25 | 131FS+3d, 132FS+3d | 2026-09-21 | 2026-09-25 | 4d | 26d | 2d |
| 144 | 1.2.13.11 | Firme de concreto 8 cm | 4d | 2026-09-23 | 2026-09-28 | 139, 142, 146 | 2026-09-23 | 2026-09-28 | 4d | 70d | 0d |
| 145 | 1.2.13.12 | Curado de concreto | 1d | 2026-09-28 | 2026-09-29 | 144 | 2026-09-28 | 2026-09-29 | 1d | 70d | 17d |
| 146 | 1.2.13.13 | Cisterna 2800 L con instalación | 18d | 2026-08-22 | 2026-09-14 | 122, 128, 129 | 2026-08-22 | 2026-09-14 | 18d | 76d | 0d |
| 147 | 1.2.13.14 | Banqueta y huellas de concreto | 8d | 2026-09-30 | 2026-10-09 | 139, 142, 180, 235FS-2d, 241 | 2026-09-30 | 2026-10-09 | 8d | 53d | 0d |
| 148 | 1.2.13.15 | Curado de concreto | 1d | 2026-10-09 | 2026-10-12 | 147 | 2026-10-09 | 2026-10-12 | 1d | 53d | 0d |
| 149 | 1.2.13.16 | Número oficial | 1d | 2026-11-07 | 2026-11-09 | 155, 156 | 2026-11-07 | 2026-11-09 | 1d | 53d |  |
| 150 | 1.2.13.17 | Detallado de rodapié exterior | 4d | 2026-09-25 | 2026-09-30 | 153 | 2026-09-25 | 2026-09-30 | 4d | 85d |  |
| 151 | 1.2.13.18 | Detallado de muros interiores | 4d | 2026-09-15 | 2026-09-22 | 131, 132 | 2026-09-15 | 2026-09-22 | 4d | 28d | 4d |

| ID | WBS | Task | Duration | Start | Finish | Predecessors | Baseline start | Baseline finish | Baseline duration | Total slack | Free slack |
| --- | --- | --- | --- | --- | --- | --- | --- | --- | --- | --- | --- |
| 152 | 1.2.14 | **ACABADOS EN FACHADA A** | 47d | 2026-09-09 | 2026-11-07 |  | 2026-09-09 | 2026-11-07 | 47d | 54d |  |
| 153 | 1.2.14.1 | Aplanado grueso fachada | 12d | 2026-09-09 | 2026-09-25 | 125 | 2026-09-09 | 2026-09-25 | 12d | 84d | 0d |
| 154 | 1.2.14.2 | Aplanado fino estuco fachada | 10d | 2026-09-18 | 2026-10-01 | 153SS+7d | 2026-09-18 | 2026-10-01 | 10d | 84d |  |
| 155 | 1.2.14.3 | Pintura acrílica 1-0102P | 8d | 2026-10-27 | 2026-11-05 | 145FS+5d, 148FS+12d | 2026-10-27 | 2026-11-05 | 8d | 55d | 2d |
| 156 | 1.2.14.4 | Pintura acrílica 1-1404D | 10d | 2026-10-27 | 2026-11-07 | 145FS+5d, 148FS+12d | 2026-10-27 | 2026-11-07 | 10d | 53d | 0d |
| 157 | 1.2.15 | **APLANADOS Y PINTURA** | 63d | 2026-09-15 | 2026-12-04 |  | 2026-09-15 | 2026-12-04 | 63d | 26d |  |
| 158 | 1.2.15.1 | Yeso pulido en muros | 14d | 2026-09-26 | 2026-10-14 | 161FS-4d, 151, 143FS-1d, 215FS-2d, 216, 217, 218, 219, 220FS-1d, 221FS-1d, 222FS-1d, 223FS-1d, 224FS-2d, 225FS-2d, 226FS-3d, 229FS-1d, 230FS-5d, 231FS-5d, 232FS-6d, 233FS-2d, 234FS-7d | 2026-09-26 | 2026-10-14 | 14d | 24d | 0d |
| 159 | 1.2.15.2 | Pintura vinílica 699 Cottage White | 13d | 2026-11-19 | 2026-12-04 | 166FS-2d, 167FS-2d, 178FS-2d, 185, 186, 187, 188, 189, 190, 192, 193, 194, 195, 244, 245, 246, 247 | 2026-11-19 | 2026-12-04 | 13d | 24d | 0d |
| 160 | 1.2.15.3 | Pintura vinílica 691 Pacific Bungalow | 10d | 2026-11-06 | 2026-11-20 | 166, 167, 178 | 2026-11-06 | 2026-11-20 | 10d | 45d |  |
| 161 | 1.2.15.4 | Yeso pulido en plafones | 10d | 2026-09-15 | 2026-09-29 | 131, 132 | 2026-09-15 | 2026-09-29 | 10d | 26d | 2d |
| 162 | 1.2.15.5 | Pintura vinílica Nano White | 7d | 2026-11-10 | 2026-11-20 | 166FS+3d, 167FS+3d, 178FS+3d | 2026-11-10 | 2026-11-20 | 7d | 45d |  |
| 163 | 1.2.15.6 | Perfilado de puertas y ventanas | 4d | 2026-10-01 | 2026-10-06 | 158SS+4d | 2026-10-01 | 2026-10-06 | 4d | 80d |  |
| 164 | 1.2.16 | **PISOS Y AZULEJOS** | 23d | 2026-10-08 | 2026-11-06 |  | 2026-10-08 | 2026-11-06 | 23d | 26d |  |
| 165 | 1.2.16.1 | **AREA SOCIAL** | 15d | 2026-10-12 | 2026-10-29 |  | 2026-10-12 | 2026-10-29 | 15d | 24d |  |
| 166 | 1.2.16.1.1 | Piso Moonside Crema 60x60 | 14d | 2026-10-12 | 2026-10-28 | 158FS-2d, 237, 236 | 2026-10-12 | 2026-10-28 | 14d | 24d | 0d |
| 167 | 1.2.16.1.2 | Zoclo piso 60x60 Moonside Crema | 5d | 2026-10-23 | 2026-10-29 | 166FS-4d | 2026-10-23 | 2026-10-29 | 5d | 41d | 6d |
| 168 | 1.2.16.2 | **BAÑOS** | 17d | 2026-10-08 | 2026-10-29 |  | 2026-10-08 | 2026-10-29 | 17d | 35d |  |
| 169 | 1.2.16.2.1 | Piso Moonside Crema 60x60 | 4d | 2026-10-23 | 2026-10-28 | 173 | 2026-10-23 | 2026-10-28 | 4d | 35d | 0d |
| 170 | 1.2.16.2.2 | Zoclo piso 60x60 Moonside Crema | 2d | 2026-10-28 | 2026-10-29 | 169FS-1d | 2026-10-28 | 2026-10-29 | 2d | 61d |  |
| 171 | 1.2.16.2.3 | Piso porcelánico Acali 20x20 beige | 3d | 2026-10-23 | 2026-10-27 | 173 | 2026-10-23 | 2026-10-27 | 3d | 63d |  |
| 172 | 1.2.16.2.4 | Impermeabilización en regadera | 2d | 2026-10-16 | 2026-10-19 | 158, 174 | 2026-10-16 | 2026-10-19 | 2d | 35d | 0d |
| 173 | 1.2.16.2.5 | Azulejo Moonside Crema 60x60 | 5d | 2026-10-17 | 2026-10-23 | 172FS-1d, 227, 228, 237 | 2026-10-17 | 2026-10-23 | 5d | 35d | 0d |
| 174 | 1.2.16.2.6 | Fabricacion de nicho decorativo en baños | 6d | 2026-10-08 | 2026-10-16 | 158FS-4d | 2026-10-08 | 2026-10-16 | 6d | 35d | 0d |
| 175 | 1.2.16.2.7 | Sardinel en regadera | 4d | 2026-10-23 | 2026-10-28 | 173 | 2026-10-23 | 2026-10-28 | 4d | 62d |  |

| ID | WBS | Task | Duration | Start | Finish | Predecessors | Baseline start | Baseline finish | Baseline duration | Total slack | Free slack |
| --- | --- | --- | --- | --- | --- | --- | --- | --- | --- | --- | --- |
| 176 | 1.2.16.3 | **ESCALERA** | 9d | 2026-10-27 | 2026-11-06 |  | 2026-10-27 | 2026-11-06 | 9d | 24d |  |
| 177 | 1.2.16.3.1 | Piso Moonside Crema 60x60 | 7d | 2026-10-27 | 2026-11-04 | 158, 166FS-2d | 2026-10-27 | 2026-11-04 | 7d | 24d | 0d |
| 178 | 1.2.16.3.2 | Zoclo piso 60x60 Moonside Crema | 4d | 2026-11-02 | 2026-11-06 | 177FS-2d | 2026-11-02 | 2026-11-06 | 4d | 24d | 0d |
| 179 | 1.2.17 | **EXTERIOR** | 3d | 2026-09-23 | 2026-09-26 |  | 2026-09-23 | 2026-09-26 | 3d | 30d |  |
| 180 | 1.2.17.1 | Rastrilleo, afine y nivelado de tierra | 3d | 2026-09-23 | 2026-09-26 | 139, 142 | 2026-09-23 | 2026-09-26 | 3d | 30d | 0d |
| 181 | 1.2.18 | **SEGUNDA LIMPIEZA DE OBRA** | 4d | 2026-11-06 | 2026-11-11 |  | 2026-11-06 | 2026-11-11 | 4d | 42d |  |
| 182 | 1.2.18.1 | Segunda limpieza de obra | 2d | 2026-11-06 | 2026-11-09 | 177, 178 | 2026-11-06 | 2026-11-09 | 2d | 42d | 0d |
| 183 | 1.2.18.2 | Segunda carga y acarreo de escombro | 2d | 2026-11-09 | 2026-11-11 | 182 | 2026-11-09 | 2026-11-11 | 2d | 42d | 18d |
| 184 | 1.2.19 | **CANCELERIA PUERTAS Y VENTANAS DE ALUMINIO** | 13d | 2026-10-27 | 2026-11-11 |  | 2026-10-27 | 2026-11-11 | 13d | 29d |  |
| 185 | 1.2.19.1 | Puerta ventana P-05 corrediza | 7d | 2026-10-29 | 2026-11-06 | 158, 166 | 2026-10-29 | 2026-11-06 | 7d | 33d | 9d |
| 186 | 1.2.19.2 | Ventana corrediza V-01 | 4d | 2026-10-27 | 2026-10-30 | 158FS+10d | 2026-10-27 | 2026-10-30 | 4d | 38d | 14d |
| 187 | 1.2.19.3 | Ventana corrediza V-03 | 4d | 2026-10-29 | 2026-11-03 | 158FS+12d | 2026-10-29 | 2026-11-03 | 4d | 36d | 12d |
| 188 | 1.2.19.4 | Ventana corrediza V-05 | 4d | 2026-10-29 | 2026-11-03 | 158FS+12d | 2026-10-29 | 2026-11-03 | 4d | 36d | 12d |
| 189 | 1.2.19.5 | Ventana corrediza tipo XO | 4d | 2026-11-02 | 2026-11-06 | 158FS+10d, 166FS+3d | 2026-11-02 | 2026-11-06 | 4d | 33d | 9d |
| 190 | 1.2.19.6 | Ventana fija escalera | 6d | 2026-11-04 | 2026-11-11 | 158FS+7d, 166FS+2d, 177 | 2026-11-04 | 2026-11-11 | 6d | 29d | 5d |
| 191 | 1.2.20 | **CARPINTERIA, PUERTAS EXTERIORES E INTERIORES** | 9d | 2026-11-06 | 2026-11-19 |  | 2026-11-06 | 2026-11-19 | 9d | 24d |  |
| 192 | 1.2.20.1 | Puerta P-01 de seguridad | 5d | 2026-11-06 | 2026-11-12 | 178 | 2026-11-06 | 2026-11-12 | 5d | 28d | 4d |
| 193 | 1.2.20.2 | Puerta P-03 interior | 8d | 2026-11-06 | 2026-11-18 | 178 | 2026-11-06 | 2026-11-18 | 8d | 25d | 1d |
| 194 | 1.2.20.3 | Puerta P-02 interior | 8d | 2026-11-06 | 2026-11-18 | 178 | 2026-11-06 | 2026-11-18 | 8d | 25d | 1d |
| 195 | 1.2.20.4 | Puerta exterior lavandería | 4d | 2026-11-12 | 2026-11-19 | 178FS+5d | 2026-11-12 | 2026-11-19 | 4d | 24d | 0d |
| 196 | 1.2.21 | **INSTALACION ELECTRICA** | 19d | 2026-10-05 | 2026-10-28 |  | 2026-10-05 | 2026-10-28 | 19d | 53d |  |
| 197 | 1.2.21.1 | Alimentación eléctrica base a centro de carga | 5d | 2026-10-14 | 2026-10-20 | 143, 158 | 2026-10-14 | 2026-10-20 | 5d | 57d | 0d |
| 198 | 1.2.21.2 | Interruptor termomagnético 1x15 A | 1d | 2026-10-20 | 2026-10-21 | 197 | 2026-10-20 | 2026-10-21 | 1d | 57d | 4d |
| 199 | 1.2.21.3 | Interruptor termomagnético 1x20 A | 1d | 2026-10-20 | 2026-10-21 | 197 | 2026-10-20 | 2026-10-21 | 1d | 57d | 4d |
| 200 | 1.2.21.4 | Interruptor termomagnético 2x20 A | 1d | 2026-10-20 | 2026-10-21 | 197 | 2026-10-20 | 2026-10-21 | 1d | 57d | 4d |
| 201 | 1.2.21.5 | Salida para apagador 3 vías | 4d | 2026-10-08 | 2026-10-14 | 131, 158FS-4d | 2026-10-08 | 2026-10-14 | 4d | 53d | 0d |
| 202 | 1.2.21.6 | Salida para apagador triple | 3d | 2026-10-14 | 2026-10-17 | 131, 132, 158 | 2026-10-14 | 2026-10-17 | 3d | 57d | 0d |
| 203 | 1.2.21.7 | Salida para apagador doble | 3d | 2026-10-17 | 2026-10-21 | 201, 202 | 2026-10-17 | 2026-10-21 | 3d | 57d | 4d |
| 204 | 1.2.21.8 | Salida para apagador sencillo | 3d | 2026-10-14 | 2026-10-17 | 201 | 2026-10-14 | 2026-10-17 | 3d | 60d | 7d |
| 205 | 1.2.21.9 | Salida de alumbrado en losa | 5d | 2026-10-14 | 2026-10-20 | 201 | 2026-10-14 | 2026-10-20 | 5d | 55d | 0d |
| 206 | 1.2.21.10 | Salida de alumbrado en muro | 4d | 2026-10-14 | 2026-10-19 | 201 | 2026-10-14 | 2026-10-19 | 4d | 59d | 6d |
| 207 | 1.2.21.11 | Salida para contacto 220 V | 3d | 2026-10-16 | 2026-10-20 | 201FS+2d | 2026-10-16 | 2026-10-20 | 3d | 53d | 0d |
| 208 | 1.2.21.12 | Salida para contacto doble | 5d | 2026-10-16 | 2026-10-22 | 201FS+2d | 2026-10-16 | 2026-10-22 | 5d | 56d | 3d |
| 209 | 1.2.21.13 | Salida para contacto doble área húmeda | 2d | 2026-10-20 | 2026-10-22 | 207 | 2026-10-20 | 2026-10-22 | 2d | 56d | 3d |
| 210 | 1.2.21.14 | Salida TV / telefonía / intercom | 4d | 2026-10-20 | 2026-10-24 | 207 | 2026-10-20 | 2026-10-24 | 4d | 54d | 1d |
| 211 | 1.2.21.15 | Extractor 4 baño | 5d | 2026-10-20 | 2026-10-26 | 207 | 2026-10-20 | 2026-10-26 | 5d | 53d | 0d |
| 212 | 1.2.21.16 | Prueba eléctrica | 2d | 2026-10-27 | 2026-10-28 | 197, 198, 199, 200, 201, 202, 203, 204, 205, 206, 207, 208, 209, 210, 211, 213, 260, 261, 262 | 2026-10-27 | 2026-10-28 | 2d | 53d | 29d |
| 213 | 1.2.21.17 | Murete convencional | 4d | 2026-10-05 | 2026-10-09 | 147FS-4d | 2026-10-05 | 2026-10-09 | 4d | 66d | 13d |

| ID | WBS | Task | Duration | Start | Finish | Predecessors | Baseline start | Baseline finish | Baseline duration | Total slack | Free slack |
| --- | --- | --- | --- | --- | --- | --- | --- | --- | --- | --- | --- |
| 214 | 1.2.22 | **INSTALACIÓN HIDRO-SANITARIA** | 11d | 2026-09-23 | 2026-10-06 |  | 2026-09-23 | 2026-10-06 | 11d | 24d |  |
| 215 | 1.2.22.1 | Tubo PVC 3/4 red de condensados | 5d | 2026-09-23 | 2026-09-29 | 139 | 2026-09-23 | 2026-09-29 | 5d | 24d | 0d |
| 216 | 1.2.22.2 | Caja PVC para lavadora | 3d | 2026-09-23 | 2026-09-26 | 139 | 2026-09-23 | 2026-09-26 | 3d | 24d | 0d |
| 217 | 1.2.22.3 | Salida para secadora PVC 4 | 3d | 2026-09-23 | 2026-09-26 | 142 | 2026-09-23 | 2026-09-26 | 3d | 24d | 0d |
| 218 | 1.2.22.4 | Salida hidráulica para boiler | 2d | 2026-09-23 | 2026-09-25 | 139 | 2026-09-23 | 2026-09-25 | 2d | 25d | 1d |
| 219 | 1.2.22.5 | Salida hidráulica para llave de jardín | 3d | 2026-09-23 | 2026-09-26 | 139 | 2026-09-23 | 2026-09-26 | 3d | 24d | 0d |
| 220 | 1.2.22.6 | Salida hidráulica para lavabo | 4d | 2026-09-23 | 2026-09-28 | 139 | 2026-09-23 | 2026-09-28 | 4d | 24d | 0d |
| 221 | 1.2.22.7 | Salida hidráulica para purificación | 4d | 2026-09-23 | 2026-09-28 | 139 | 2026-09-23 | 2026-09-28 | 4d | 24d | 0d |
| 222 | 1.2.22.8 | Salida sanitaria para lavabo | 2d | 2026-09-25 | 2026-09-28 | 139FS+2d | 2026-09-25 | 2026-09-28 | 2d | 24d | 0d |
| 223 | 1.2.22.9 | Salida hidráulica para lavadero | 2d | 2026-09-25 | 2026-09-28 | 139FS+2d | 2026-09-25 | 2026-09-28 | 2d | 24d | 0d |
| 224 | 1.2.22.10 | Salida sanitaria para lavadero | 2d | 2026-09-26 | 2026-09-29 | 139FS+3d | 2026-09-26 | 2026-09-29 | 2d | 24d | 0d |
| 225 | 1.2.22.11 | Salida hidráulica para lavadora | 2d | 2026-09-26 | 2026-09-29 | 139FS+3d | 2026-09-26 | 2026-09-29 | 2d | 24d | 0d |
| 226 | 1.2.22.12 | Salida sanitaria para lavadora | 2d | 2026-09-28 | 2026-09-30 | 142FS+4d | 2026-09-28 | 2026-09-30 | 2d | 24d | 0d |
| 227 | 1.2.22.13 | Salida hidráulica para regadera | 5d | 2026-09-28 | 2026-10-03 | 139FS+4d | 2026-09-28 | 2026-10-03 | 5d | 29d | 0d |
| 228 | 1.2.22.14 | Salida sanitaria para regadera | 4d | 2026-09-28 | 2026-10-02 | 142FS+4d | 2026-09-28 | 2026-10-02 | 4d | 30d | 2d |
| 229 | 1.2.22.15 | Salida hidráulica para WC | 2d | 2026-09-25 | 2026-09-28 | 142FS+2d | 2026-09-25 | 2026-09-28 | 2d | 24d | 0d |
| 230 | 1.2.22.16 | Salida sanitaria para WC | 4d | 2026-09-28 | 2026-10-02 | 142FS+4d | 2026-09-28 | 2026-10-02 | 4d | 24d | 0d |
| 231 | 1.2.22.17 | Salida hidráulica para zinc | 4d | 2026-09-28 | 2026-10-02 | 142FS+4d | 2026-09-28 | 2026-10-02 | 4d | 24d | 0d |
| 232 | 1.2.22.18 | Salida sanitaria para zinc | 3d | 2026-09-30 | 2026-10-03 | 142FS+6d | 2026-09-30 | 2026-10-03 | 3d | 24d | 0d |
| 233 | 1.2.22.19 | Tubo para ventila de baño 2 | 5d | 2026-09-23 | 2026-09-29 | 215SS | 2026-09-23 | 2026-09-29 | 5d | 24d | 0d |
| 234 | 1.2.22.20 | Tubo para minisplit PVC 3 | 5d | 2026-09-29 | 2026-10-05 | 233 | 2026-09-29 | 2026-10-05 | 5d | 24d | 0d |
| 235 | 1.2.22.21 | Cuadro de medición | 5d | 2026-09-26 | 2026-10-02 | 180 | 2026-09-26 | 2026-10-02 | 5d | 30d | 0d |
| 236 | 1.2.22.22 | Prueba sanitaria | 1d | 2026-10-05 | 2026-10-06 | 217, 222, 224, 226, 228, 230, 233, 234 | 2026-10-05 | 2026-10-06 | 1d | 28d | 4d |
| 237 | 1.2.22.23 | Prueba hidráulica | 1d | 2026-10-03 | 2026-10-05 | 215, 218, 219, 220, 221, 223, 225, 227, 229, 231, 235, 238, 239 | 2026-10-03 | 2026-10-05 | 1d | 29d | 5d |
| 238 | 1.2.22.24 | Salida hidráulica para tanque hidroneumático | 3d | 2026-09-26 | 2026-09-30 | 180 | 2026-09-26 | 2026-09-30 | 3d | 32d | 3d |
| 239 | 1.2.22.25 | Salida hidráulica para Active Driver | 3d | 2026-09-26 | 2026-09-30 | 180 | 2026-09-26 | 2026-09-30 | 3d | 32d | 3d |

| ID | WBS | Task | Duration | Start | Finish | Predecessors | Baseline start | Baseline finish | Baseline duration | Total slack | Free slack |
| --- | --- | --- | --- | --- | --- | --- | --- | --- | --- | --- | --- |
| 240 | 1.2.23 | **INSTALACION DE GAS** | 8d | 2026-09-21 | 2026-09-30 |  | 2026-09-21 | 2026-09-30 | 8d | 53d |  |
| 241 | 1.2.23.1 | Ramaleo para gas 1/2 | 5d | 2026-09-24 | 2026-09-30 | 180FS-2d, 242 | 2026-09-24 | 2026-09-30 | 5d | 53d | 0d |
| 242 | 1.2.23.2 | Excavación a mano material tipo B | 3d | 2026-09-21 | 2026-09-24 | 180FF-2d | 2026-09-21 | 2026-09-24 | 3d | 53d | 0d |
| 243 | 1.2.24 | **MUEBLES SANITARIOS** | 29d | 2026-10-29 | 2026-12-04 |  | 2026-10-29 | 2026-12-04 | 29d | 24d |  |
| 244 | 1.2.24.1 | WC one piece Smart Corona | 2d | 2026-10-29 | 2026-10-30 | 236, 237, 166, 169 | 2026-10-29 | 2026-10-30 | 2d | 38d | 14d |
| 245 | 1.2.24.2 | Lavabo Tarento Vanity | 4d | 2026-10-29 | 2026-11-03 | 236, 237, 166, 169, 173 | 2026-10-29 | 2026-11-03 | 4d | 36d | 12d |
| 246 | 1.2.24.3 | Regadera y monomando Thames | 3d | 2026-10-31 | 2026-11-04 | 236, 237, 173FS+2d, 166, 169FS+2d | 2026-10-31 | 2026-11-04 | 3d | 35d | 11d |
| 247 | 1.2.24.4 | Coladera cuadrada para inserto cerámico | 2d | 2026-11-02 | 2026-11-04 | 237, 173, 169FS+3d | 2026-11-02 | 2026-11-04 | 2d | 35d | 11d |
| 248 | 1.2.24.5 | Toallero argolla Thames | 1d | 2026-12-03 | 2026-12-04 | 159FS-1d | 2026-12-03 | 2026-12-04 | 1d | 24d | 0d |
| 249 | 1.2.24.6 | Toallero barra Thames | 1d | 2026-12-03 | 2026-12-04 | 159FS-1d | 2026-12-03 | 2026-12-04 | 1d | 24d | 0d |
| 250 | 1.2.24.7 | Portapapel Thames | 1d | 2026-12-03 | 2026-12-04 | 159FS-1d | 2026-12-03 | 2026-12-04 | 1d | 24d | 0d |
| 251 | 1.2.24.8 | Gancho percha Thames | 1d | 2026-12-03 | 2026-12-04 | 159FS-1d | 2026-12-03 | 2026-12-04 | 1d | 24d | 0d |
| 252 | 1.2.25 | **EQUIPAMIENTO** | 6d | 2026-09-12 | 2026-09-22 |  | 2026-09-12 | 2026-09-22 | 6d | 83d |  |
| 253 | 1.2.25.1 | Electronivel Rotoplas 5 m | 2d | 2026-09-14 | 2026-09-17 | 258 | 2026-09-14 | 2026-09-17 | 2d | 86d | 62d |
| 254 | 1.2.25.2 | Manómetro | 1d | 2026-09-14 | 2026-09-15 | 258 | 2026-09-14 | 2026-09-15 | 1d | 87d | 63d |
| 255 | 1.2.25.3 | Interruptor de presión 30-50 PSI | 1d | 2026-09-14 | 2026-09-15 | 258 | 2026-09-14 | 2026-09-15 | 1d | 87d | 63d |
| 256 | 1.2.25.4 | Tanque hidroneumático FPS-24LX | 3d | 2026-09-14 | 2026-09-18 | 258 | 2026-09-14 | 2026-09-18 | 3d | 83d | 0d |
| 257 | 1.2.25.5 | Bomba sumergible Dominator 1.2 HP | 2d | 2026-09-18 | 2026-09-22 | 256 | 2026-09-18 | 2026-09-22 | 2d | 83d | 59d |
| 258 | 1.2.25.6 | Cisterna prefabricada 2800 L | 1d | 2026-09-12 | 2026-09-14 | 146FF | 2026-09-12 | 2026-09-14 | 1d | 83d | 0d |
| 259 | 1.2.26 | **LUMINARIAS** | 3d | 2026-10-20 | 2026-10-23 |  | 2026-10-20 | 2026-10-23 | 3d | 55d |  |
| 260 | 1.2.26.1 | Roseta de cerámica para luminaria | 3d | 2026-10-20 | 2026-10-23 | 205 | 2026-10-20 | 2026-10-23 | 3d | 55d | 2d |
| 261 | 1.2.26.2 | Spot Brighton | 3d | 2026-10-20 | 2026-10-23 | 205 | 2026-10-20 | 2026-10-23 | 3d | 55d | 2d |
| 262 | 1.2.26.3 | Arbotante bidireccional 12W | 2d | 2026-10-20 | 2026-10-22 | 205 | 2026-10-20 | 2026-10-22 | 2d | 56d | 3d |
| 263 | 1.2.27 | **TERCER LIMPIEZA DE OBRA** | 9d | 2026-12-04 | 2026-12-16 |  | 2026-12-04 | 2026-12-16 | 9d | 24d |  |
| 264 | 1.2.27.1 | Limpieza fina para entrega | 5d | 2026-12-04 | 2026-12-11 | 212, 195, 190, 159, 237, 236, 248, 249, 250, 251, 268, 253, 254, 255, 256, 257, 183 | 2026-12-04 | 2026-12-11 | 5d | 24d | 0d |
| 265 | 1.2.27.2 | Tercera limpieza de obra | 4d | 2026-12-08 | 2026-12-12 | 264FS-3d | 2026-12-08 | 2026-12-12 | 4d | 24d | 0d |
| 266 | 1.2.27.3 | Tercera carga y acarreo de escombro | 3d | 2026-12-12 | 2026-12-16 | 265 | 2026-12-12 | 2026-12-16 | 3d | 24d | 0d |

| ID | WBS | Task | Type | Duration | Start | Finish | Predecessors | Complete | Remaining | Baseline start | Baseline finish | Baseline duration | Total slack | Free slack |
| --- | --- | --- | --- | --- | --- | --- | --- | --- | --- | --- | --- | --- | --- | --- |
| 267 | 1.2.28 | **OBRA EXTERIOR - BARDA** |  | 18d | 2026-09-26 | 2026-10-19 |  |  |  | 2026-09-26 | 2026-10-19 | 18d | 61d |  |
| 268 | 1.2.28.1 | Barda de block aparente |  | 18d | 2026-09-26 | 2026-10-19 | 180 |  |  | 2026-09-26 | 2026-10-19 | 18d | 61d | 37d |
| 269 | 1.3 | **LOTE 02 M-661 CORSAC-B** |  | 178d | 2026-05-20 A | 2027-01-04 |  | 5% | 168.84d | 2026-05-20 | 2027-01-04 | 178d | 13d |  |
| 270 | 1.3.1 | **HITOS IMPORTANTES DEL LOTE** |  | 178d | 2026-05-20 A | 2027-01-04 |  |  | 178d | 2026-05-20 | 2027-01-04 | 178d | 13d |  |
| 271 | 1.3.1.1 | Inicio del Lote-02 M-661 Corsac-B | milestone | 0d | 2026-05-20 A | 2026-05-20 A | 5 | 100% |  | 2026-05-20 | 2026-05-20 |  |  |  |
| 272 | 1.3.1.2 | Colado de Losa de Cimentación | milestone | 0d | 2026-06-10 | 2026-06-10 | 303 |  |  | 2026-06-10 | 2026-06-10 |  | 174d |  |
| 273 | 1.3.1.3 | Colado de Losa de Entrepiso | milestone | 0d | 2026-07-17 | 2026-07-17 | 339 |  |  | 2026-07-17 | 2026-07-17 |  | 144d |  |
| 274 | 1.3.1.4 | Colado de Losa de Azotea | milestone | 0d | 2026-08-24 | 2026-08-24 | 379 |  |  | 2026-08-24 | 2026-08-24 |  | 114d |  |
| 275 | 1.3.1.5 | Entrega de vivienda | milestone | 0d | 2027-01-04 | 2027-01-04 | 571, 572, 573 |  |  | 2027-01-04 | 2027-01-04 |  | 13d |  |
| 276 | 1.3.2 | **TRABAJOS PRELIMINARES** |  | 2d | 2026-05-20 A | 2026-05-22 A |  | 100% |  | 2026-05-20 | 2026-05-22 | 2d |  |  |
| 277 | 1.3.2.1 | Trazo y nivelación |  | 2d | 2026-05-20 A | 2026-05-22 A | 271 | 100% |  | 2026-05-20 | 2026-05-22 | 2d |  |  |
| 278 | 1.3.3 | **EXCAVACIONES** |  | 3d | 2026-05-22 A | 2026-05-26 A |  | 100% |  | 2026-05-22 | 2026-05-26 | 3d |  |  |
| 279 | 1.3.3.1 | Excavación a mano material tipo B |  | 3d | 2026-05-22 A | 2026-05-26 A | 277 | 100% |  | 2026-05-22 | 2026-05-26 | 3d |  |  |
| 280 | 1.3.3.2 | Acarreo en carretilla 20 m |  | 2d | 2026-05-23 A | 2026-05-26 A | 279SS+1d | 100% |  | 2026-05-23 | 2026-05-26 | 2d |  |  |
| 281 | 1.3.4 | **CIMENTACION** |  | 13d | 2026-05-26 A | 2026-06-11 |  | 93% | 0.95d | 2026-05-26 | 2026-06-11 | 13d | 13d |  |
| 282 | 1.3.4.1 | Cimbra perimetral losa de cimentación |  | 3d | 2026-05-26 A | 2026-05-29 A | 279, 280 | 100% |  | 2026-05-26 | 2026-05-29 | 3d |  |  |
| 283 | 1.3.4.2 | Sistema antitermitas PVC |  | 3d | 2026-05-26 A | 2026-05-29 A | 279, 280 | 100% |  | 2026-05-26 | 2026-05-29 | 3d |  |  |
| 284 | 1.3.4.3 | Hule negro en cimentación |  | 1d | 2026-05-29 A | 2026-06-01 A | 283 | 100% |  | 2026-05-29 | 2026-06-01 | 1d |  |  |
| 285 | 1.3.4.4 | Ramaleo poliducto eléctrico cimentación |  | 2d | 2026-06-01 A | 2026-06-03 A | 284 | 100% |  | 2026-06-01 | 2026-06-03 | 2d |  |  |
| 286 | 1.3.4.5 | Ramaleo eléctrico base-medición a centro de carga |  | 1d | 2026-06-01 A | 2026-06-02 A | 284 | 100% |  | 2026-06-01 | 2026-06-02 | 1d |  |  |
| 287 | 1.3.4.6 | Ramaleo eléctrico exterior |  | 1d | 2026-06-03 A | 2026-06-04 A | 285, 286 | 100% |  | 2026-06-03 | 2026-06-04 | 1d |  |  |
| 288 | 1.3.4.7 | Ramaleo para cable poliducto 3/4 |  | 1d | 2026-06-03 A | 2026-06-04 A | 285, 286 | 100% |  | 2026-06-03 | 2026-06-04 | 1d |  |  |
| 289 | 1.3.4.8 | Ramaleo para TV poliducto 3/4 |  | 1d | 2026-06-03 A | 2026-06-04 A | 285, 286 | 100% |  | 2026-06-03 | 2026-06-04 | 1d |  |  |
| 290 | 1.3.4.9 | Ramaleo hidráulico CPVC 1-1/4" cimentación |  | 1d | 2026-06-01 A | 2026-06-02 A | 284 | 100% |  | 2026-06-01 | 2026-06-02 | 1d |  |  |
| 291 | 1.3.4.10 | Ramaleo hidráulico CPVC 1 cimentación |  | 1d | 2026-06-01 A | 2026-06-02 A | 284, 290SS | 100% |  | 2026-06-01 | 2026-06-02 | 1d |  |  |
| 292 | 1.3.4.11 | Ramaleo hidráulico CPVC 3/4 cimentación |  | 2d | 2026-06-02 A | 2026-06-04 A | 291 | 100% |  | 2026-06-02 | 2026-06-04 | 2d |  |  |
| 293 | 1.3.4.12 | Ramaleo hidráulico CPVC 1/2 cimentación |  | 2d | 2026-06-04 A | 2026-06-06 A | 292 | 100% |  | 2026-06-04 | 2026-06-06 | 2d |  |  |
| 294 | 1.3.4.13 | Prueba hidráulica |  | 1d | 2026-06-06 A | 2026-06-08 A | 290, 291, 292, 293 | 100% |  | 2026-06-06 | 2026-06-08 | 1d |  |  |
| 295 | 1.3.4.14 | Ramaleo sanitario PVC 4 cimentación |  | 2d | 2026-06-02 A | 2026-06-04 A | 284FS+1d | 100% |  | 2026-06-02 | 2026-06-04 | 2d |  |  |
| 296 | 1.3.4.15 | Ramaleo sanitario PVC 2 cimentación |  | 1d | 2026-06-04 A | 2026-06-05 A | 295 | 100% |  | 2026-06-04 | 2026-06-05 | 1d |  |  |
| 297 | 1.3.4.16 | Prueba sanitaria |  | 1d | 2026-06-05 A | 2026-06-06 A | 295, 296 | 100% |  | 2026-06-05 | 2026-06-06 | 1d |  |  |
| 298 | 1.3.4.17 | Acero contratrabe CT-1 |  | 4d | 2026-05-29 A | 2026-06-04 A | 282 | 100% |  | 2026-05-29 | 2026-06-04 | 4d |  |  |
| 299 | 1.3.4.18 | Acero contratrabe CT-2 |  | 4d | 2026-05-29 A | 2026-06-04 A | 282 | 100% |  | 2026-05-29 | 2026-06-04 | 4d |  |  |
| 300 | 1.3.4.19 | Malla electrosoldada 6-6/8-8 |  | 2d | 2026-06-06 A | 2026-06-09 | 298, 299, 301, 302 | 75% | 0.5d | 2026-06-06 | 2026-06-09 | 2d | 13d | 0d |
| 301 | 1.3.4.20 | Bastón de refuerzo LS |  | 2d | 2026-06-04 A | 2026-06-06 A | 298, 299 | 100% |  | 2026-06-04 | 2026-06-06 | 2d |  |  |
| 302 | 1.3.4.21 | Bastón de refuerzo LI |  | 2d | 2026-06-04 A | 2026-06-06 A | 298, 299 | 100% |  | 2026-06-04 | 2026-06-06 | 2d |  |  |
| 303 | 1.3.4.22 | Colado losa de cimentación f’c=200 |  | 1d | 2026-06-09 | 2026-06-10 | 282, 284, 287, 288, 289, 294, 297, 298, 299, 300, 301, 302, 305, 306 |  |  | 2026-06-09 | 2026-06-10 | 1d | 13d | 0d |
| 304 | 1.3.4.23 | Curado de concreto |  | 1d | 2026-06-10 | 2026-06-11 | 303 |  |  | 2026-06-10 | 2026-06-11 | 1d | 13d | 0d |
| 305 | 1.3.4.24 | Acero zapata ZT-1 |  | 4d | 2026-06-04 A | 2026-06-09 | 298, 299 | 88% | 0.5d | 2026-06-04 | 2026-06-09 | 4d | 13d | 0d |
| 306 | 1.3.4.25 | Acero zapata ZT-2 |  | 4d | 2026-06-04 A | 2026-06-09 | 298, 299 | 88% | 0.5d | 2026-06-04 | 2026-06-09 | 4d | 13d | 0d |

| ID | WBS | Task | Duration | Start | Finish | Predecessors | Complete | Remaining | Baseline start | Baseline finish | Baseline duration | Total slack | Free slack |
| --- | --- | --- | --- | --- | --- | --- | --- | --- | --- | --- | --- | --- | --- |
| 307 | 1.3.5 | **MUROS, PLANTA BAJA. CASTILLOS Y CERRAMIENTOS** | 20d | 2026-06-05 A | 2026-06-30 |  | 4% | 19.28d | 2026-06-05 | 2026-06-30 | 20d | 158d |  |
| 308 | 1.3.5.1 | Anclaje de castillos y Columnas PB | 5d | 2026-06-05 A | 2026-06-11 | 298FS+1d, 299FS+1d | 50% | 2.5d | 2026-06-05 | 2026-06-11 | 5d | 161d | 0d |
| 309 | 1.3.5.2 | Castillo K1 | 4d | 2026-06-11 | 2026-06-16 | 304, 308 |  |  | 2026-06-11 | 2026-06-16 | 4d | 161d | 0d |
| 310 | 1.3.5.3 | Castillo K3 | 3d | 2026-06-13 | 2026-06-17 | 309FS-2d |  |  | 2026-06-13 | 2026-06-17 | 3d | 161d | 0d |
| 311 | 1.3.5.4 | Castillo K4 | 3d | 2026-06-13 | 2026-06-17 | 309FS-2d |  |  | 2026-06-13 | 2026-06-17 | 3d | 161d | 0d |
| 312 | 1.3.5.5 | Castillo K5 | 3d | 2026-06-16 | 2026-06-19 | 310FS-1d, 311FS-1d |  |  | 2026-06-16 | 2026-06-19 | 3d | 161d | 0d |
| 313 | 1.3.5.6 | Refuerzo de muro K6 | 3d | 2026-06-17 | 2026-06-22 | 312FS-2d |  |  | 2026-06-17 | 2026-06-22 | 3d | 161d | 0d |
| 314 | 1.3.5.7 | Dala de cerramiento CR-1 | 4d | 2026-06-17 | 2026-06-23 | 309, 310 |  |  | 2026-06-17 | 2026-06-23 | 4d | 164d |  |
| 315 | 1.3.5.8 | Dala de cerramiento CR-2 | 3d | 2026-06-17 | 2026-06-22 | 309, 310 |  |  | 2026-06-17 | 2026-06-22 | 3d | 165d |  |
| 316 | 1.3.5.9 | Cadena block dala | 4d | 2026-06-22 | 2026-06-26 | 313 |  |  | 2026-06-22 | 2026-06-26 | 4d | 161d |  |
| 317 | 1.3.5.10 | Muro de ladrillo aparente | 15d | 2026-06-11 | 2026-06-30 | 304 |  |  | 2026-06-11 | 2026-06-30 | 15d | 13d | 0d |
| 318 | 1.3.5.11 | Muro de block planta baja | 13d | 2026-06-13 | 2026-06-30 | 304FS+2d |  |  | 2026-06-13 | 2026-06-30 | 13d | 13d | 0d |
| 319 | 1.3.5.12 | Ramaleo electrico en Muros Planta Baja | 4d | 2026-06-17 | 2026-06-23 | 317SS+5d |  |  | 2026-06-17 | 2026-06-23 | 4d | 16d | 0d |
| 320 | 1.3.5.13 | Ramaleo para cable poliducto 3/4 | 2d | 2026-06-23 | 2026-06-25 | 319 |  |  | 2026-06-23 | 2026-06-25 | 2d | 16d | 0d |
| 321 | 1.3.5.14 | Ramaleo para TV poliducto 3/4 | 3d | 2026-06-25 | 2026-06-29 | 320 |  |  | 2026-06-25 | 2026-06-29 | 3d | 16d | 2d |
| 322 | 1.3.6 | **ESCALERA** | 10d | 2026-07-17 | 2026-07-30 |  |  |  | 2026-07-17 | 2026-07-30 | 10d | 90d |  |
| 323 | 1.3.6.1 | Escalera de concreto armado | 10d | 2026-07-17 | 2026-07-30 | 339 |  |  | 2026-07-17 | 2026-07-30 | 10d | 90d | 77d |
| 324 | 1.3.7 | **LOSA DE ENTREPISO (viegueta y caseton)** | 17d | 2026-06-27 | 2026-07-18 |  |  |  | 2026-06-27 | 2026-07-18 | 17d | 16d |  |
| 325 | 1.3.7.1 | Dala de coronamiento 10cm | 3d | 2026-07-07 | 2026-07-09 | 341FS-1d, 327, 328, 329, 330, 331, 332 |  |  | 2026-07-07 | 2026-07-09 | 3d | 16d | 3d |
| 326 | 1.3.7.2 | Dala de coronamiento 12cm | 3d | 2026-07-08 | 2026-07-10 | 341, 327, 328, 329, 330, 331, 332 |  |  | 2026-07-08 | 2026-07-10 | 3d | 15d | 2d |
| 327 | 1.3.7.3 | Trabe TR-1 | 3d | 2026-06-27 | 2026-07-01 | 317FS-2d, 318FS-2d |  |  | 2026-06-27 | 2026-07-01 | 3d | 17d | 4d |
| 328 | 1.3.7.4 | Trabe TR-2 | 4d | 2026-06-29 | 2026-07-03 | 317FS-1d, 318FS-1d |  |  | 2026-06-29 | 2026-07-03 | 4d | 15d | 2d |
| 329 | 1.3.7.5 | Nervadura NR-1 | 4d | 2026-06-30 | 2026-07-04 | 317, 318 |  |  | 2026-06-30 | 2026-07-04 | 4d | 14d | 1d |
| 330 | 1.3.7.6 | Nervadura NR-2 | 4d | 2026-07-01 | 2026-07-06 | 317FS+1d, 318FS+1d |  |  | 2026-07-01 | 2026-07-06 | 4d | 13d | 0d |
| 331 | 1.3.7.7 | Nervadura NR-3 | 4d | 2026-07-01 | 2026-07-06 | 317FS+1d, 318FS+1d |  |  | 2026-07-01 | 2026-07-06 | 4d | 13d | 0d |
| 332 | 1.3.7.8 | Nervadura NR-4 | 4d | 2026-07-01 | 2026-07-06 | 317FS+1d, 318FS+1d |  |  | 2026-07-01 | 2026-07-06 | 4d | 13d | 0d |
| 333 | 1.3.7.9 | Acero de refuerzo en nervios #3 | 2d | 2026-07-07 | 2026-07-08 | 327, 328, 329, 330, 331, 332 |  |  | 2026-07-07 | 2026-07-08 | 2d | 13d | 0d |
| 334 | 1.3.7.10 | Acero de refuerzo long. #3 | 3d | 2026-07-08 | 2026-07-10 | 327, 328, 329, 330, 331, 332, 341 |  |  | 2026-07-08 | 2026-07-10 | 3d | 14d | 0d |
| 335 | 1.3.7.11 | Acero de refuerzo long. #4 | 3d | 2026-07-08 | 2026-07-10 | 334SS |  |  | 2026-07-08 | 2026-07-10 | 3d | 14d | 0d |
| 336 | 1.3.7.12 | Malla 66-10/10 losa de compresión | 2d | 2026-07-14 | 2026-07-16 | 325, 326, 333, 346, 349, 338 |  |  | 2026-07-14 | 2026-07-16 | 2d | 13d | 0d |
| 337 | 1.3.7.13 | Acero de Losa Maciza | 3d | 2026-07-07 | 2026-07-09 | 329, 330, 331, 332 |  |  | 2026-07-07 | 2026-07-09 | 3d | 18d | 5d |
| 338 | 1.3.7.14 | Caseton de 60x60x20cm | 2d | 2026-07-07 | 2026-07-08 | 329, 330, 331, 332 |  |  | 2026-07-07 | 2026-07-08 | 2d | 17d | 4d |
| 339 | 1.3.7.15 | Concreto losa de entrepiso f’c=200 | 1d | 2026-07-16 | 2026-07-17 | 334, 335, 336, 337, 346, 349, 342, 351 |  |  | 2026-07-16 | 2026-07-17 | 1d | 13d | 0d |
| 340 | 1.3.7.16 | Curado de concreto | 1d | 2026-07-17 | 2026-07-18 | 339 |  |  | 2026-07-17 | 2026-07-18 | 1d | 13d | 0d |
| 341 | 1.3.7.17 | Cimbra losa de azotea | 5d | 2026-07-01 | 2026-07-07 | 317FS+1d, 318FS+1d, 321 |  |  | 2026-07-01 | 2026-07-07 | 5d | 14d | 0d |
| 342 | 1.3.7.18 | Cimbra exterior corta losa | 3d | 2026-07-10 | 2026-07-14 | 334FS-1d, 335FS-1d |  |  | 2026-07-10 | 2026-07-14 | 3d | 15d | 2d |
| 343 | 1.3.7.19 | Ramaleo poliducto eléctrico entrepiso | 2d | 2026-07-09 | 2026-07-10 | 333 |  |  | 2026-07-09 | 2026-07-10 | 2d | 149d |  |
| 344 | 1.3.7.20 | Ramaleo hidráulico CPVC 3/4" | 2d | 2026-07-10 | 2026-07-13 | 333FS+1d |  |  | 2026-07-10 | 2026-07-13 | 2d | 13d | 0d |
| 345 | 1.3.7.21 | Ramaleo hidráulico CPVC 1/2" | 1d | 2026-07-13 | 2026-07-14 | 344 |  |  | 2026-07-13 | 2026-07-14 | 1d | 13d | 0d |
| 346 | 1.3.7.22 | Prueba hidráulica | 1d | 2026-07-13 | 2026-07-14 | 344, 345FS-1d |  |  | 2026-07-13 | 2026-07-14 | 1d | 13d | 0d |
| 347 | 1.3.7.23 | Ramaleo sanitario PVC 4" | 2d | 2026-07-10 | 2026-07-13 | 333FS+1d |  |  | 2026-07-10 | 2026-07-13 | 2d | 13d | 0d |
| 348 | 1.3.7.24 | Ramaleo sanitario PVC 2" | 1d | 2026-07-13 | 2026-07-14 | 347 |  |  | 2026-07-13 | 2026-07-14 | 1d | 13d | 0d |
| 349 | 1.3.7.25 | Prueba sanitaria | 1d | 2026-07-13 | 2026-07-14 | 347, 348FS-1d |  |  | 2026-07-13 | 2026-07-14 | 1d | 13d | 0d |

| ID | WBS | Task | Duration | Start | Finish | Predecessors | Baseline start | Baseline finish | Baseline duration | Total slack | Free slack |
| --- | --- | --- | --- | --- | --- | --- | --- | --- | --- | --- | --- |
| 350 | 1.3.8 | **MUROS EN PLANTA ALTA, CASTILLOS Y CERRM.** | 22d | 2026-07-10 | 2026-08-06 |  | 2026-07-10 | 2026-08-06 | 22d | 14d |  |
| 351 | 1.3.8.1 | Anclaje de castillos y Columnas PA | 4d | 2026-07-10 | 2026-07-15 | 334FS-1d, 335FS-1d | 2026-07-10 | 2026-07-15 | 4d | 14d | 1d |
| 352 | 1.3.8.2 | Castillo K1 | 4d | 2026-07-18 | 2026-07-23 | 340 | 2026-07-18 | 2026-07-23 | 4d | 17d | 0d |
| 353 | 1.3.8.3 | Castillo K2 | 4d | 2026-07-20 | 2026-07-24 | 340FS+1d | 2026-07-20 | 2026-07-24 | 4d | 16d | 0d |
| 354 | 1.3.8.4 | Castillo K4 | 3d | 2026-07-23 | 2026-07-28 | 352 | 2026-07-23 | 2026-07-28 | 3d | 17d | 1d |
| 355 | 1.3.8.5 | Castillo K5 | 3d | 2026-07-23 | 2026-07-28 | 352 | 2026-07-23 | 2026-07-28 | 3d | 17d | 1d |
| 356 | 1.3.8.6 | Castillo K6 | 3d | 2026-07-23 | 2026-07-28 | 352 | 2026-07-23 | 2026-07-28 | 3d | 17d | 1d |
| 357 | 1.3.8.7 | Refuerzo de muro | 3d | 2026-07-24 | 2026-07-29 | 352, 353 | 2026-07-24 | 2026-07-29 | 3d | 16d | 0d |
| 358 | 1.3.8.8 | Dala de cerramiento CR-1 | 4d | 2026-07-29 | 2026-08-03 | 354, 355, 356, 357 | 2026-07-29 | 2026-08-03 | 4d | 16d | 0d |
| 359 | 1.3.8.9 | Dala de cerramiento CR-2 | 4d | 2026-07-29 | 2026-08-03 | 354, 355, 356, 357 | 2026-07-29 | 2026-08-03 | 4d | 16d | 0d |
| 360 | 1.3.8.10 | Cadena block dala | 3d | 2026-08-03 | 2026-08-06 | 357, 358, 359 | 2026-08-03 | 2026-08-06 | 3d | 16d | 0d |
| 361 | 1.3.8.11 | Muro de ladrillo aparente | 15d | 2026-07-18 | 2026-08-06 | 340 | 2026-07-18 | 2026-08-06 | 15d | 13d | 0d |
| 362 | 1.3.8.12 | Muro de block planta alta | 14d | 2026-07-20 | 2026-08-06 | 340FS+1d | 2026-07-20 | 2026-08-06 | 14d | 13d | 0d |
| 363 | 1.3.8.13 | Ramaleo electrico en Muros Planta Alta | 4d | 2026-07-29 | 2026-08-03 | 361SS+8d | 2026-07-29 | 2026-08-03 | 4d | 24d | 3d |
| 364 | 1.3.9 | **LOSA AZOTEA** | 15d | 2026-08-06 | 2026-08-25 |  | 2026-08-06 | 2026-08-25 | 15d | 13d |  |
| 365 | 1.3.9.1 | Cortalosa CL-1 | 2d | 2026-08-20 | 2026-08-22 | 377 | 2026-08-20 | 2026-08-22 | 2d | 13d | 0d |
| 366 | 1.3.9.2 | Cortalosa CL-2 | 2d | 2026-08-20 | 2026-08-22 | 377 | 2026-08-20 | 2026-08-22 | 2d | 13d | 0d |
| 367 | 1.3.9.3 | Vigueta pretensada V11-30 125 | 5d | 2026-08-06 | 2026-08-12 | 360, 361, 362 | 2026-08-06 | 2026-08-12 | 5d | 16d | 3d |
| 368 | 1.3.9.4 | Vigueta pretensada V11-30 185 | 5d | 2026-08-06 | 2026-08-12 | 361, 362 | 2026-08-06 | 2026-08-12 | 5d | 16d | 3d |
| 369 | 1.3.9.5 | Vigueta pretensada V11-30 190 | 5d | 2026-08-06 | 2026-08-12 | 361, 362 | 2026-08-06 | 2026-08-12 | 5d | 16d | 3d |
| 370 | 1.3.9.6 | Vigueta pretensada V11-30 205 | 5d | 2026-08-08 | 2026-08-14 | 361FS+2d, 362FS+2d | 2026-08-08 | 2026-08-14 | 5d | 14d | 1d |
| 371 | 1.3.9.7 | Vigueta pretensada V11-30 215 | 5d | 2026-08-08 | 2026-08-14 | 361FS+2d, 362FS+2d | 2026-08-08 | 2026-08-14 | 5d | 14d | 1d |
| 372 | 1.3.9.8 | Vigueta pretensada V11-30 260 | 5d | 2026-08-10 | 2026-08-17 | 361FS+3d, 362FS+3d | 2026-08-10 | 2026-08-17 | 5d | 13d | 0d |
| 373 | 1.3.9.9 | Vigueta pretensada V11-30 285 | 5d | 2026-08-10 | 2026-08-17 | 361FS+3d, 362FS+3d | 2026-08-10 | 2026-08-17 | 5d | 13d | 0d |
| 374 | 1.3.9.10 | Vigueta pretensada V11-40 330 | 5d | 2026-08-10 | 2026-08-17 | 361FS+3d, 362 | 2026-08-10 | 2026-08-17 | 5d | 13d | 0d |
| 375 | 1.3.9.11 | Vigueta pretensada V11-40 335 | 5d | 2026-08-10 | 2026-08-17 | 361FS+3d, 362 | 2026-08-10 | 2026-08-17 | 5d | 13d | 0d |
| 376 | 1.3.9.12 | Vigueta pretensada V11-40 505 | 5d | 2026-08-10 | 2026-08-17 | 361FS+3d, 362 | 2026-08-10 | 2026-08-17 | 5d | 13d | 0d |
| 377 | 1.3.9.13 | Bovedilla poliestireno azotea | 3d | 2026-08-17 | 2026-08-20 | 367, 368, 369, 370, 371, 372, 373, 374, 375, 376 | 2026-08-17 | 2026-08-20 | 3d | 13d | 0d |
| 378 | 1.3.9.14 | Malla 66-10/10 losa de compresión | 2d | 2026-08-20 | 2026-08-22 | 377 | 2026-08-20 | 2026-08-22 | 2d | 13d | 0d |
| 379 | 1.3.9.15 | Concreto losa de azotea f’c=200 | 1d | 2026-08-22 | 2026-08-24 | 365, 366, 377, 378, 382, 381 | 2026-08-22 | 2026-08-24 | 1d | 13d | 0d |
| 380 | 1.3.9.16 | Curado de concreto | 1d | 2026-08-24 | 2026-08-25 | 379 | 2026-08-24 | 2026-08-25 | 1d | 13d | 0d |
| 381 | 1.3.9.17 | Cimbra losa de azotea | 5d | 2026-08-06 | 2026-08-12 | 361, 362, 363 | 2026-08-06 | 2026-08-12 | 5d | 21d | 8d |
| 382 | 1.3.9.18 | Ramaleo de poliducto para inst. electrica en azotea | 2d | 2026-08-20 | 2026-08-22 | 377 | 2026-08-20 | 2026-08-22 | 2d | 13d | 0d |

| ID | WBS | Task | Duration | Start | Finish | Predecessors | Baseline start | Baseline finish | Baseline duration | Total slack | Free slack |
| --- | --- | --- | --- | --- | --- | --- | --- | --- | --- | --- | --- |
| 383 | 1.3.10 | **PRETIL Y ACABADOS DE AZOTEA** | 19d | 2026-08-25 | 2026-09-18 |  | 2026-08-25 | 2026-09-18 | 19d | 13d |  |
| 384 | 1.3.10.1 | Castillo K1 | 5d | 2026-08-27 | 2026-09-02 | 386SS+2d | 2026-08-27 | 2026-09-02 | 5d | 13d | 0d |
| 385 | 1.3.10.2 | Dala de cerramiento en pretil | 4d | 2026-09-01 | 2026-09-04 | 384FS-2d, 386FS-2d | 2026-09-01 | 2026-09-04 | 4d | 13d | 0d |
| 386 | 1.3.10.3 | Muro de block 12x15x40 | 5d | 2026-08-25 | 2026-08-31 | 380 | 2026-08-25 | 2026-08-31 | 5d | 13d | 0d |
| 387 | 1.3.10.4 | Chaflán en azotea | 4d | 2026-09-03 | 2026-09-08 | 384, 386 | 2026-09-03 | 2026-09-08 | 4d | 13d | 0d |
| 388 | 1.3.10.5 | Diamante de entortado | 4d | 2026-09-03 | 2026-09-08 | 384, 386 | 2026-09-03 | 2026-09-08 | 4d | 13d | 0d |
| 389 | 1.3.10.6 | Aplanado exterior Mortermax fino | 5d | 2026-09-05 | 2026-09-11 | 385, 387FS-2d, 388FS-2d | 2026-09-05 | 2026-09-11 | 5d | 13d | 0d |
| 390 | 1.3.10.7 | Entortado de Losa | 4d | 2026-09-12 | 2026-09-18 | 391 | 2026-09-12 | 2026-09-18 | 4d | 13d | 0d |
| 391 | 1.3.10.8 | Curado de concreto | 1d | 2026-09-11 | 2026-09-12 | 387, 389 | 2026-09-11 | 2026-09-12 | 1d | 13d | 0d |
| 392 | 1.3.11 | **PRIMERA LIMPIEZA DE OBRA** | 4d | 2026-08-25 | 2026-08-29 |  | 2026-08-25 | 2026-08-29 | 4d | 70d |  |
| 393 | 1.3.11.1 | Primera limpieza de obra | 2d | 2026-08-25 | 2026-08-27 | 380 | 2026-08-25 | 2026-08-27 | 2d | 70d | 0d |
| 394 | 1.3.11.2 | Primera carga y acarreo de escombro | 2d | 2026-08-27 | 2026-08-29 | 393 | 2026-08-27 | 2026-08-29 | 2d | 70d | 1d |
| 395 | 1.3.12 | **IMPERMEABILIZACION** | 5d | 2026-09-18 | 2026-09-25 |  | 2026-09-18 | 2026-09-25 | 5d | 13d |  |
| 396 | 1.3.12.1 | Impermeabilización de pretil Kover 5 años | 4d | 2026-09-18 | 2026-09-24 | 390 | 2026-09-18 | 2026-09-24 | 4d | 14d | 1d |
| 397 | 1.3.12.2 | Impermeabilización de losa Kover 5 años | 5d | 2026-09-18 | 2026-09-25 | 390 | 2026-09-18 | 2026-09-25 | 5d | 13d | 0d |
| 398 | 1.3.13 | **ALBAÑILERIA** | 62d | 2026-09-01 | 2026-11-19 |  | 2026-09-01 | 2026-11-19 | 62d | 32d |  |
| 399 | 1.3.13.1 | Lavadero de granito | 4d | 2026-10-15 | 2026-10-20 | 435SS+8d | 2026-10-15 | 2026-10-20 | 4d | 69d |  |
| 400 | 1.3.13.2 | Ranurado y resane general inst. en muros | 3d | 2026-09-23 | 2026-09-26 | 397FS-2d | 2026-09-23 | 2026-09-26 | 3d | 15d | 1d |
| 401 | 1.3.13.3 | Ranurado y resane eléctrico 1/2 a 3/4 | 3d | 2026-09-23 | 2026-09-26 | 397FS-2d | 2026-09-23 | 2026-09-26 | 3d | 15d | 1d |
| 402 | 1.3.13.4 | Ranurado y resane hidráulico 1/2 a 1 | 2d | 2026-09-25 | 2026-09-28 | 397 | 2026-09-25 | 2026-09-28 | 2d | 14d | 0d |
| 403 | 1.3.13.5 | Resane sanitario tubería 2 | 2d | 2026-09-25 | 2026-09-28 | 397 | 2026-09-25 | 2026-09-28 | 2d | 14d | 0d |
| 404 | 1.3.13.6 | Resane sanitario tubería 4 | 2d | 2026-09-25 | 2026-09-28 | 397 | 2026-09-25 | 2026-09-28 | 2d | 14d | 0d |
| 405 | 1.3.13.7 | Resane minisplit tubería 3 | 2d | 2026-09-25 | 2026-09-28 | 397 | 2026-09-25 | 2026-09-28 | 2d | 14d | 0d |
| 406 | 1.3.13.8 | Ramaleo hidráulico exterior CPVC 1 1/4 | 3d | 2026-09-25 | 2026-09-29 | 396, 397 | 2026-09-25 | 2026-09-29 | 3d | 13d | 0d |
| 407 | 1.3.13.9 | Ramaleo hidráulico exterior CPVC 1 | 2d | 2026-09-25 | 2026-09-28 | 406SS | 2026-09-25 | 2026-09-28 | 2d | 13d | 0d |
| 408 | 1.3.13.10 | Ramaleo hidráulico exterior CPVC 3/4 | 2d | 2026-09-28 | 2026-09-30 | 407 | 2026-09-28 | 2026-09-30 | 2d | 13d | 0d |
| 409 | 1.3.13.11 | Ramaleo hidráulico exterior CPVC 1/2 | 2d | 2026-09-28 | 2026-09-30 | 407 | 2026-09-28 | 2026-09-30 | 2d | 13d | 0d |
| 410 | 1.3.13.12 | Prueba hidráulica | 1d | 2026-09-30 | 2026-10-01 | 402, 406, 407, 408, 409 | 2026-09-30 | 2026-10-01 | 1d | 13d | 0d |
| 411 | 1.3.13.13 | Ramaleo sanitario exterior PVC 4 | 4d | 2026-09-25 | 2026-09-30 | 396, 397 | 2026-09-25 | 2026-09-30 | 4d | 13d | 0d |
| 412 | 1.3.13.14 | Ramaleo sanitario exterior PVC 2 | 3d | 2026-09-26 | 2026-09-30 | 411SS+1d | 2026-09-26 | 2026-09-30 | 3d | 13d | 0d |
| 413 | 1.3.13.15 | Prueba sanitaria | 1d | 2026-09-30 | 2026-10-01 | 403, 404, 405, 411, 412 | 2026-09-30 | 2026-10-01 | 1d | 13d | 0d |
| 414 | 1.3.13.16 | Centro de carga muros PB | 4d | 2026-09-29 | 2026-10-03 | 396FS+3d, 397FS+3d | 2026-09-29 | 2026-10-03 | 4d | 15d | 2d |
| 415 | 1.3.13.17 | Firme de concreto 8 cm | 4d | 2026-10-01 | 2026-10-06 | 410, 413, 417 | 2026-10-01 | 2026-10-06 | 4d | 63d | 0d |
| 416 | 1.3.13.18 | Curado de concreto | 1d | 2026-10-06 | 2026-10-07 | 415 | 2026-10-06 | 2026-10-07 | 1d | 63d | 17d |
| 417 | 1.3.13.19 | Cisterna 2800 L con instalación | 18d | 2026-09-01 | 2026-09-24 | 386, 393, 394 | 2026-09-01 | 2026-09-24 | 18d | 69d | 0d |
| 418 | 1.3.13.20 | Banqueta y huellas de concreto | 8d | 2026-10-08 | 2026-10-19 | 410, 413, 460, 528FS-2d, 537, 529 | 2026-10-08 | 2026-10-19 | 8d | 46d | 0d |
| 419 | 1.3.13.21 | Curado de concreto | 1d | 2026-10-19 | 2026-10-20 | 418 | 2026-10-19 | 2026-10-20 | 1d | 46d | 0d |
| 420 | 1.3.13.22 | Número oficial | 1d | 2026-11-18 | 2026-11-19 | 428, 429 | 2026-11-18 | 2026-11-19 | 1d | 46d |  |
| 421 | 1.3.13.23 | Detallado de rodapié exterior | 4d | 2026-10-03 | 2026-10-08 | 426 | 2026-10-03 | 2026-10-08 | 4d | 78d |  |
| 422 | 1.3.13.24 | Detalle de losas y volados acabado fino | 4d | 2026-09-25 | 2026-09-30 | 396, 397 | 2026-09-25 | 2026-09-30 | 4d | 17d | 4d |
| 423 | 1.3.13.25 | Detalle fino en muros interiores | 5d | 2026-09-28 | 2026-10-03 | 400, 401, 402, 403, 404, 405 | 2026-09-28 | 2026-10-03 | 5d | 14d | 1d |
| 424 | 1.3.13.26 | Jardín interior bajo escalera con pozo de absorción | 12d | 2026-09-25 | 2026-10-09 | 403FS-2d, 404FS-2d, 405FS-2d | 2026-09-25 | 2026-10-09 | 12d | 17d | 0d |

| ID | WBS | Task | Duration | Start | Finish | Predecessors | Baseline start | Baseline finish | Baseline duration | Total slack | Free slack |
| --- | --- | --- | --- | --- | --- | --- | --- | --- | --- | --- | --- |
| 425 | 1.3.14 | **ACABADOS EN FACHADA A** | 47d | 2026-09-18 | 2026-11-18 |  | 2026-09-18 | 2026-11-18 | 47d | 46d |  |
| 426 | 1.3.14.1 | Aplanado grueso fachada | 12d | 2026-09-18 | 2026-10-03 | 390 | 2026-09-18 | 2026-10-03 | 12d | 52d | 0d |
| 427 | 1.3.14.2 | Aplanado fino estuco fachada | 10d | 2026-09-28 | 2026-10-09 | 426SS+7d | 2026-09-28 | 2026-10-09 | 10d | 52d | 0d |
| 428 | 1.3.14.3 | Pintura acrílica 1-0102P | 8d | 2026-11-04 | 2026-11-13 | 416FS+5d, 419FS+12d, 430, 433 | 2026-11-04 | 2026-11-13 | 8d | 48d | 2d |
| 429 | 1.3.14.4 | Pintura acrílica 1-1404D | 10d | 2026-11-04 | 2026-11-18 | 416FS+5d, 419FS+12d, 430, 433 | 2026-11-04 | 2026-11-18 | 10d | 46d | 0d |
| 430 | 1.3.14.5 | Cantera 40x60cm | 14d | 2026-10-09 | 2026-10-27 | 426, 427 | 2026-10-09 | 2026-10-27 | 14d | 52d | 6d |
| 431 | 1.3.14.6 | Lambrin de permabase 1 cara | 3d | 2026-10-03 | 2026-10-07 | 426 | 2026-10-03 | 2026-10-07 | 3d | 59d | 0d |
| 432 | 1.3.14.7 | Enchapado de Permabase | 4d | 2026-10-07 | 2026-10-13 | 431 | 2026-10-07 | 2026-10-13 | 4d | 59d | 0d |
| 433 | 1.3.14.8 | Cubierta de Permabase | 5d | 2026-10-13 | 2026-10-19 | 432 | 2026-10-13 | 2026-10-19 | 5d | 59d | 13d |
| 434 | 1.3.15 | **APLANADOS Y PINTURA** | 63d | 2026-09-25 | 2026-12-14 |  | 2026-09-25 | 2026-12-14 | 63d | 15d |  |
| 435 | 1.3.15.1 | Yeso pulido en muros | 14d | 2026-10-05 | 2026-10-22 | 400, 401, 414FS-1d, 422, 423, 424FS-8d, 440FS-4d, 506FS-2d, 509, 510, 511, 512, 513FS-1d, 514FS-1d, 515FS-1d, 516FS-1d, 517FS-2d, 518FS-2d, 519FS-3d, 522FS-1d, 523FS-5d, 524FS-5d, 525FS-6d, 526FS-2d, 527FS-7d, 436 | 2026-10-05 | 2026-10-22 | 14d | 13d | 0d |
| 436 | 1.3.15.2 | Aplanado en muros enjarre grueso | 5d | 2026-09-25 | 2026-10-01 | 396, 397 | 2026-09-25 | 2026-10-01 | 5d | 16d | 3d |
| 437 | 1.3.15.3 | Pintura vinílica OR-W13 SHOELACE | 13d | 2026-11-27 | 2026-12-14 | 444FS-2d, 445FS-2d, 458FS-2d, 465, 466, 467, 468, 469, 470, 476, 477, 478, 479, 540, 541, 543, 544, 473, 474, 471, 472, 480 | 2026-11-27 | 2026-12-14 | 13d | 13d | 0d |
| 438 | 1.3.15.4 | Pintura vinílica PPUI5-13 Creamy M. | 10d | 2026-11-21 | 2026-12-03 | 444, 445, 458, 488, 489, 484, 482 | 2026-11-21 | 2026-12-03 | 10d | 21d | 8d |
| 439 | 1.3.15.5 | Pintura vinílica MD-06 Nano White | 8d | 2026-11-21 | 2026-12-01 | 444, 445, 458, 488, 489, 484, 482 | 2026-11-21 | 2026-12-01 | 8d | 23d | 10d |
| 440 | 1.3.15.6 | Yeso pulido en plafones | 10d | 2026-09-25 | 2026-10-07 | 396, 397 | 2026-09-25 | 2026-10-07 | 10d | 15d | 2d |
| 441 | 1.3.15.7 | Perfilado de puertas y ventanas | 4d | 2026-10-09 | 2026-10-15 | 435SS+4d | 2026-10-09 | 2026-10-15 | 4d | 73d |  |
| 442 | 1.3.16 | **PISOS Y AZULEJOS** | 24d | 2026-10-16 | 2026-11-17 |  | 2026-10-16 | 2026-11-17 | 24d | 13d |  |
| 443 | 1.3.16.1 | **AREA SOCIAL** | 15d | 2026-10-20 | 2026-11-07 |  | 2026-10-20 | 2026-11-07 | 15d | 13d |  |
| 444 | 1.3.16.1.1 | Piso Adhara 44X89 | 14d | 2026-10-20 | 2026-11-06 | 435FS-2d, 531, 530, 447FS-5d | 2026-10-20 | 2026-11-06 | 14d | 13d | 0d |
| 445 | 1.3.16.1.2 | Zoclo Adhara 44X89 | 5d | 2026-11-02 | 2026-11-07 | 444FS-4d | 2026-11-02 | 2026-11-07 | 5d | 30d | 10d |
| 446 | 1.3.16.2 | **RECAMARAS** | 8d | 2026-10-16 | 2026-10-26 |  | 2026-10-16 | 2026-10-26 | 8d | 13d |  |
| 447 | 1.3.16.2.1 | Acabado aparente de pisos - pulido | 8d | 2026-10-16 | 2026-10-26 | 435FS-5d | 2026-10-16 | 2026-10-26 | 8d | 13d | 0d |
| 448 | 1.3.16.3 | **BAÑOS** | 17d | 2026-10-17 | 2026-11-07 |  | 2026-10-17 | 2026-11-07 | 17d | 24d |  |
| 449 | 1.3.16.3.1 | Azulejo Mod. Ornamenta 60x30 | 5d | 2026-10-27 | 2026-11-02 | 450FS-1d, 520, 521, 531 | 2026-10-27 | 2026-11-02 | 5d | 24d | 0d |
| 450 | 1.3.16.3.2 | Impermeabilización en regadera | 2d | 2026-10-26 | 2026-10-27 | 435, 454 | 2026-10-26 | 2026-10-27 | 2d | 24d | 0d |
| 451 | 1.3.16.3.3 | Piso Mod. Valparaiso 20x20 | 4d | 2026-11-02 | 2026-11-06 | 449 | 2026-11-02 | 2026-11-06 | 4d | 24d | 0d |
| 452 | 1.3.16.3.4 | Zoclo Adhara 44X89 | 2d | 2026-11-05 | 2026-11-07 | 451FS-1d | 2026-11-05 | 2026-11-07 | 2d | 54d |  |
| 453 | 1.3.16.3.5 | Piso Adhara 44X89 | 3d | 2026-11-02 | 2026-11-05 | 449 | 2026-11-02 | 2026-11-05 | 3d | 56d |  |
| 454 | 1.3.16.3.6 | Fabricacion de nicho decorativo en baños | 6d | 2026-10-17 | 2026-10-24 | 435FS-4d | 2026-10-17 | 2026-10-24 | 6d | 24d | 0d |
| 455 | 1.3.16.3.7 | Sardinel en regadera | 4d | 2026-11-02 | 2026-11-06 | 449 | 2026-11-02 | 2026-11-06 | 4d | 55d |  |

| ID | WBS | Task | Duration | Start | Finish | Predecessors | Baseline start | Baseline finish | Baseline duration | Total slack | Free slack |
| --- | --- | --- | --- | --- | --- | --- | --- | --- | --- | --- | --- |
| 456 | 1.3.16.4 | **ESCALERA** | 9d | 2026-11-04 | 2026-11-17 |  | 2026-11-04 | 2026-11-17 | 9d | 13d |  |
| 457 | 1.3.16.4.1 | Piso Adhara 44X89 | 7d | 2026-11-04 | 2026-11-12 | 323, 435, 444FS-2d | 2026-11-04 | 2026-11-12 | 7d | 13d | 0d |
| 458 | 1.3.16.4.2 | Zoclo Adhara 44X89 | 4d | 2026-11-10 | 2026-11-17 | 457FS-2d | 2026-11-10 | 2026-11-17 | 4d | 13d | 0d |
| 459 | 1.3.17 | **EXTERIOR** | 3d | 2026-10-01 | 2026-10-05 |  | 2026-10-01 | 2026-10-05 | 3d | 18d |  |
| 460 | 1.3.17.1 | Rastrilleo, afine y nivelado de tierra | 3d | 2026-10-01 | 2026-10-05 | 410, 413 | 2026-10-01 | 2026-10-05 | 3d | 18d | 0d |
| 461 | 1.3.18 | **SEGUNDA LIMPIEZA DE OBRA** | 4d | 2026-11-17 | 2026-11-21 |  | 2026-11-17 | 2026-11-21 | 4d | 37d |  |
| 462 | 1.3.18.1 | Segunda limpieza de obra | 2d | 2026-11-17 | 2026-11-19 | 457, 458 | 2026-11-17 | 2026-11-19 | 2d | 37d | 0d |
| 463 | 1.3.18.2 | Segunda carga y acarreo de escombro | 2d | 2026-11-19 | 2026-11-21 | 462 | 2026-11-19 | 2026-11-21 | 2d | 37d | 24d |
| 464 | 1.3.19 | **CANCELERIA PUERTAS Y VENTANAS DE ALUMINIO** | 17d | 2026-11-04 | 2026-11-26 |  | 2026-11-04 | 2026-11-26 | 17d | 14d |  |
| 465 | 1.3.19.1 | Fijo medidas 0.30x4.90m | 7d | 2026-11-06 | 2026-11-17 | 435, 444 | 2026-11-06 | 2026-11-17 | 7d | 22d | 9d |
| 466 | 1.3.19.2 | Ventana Corrediza 1.80x1.60m | 4d | 2026-11-04 | 2026-11-09 | 435FS+10d | 2026-11-04 | 2026-11-09 | 4d | 27d | 14d |
| 467 | 1.3.19.3 | Ventana Corrediza 0.60x0.40m | 4d | 2026-11-06 | 2026-11-11 | 435FS+12d | 2026-11-06 | 2026-11-11 | 4d | 25d | 12d |
| 468 | 1.3.19.4 | Ventana Corrediza 1.54x0.50m | 4d | 2026-11-06 | 2026-11-11 | 435FS+12d | 2026-11-06 | 2026-11-11 | 4d | 25d | 12d |
| 469 | 1.3.19.5 | Fijo medidas 1.40x2.50m | 4d | 2026-11-10 | 2026-11-17 | 435FS+10d, 444FS+3d | 2026-11-10 | 2026-11-17 | 4d | 16d | 0d |
| 470 | 1.3.19.6 | Ventana Corrediza 1.80x1.50m | 4d | 2026-11-12 | 2026-11-19 | 435FS+7d, 444FS+2d, 457 | 2026-11-12 | 2026-11-19 | 4d | 14d | 0d |
| 471 | 1.3.19.7 | Ventana Corrediza 1.40x1.60m | 4d | 2026-11-12 | 2026-11-19 | 435, 444, 457 | 2026-11-12 | 2026-11-19 | 4d | 14d | 0d |
| 472 | 1.3.19.8 | Ventana Corrediza 0.95x0.40m | 4d | 2026-11-12 | 2026-11-19 | 435, 444, 457 | 2026-11-12 | 2026-11-19 | 4d | 14d | 0d |
| 473 | 1.3.19.9 | Puerta corrediza 3.85x2.10m | 6d | 2026-11-17 | 2026-11-24 | 469 | 2026-11-17 | 2026-11-24 | 6d | 16d | 3d |
| 474 | 1.3.19.10 | Barandal de Cristal Templado | 6d | 2026-11-19 | 2026-11-26 | 470, 471, 472 | 2026-11-19 | 2026-11-26 | 6d | 14d | 1d |
| 475 | 1.3.20 | **CARPINTERIA, PUERTAS EXTERIORES E INTERIORES** | 9d | 2026-11-17 | 2026-11-27 |  | 2026-11-17 | 2026-11-27 | 9d | 13d |  |
| 476 | 1.3.20.1 | Puerta P-01 de seguridad | 5d | 2026-11-17 | 2026-11-23 | 458 | 2026-11-17 | 2026-11-23 | 5d | 17d | 4d |
| 477 | 1.3.20.2 | Puerta P-01 interior | 8d | 2026-11-17 | 2026-11-26 | 458 | 2026-11-17 | 2026-11-26 | 8d | 14d | 1d |
| 478 | 1.3.20.3 | Puerta P-02 interior | 8d | 2026-11-17 | 2026-11-26 | 458 | 2026-11-17 | 2026-11-26 | 8d | 14d | 1d |
| 479 | 1.3.20.4 | Puerta P-03 interior | 4d | 2026-11-23 | 2026-11-27 | 458FS+5d | 2026-11-23 | 2026-11-27 | 4d | 13d | 0d |
| 480 | 1.3.20.5 | Puerta P-04 interior | 4d | 2026-11-23 | 2026-11-27 | 458FS+5d | 2026-11-23 | 2026-11-27 | 4d | 13d | 0d |

| ID | WBS | Task | Duration | Start | Finish | Predecessors | Baseline start | Baseline finish | Baseline duration | Total slack | Free slack |
| --- | --- | --- | --- | --- | --- | --- | --- | --- | --- | --- | --- |
| 481 | 1.3.21 | **VOLADOS, BARANDAL Y ESCALERA** | 33d | 2026-10-09 | 2026-11-21 |  | 2026-10-09 | 2026-11-21 | 33d | 21d |  |
| 482 | 1.3.21.1 | Barandal de Herreria en escalera | 4d | 2026-10-28 | 2026-11-02 | 483FS-4d | 2026-10-28 | 2026-11-02 | 4d | 36d | 15d |
| 483 | 1.3.21.2 | Escalera de herreria | 18d | 2026-10-09 | 2026-11-02 | 424 | 2026-10-09 | 2026-11-02 | 18d | 21d | 0d |
| 484 | 1.3.21.3 | Techumbre en acceso Principal | 14d | 2026-10-27 | 2026-11-12 | 483FS-5d | 2026-10-27 | 2026-11-12 | 14d | 27d | 6d |
| 485 | 1.3.21.4 | Techumbre en 1.80x0.50m | 7d | 2026-10-27 | 2026-11-04 | 483FS-5d | 2026-10-27 | 2026-11-04 | 7d | 21d | 0d |
| 486 | 1.3.21.5 | Techumbre en 1.40x0.50m | 7d | 2026-11-04 | 2026-11-12 | 485 | 2026-11-04 | 2026-11-12 | 7d | 21d | 0d |
| 487 | 1.3.21.6 | Imper con manto prefabricado | 5d | 2026-11-07 | 2026-11-13 | 485, 486FS-4d | 2026-11-07 | 2026-11-13 | 5d | 21d | 0d |
| 488 | 1.3.21.7 | Plafon hoja tablaroca std | 5d | 2026-11-13 | 2026-11-21 | 487 | 2026-11-13 | 2026-11-21 | 5d | 21d | 0d |
| 489 | 1.3.21.8 | Acabado Woodstock en parte inf. Cubierta | 5d | 2026-11-13 | 2026-11-21 | 487 | 2026-11-13 | 2026-11-21 | 5d | 21d | 0d |
| 490 | 1.3.22 | **INSTALACION ELECTRICA** | 16d | 2026-10-17 | 2026-11-06 |  | 2026-10-17 | 2026-11-06 | 16d | 42d |  |
| 491 | 1.3.22.1 | Alimentación eléctrica base a centro de carga | 5d | 2026-10-22 | 2026-10-28 | 414, 435 | 2026-10-22 | 2026-10-28 | 5d | 46d | 0d |
| 492 | 1.3.22.2 | Interruptor termomagnético 1x20 A | 1d | 2026-10-29 | 2026-10-29 | 491 | 2026-10-29 | 2026-10-29 | 1d | 46d | 4d |
| 493 | 1.3.22.3 | Interruptor termomagnético 2x20 A | 1d | 2026-10-29 | 2026-10-29 | 491 | 2026-10-29 | 2026-10-29 | 1d | 46d | 4d |
| 494 | 1.3.22.4 | Salida para apagador 3 vías | 4d | 2026-10-17 | 2026-10-22 | 396, 435FS-4d | 2026-10-17 | 2026-10-22 | 4d | 42d | 0d |
| 495 | 1.3.22.5 | Salida para apagador doble | 3d | 2026-10-22 | 2026-10-26 | 494 | 2026-10-22 | 2026-10-26 | 3d | 44d | 0d |
| 496 | 1.3.22.6 | Salida para apagador sencillo | 3d | 2026-10-22 | 2026-10-26 | 494 | 2026-10-22 | 2026-10-26 | 3d | 44d | 0d |
| 497 | 1.3.22.7 | Salida de alumbrado en losa | 5d | 2026-10-22 | 2026-10-28 | 494 | 2026-10-22 | 2026-10-28 | 5d | 42d | 0d |
| 498 | 1.3.22.8 | Salida para contacto exterior doble | 2d | 2026-10-22 | 2026-10-24 | 494 | 2026-10-22 | 2026-10-24 | 2d | 45d | 3d |
| 499 | 1.3.22.9 | Salida para contacto 220 V | 3d | 2026-10-26 | 2026-10-28 | 494FS+2d | 2026-10-26 | 2026-10-28 | 3d | 42d | 0d |
| 500 | 1.3.22.10 | Salida para contacto doble | 5d | 2026-10-26 | 2026-10-30 | 494FS+2d | 2026-10-26 | 2026-10-30 | 5d | 45d | 3d |
| 501 | 1.3.22.11 | Salida para contacto doble área húmeda | 2d | 2026-10-29 | 2026-10-30 | 498, 499 | 2026-10-29 | 2026-10-30 | 2d | 45d | 3d |
| 502 | 1.3.22.12 | Salida TV / telefonía / intercom | 4d | 2026-10-29 | 2026-11-03 | 498, 499 | 2026-10-29 | 2026-11-03 | 4d | 43d | 1d |
| 503 | 1.3.22.13 | Extractor 4 baño | 5d | 2026-10-29 | 2026-11-04 | 498, 499 | 2026-10-29 | 2026-11-04 | 5d | 42d | 0d |
| 504 | 1.3.22.14 | Prueba eléctrica | 2d | 2026-11-04 | 2026-11-06 | 491, 492, 493, 494, 495, 496, 497, 498, 499, 500, 501, 502, 503, 557, 558, 564, 559, 560, 562, 563, 566, 568 | 2026-11-04 | 2026-11-06 | 2d | 42d | 29d |

| ID | WBS | Task | Duration | Start | Finish | Predecessors | Baseline start | Baseline finish | Baseline duration | Total slack | Free slack |
| --- | --- | --- | --- | --- | --- | --- | --- | --- | --- | --- | --- |
| 505 | 1.3.23 | **INSTALACIÓN HIDRO-SANITARIA** | 11d | 2026-10-01 | 2026-10-15 |  | 2026-10-01 | 2026-10-15 | 11d | 13d |  |
| 506 | 1.3.23.1 | Tubería condensados PVC 1 | 5d | 2026-10-01 | 2026-10-07 | 410 | 2026-10-01 | 2026-10-07 | 5d | 13d | 0d |
| 507 | 1.3.23.2 | Tubería sanitaria PVC 4 | 5d | 2026-10-01 | 2026-10-07 | 413 | 2026-10-01 | 2026-10-07 | 5d | 21d | 0d |
| 508 | 1.3.23.3 | Coladera H-444 | 1d | 2026-10-07 | 2026-10-08 | 507 | 2026-10-07 | 2026-10-08 | 1d | 21d | 4d |
| 509 | 1.3.23.4 | Caja PVC para lavadora | 3d | 2026-10-01 | 2026-10-05 | 410 | 2026-10-01 | 2026-10-05 | 3d | 13d | 0d |
| 510 | 1.3.23.5 | Salida para secadora PVC 4 | 3d | 2026-10-01 | 2026-10-05 | 413 | 2026-10-01 | 2026-10-05 | 3d | 13d | 0d |
| 511 | 1.3.23.6 | Salida hidráulica para boiler | 2d | 2026-10-01 | 2026-10-03 | 410 | 2026-10-01 | 2026-10-03 | 2d | 14d | 1d |
| 512 | 1.3.23.7 | Salida hidráulica para llave de jardín | 3d | 2026-10-01 | 2026-10-05 | 410 | 2026-10-01 | 2026-10-05 | 3d | 13d | 0d |
| 513 | 1.3.23.8 | Salida hidráulica para lavabo | 4d | 2026-10-01 | 2026-10-06 | 410 | 2026-10-01 | 2026-10-06 | 4d | 13d | 0d |
| 514 | 1.3.23.9 | Salida hidráulica para purificación | 4d | 2026-10-01 | 2026-10-06 | 410 | 2026-10-01 | 2026-10-06 | 4d | 13d | 0d |
| 515 | 1.3.23.10 | Salida sanitaria para lavabo | 2d | 2026-10-03 | 2026-10-06 | 410FS+2d | 2026-10-03 | 2026-10-06 | 2d | 13d | 0d |
| 516 | 1.3.23.11 | Salida hidráulica para lavadero | 2d | 2026-10-03 | 2026-10-06 | 410FS+2d | 2026-10-03 | 2026-10-06 | 2d | 13d | 0d |
| 517 | 1.3.23.12 | Salida sanitaria para lavadero | 2d | 2026-10-05 | 2026-10-07 | 410FS+3d | 2026-10-05 | 2026-10-07 | 2d | 13d | 0d |
| 518 | 1.3.23.13 | Salida hidráulica para lavadora | 2d | 2026-10-05 | 2026-10-07 | 410FS+3d | 2026-10-05 | 2026-10-07 | 2d | 13d | 0d |
| 519 | 1.3.23.14 | Salida sanitaria para lavadora | 2d | 2026-10-06 | 2026-10-08 | 413FS+4d | 2026-10-06 | 2026-10-08 | 2d | 13d | 0d |
| 520 | 1.3.23.15 | Salida hidráulica para regadera | 5d | 2026-10-06 | 2026-10-13 | 410FS+4d | 2026-10-06 | 2026-10-13 | 5d | 18d | 0d |
| 521 | 1.3.23.16 | Salida sanitaria para regadera | 4d | 2026-10-06 | 2026-10-12 | 413FS+4d | 2026-10-06 | 2026-10-12 | 4d | 19d | 2d |
| 522 | 1.3.23.17 | Salida hidráulica para WC | 2d | 2026-10-03 | 2026-10-06 | 413FS+2d | 2026-10-03 | 2026-10-06 | 2d | 13d | 0d |
| 523 | 1.3.23.18 | Salida sanitaria para WC | 4d | 2026-10-06 | 2026-10-12 | 413FS+4d | 2026-10-06 | 2026-10-12 | 4d | 13d | 0d |
| 524 | 1.3.23.19 | Salida hidráulica para zinc | 4d | 2026-10-06 | 2026-10-12 | 413FS+4d | 2026-10-06 | 2026-10-12 | 4d | 13d | 0d |
| 525 | 1.3.23.20 | Salida sanitaria para zinc | 3d | 2026-10-08 | 2026-10-13 | 413FS+6d | 2026-10-08 | 2026-10-13 | 3d | 13d | 0d |
| 526 | 1.3.23.21 | Tubo para ventila de baño 2 | 5d | 2026-10-01 | 2026-10-07 | 506SS | 2026-10-01 | 2026-10-07 | 5d | 13d | 0d |
| 527 | 1.3.23.22 | Tubo para minisplit PVC 3 | 5d | 2026-10-07 | 2026-10-14 | 526 | 2026-10-07 | 2026-10-14 | 5d | 13d | 0d |
| 528 | 1.3.23.23 | Cuadro de medición | 5d | 2026-10-05 | 2026-10-12 | 460 | 2026-10-05 | 2026-10-12 | 5d | 18d | 0d |
| 529 | 1.3.23.24 | Pozo de absorción 0.50x0.50x0.50 | 3d | 2026-10-05 | 2026-10-08 | 460 | 2026-10-05 | 2026-10-08 | 3d | 21d | 0d |
| 530 | 1.3.23.25 | Prueba sanitaria final | 1d | 2026-10-14 | 2026-10-15 | 506, 507, 508, 510, 515, 517, 519, 521, 523, 526, 527 | 2026-10-14 | 2026-10-15 | 1d | 17d | 4d |
| 531 | 1.3.23.26 | Prueba hidrostática final | 1d | 2026-10-13 | 2026-10-14 | 511, 512, 513, 514, 516, 518, 520, 522, 524, 528, 529, 534, 535, 533, 532 | 2026-10-13 | 2026-10-14 | 1d | 18d | 5d |
| 532 | 1.3.23.27 | Salida válvula control 19 mm | 1d | 2026-10-12 | 2026-10-13 | 528 | 2026-10-12 | 2026-10-13 | 1d | 18d | 0d |
| 533 | 1.3.23.28 | Salida válvula control 13 mm | 1d | 2026-10-12 | 2026-10-13 | 528 | 2026-10-12 | 2026-10-13 | 1d | 18d | 0d |
| 534 | 1.3.23.29 | Salida hidráulica para tanque hidroneumático | 3d | 2026-10-05 | 2026-10-08 | 460 | 2026-10-05 | 2026-10-08 | 3d | 21d | 3d |
| 535 | 1.3.23.30 | Salida hidráulica para Active Driver | 3d | 2026-10-05 | 2026-10-08 | 460 | 2026-10-05 | 2026-10-08 | 3d | 21d | 3d |

| ID | WBS | Task | Duration | Start | Finish | Predecessors | Baseline start | Baseline finish | Baseline duration | Total slack | Free slack |
| --- | --- | --- | --- | --- | --- | --- | --- | --- | --- | --- | --- |
| 536 | 1.3.24 | **INSTALACION DE GAS** | 8d | 2026-09-29 | 2026-10-08 |  | 2026-09-29 | 2026-10-08 | 8d | 46d |  |
| 537 | 1.3.24.1 | Ramaleo para gas 1/2 | 5d | 2026-10-02 | 2026-10-08 | 460FS-2d, 538 | 2026-10-02 | 2026-10-08 | 5d | 46d | 0d |
| 538 | 1.3.24.2 | Excavación a mano material tipo B | 3d | 2026-09-29 | 2026-10-02 | 460FF-2d | 2026-09-29 | 2026-10-02 | 3d | 46d | 0d |
| 539 | 1.3.25 | **MUEBLES SANITARIOS** | 29d | 2026-11-06 | 2026-12-14 |  | 2026-11-06 | 2026-12-14 | 29d | 25d |  |
| 540 | 1.3.25.1 | WC completo Austral | 2d | 2026-11-06 | 2026-11-09 | 444, 451, 530, 531 | 2026-11-06 | 2026-11-09 | 2d | 27d | 14d |
| 541 | 1.3.25.2 | Lavabo Senna con pedestal | 4d | 2026-11-06 | 2026-11-11 | 444, 449, 451, 530, 531 | 2026-11-06 | 2026-11-11 | 4d | 25d | 12d |
| 542 | 1.3.25.3 | Tarja / lavabo combo Guinea 80x45 | 2d | 2026-11-06 | 2026-11-09 | 288, 444, 449, 451, 531 | 2026-11-06 | 2026-11-09 | 2d | 53d |  |
| 543 | 1.3.25.4 | Regadera con monomando | 3d | 2026-11-09 | 2026-11-12 | 444, 449FS+2d, 451FS+2d, 530, 531 | 2026-11-09 | 2026-11-12 | 3d | 24d | 11d |
| 544 | 1.3.25.5 | Coladera inserto cerámico | 2d | 2026-11-10 | 2026-11-12 | 449, 451FS+3d, 531 | 2026-11-10 | 2026-11-12 | 2d | 24d | 11d |
| 545 | 1.3.25.6 | Toallero sencillo | 1d | 2026-12-12 | 2026-12-14 | 437FS-1d | 2026-12-12 | 2026-12-14 | 1d | 13d | 0d |
| 546 | 1.3.25.7 | Toallero barra | 1d | 2026-12-12 | 2026-12-14 | 437FS-1d | 2026-12-12 | 2026-12-14 | 1d | 13d | 0d |
| 547 | 1.3.25.8 | Portapapel | 1d | 2026-12-12 | 2026-12-14 | 437FS-1d | 2026-12-12 | 2026-12-14 | 1d | 13d | 0d |
| 548 | 1.3.25.9 | Gancho baño | 1d | 2026-12-12 | 2026-12-14 | 437FS-1d | 2026-12-12 | 2026-12-14 | 1d | 13d | 0d |
| 549 | 1.3.26 | **EQUIPAMIENTO** | 6d | 2026-09-23 | 2026-09-30 |  | 2026-09-23 | 2026-09-30 | 6d | 72d |  |
| 550 | 1.3.26.1 | Electronivel Rotoplas 5 m | 2d | 2026-09-24 | 2026-09-26 | 555 | 2026-09-24 | 2026-09-26 | 2d | 75d | 62d |
| 551 | 1.3.26.2 | Manómetro | 1d | 2026-09-24 | 2026-09-25 | 555 | 2026-09-24 | 2026-09-25 | 1d | 76d | 63d |
| 552 | 1.3.26.3 | Interruptor de presión 30-50 PSI | 1d | 2026-09-24 | 2026-09-25 | 555 | 2026-09-24 | 2026-09-25 | 1d | 76d | 63d |
| 553 | 1.3.26.4 | Tanque hidroneumático FPS-24LX | 3d | 2026-09-24 | 2026-09-28 | 555 | 2026-09-24 | 2026-09-28 | 3d | 72d | 0d |
| 554 | 1.3.26.5 | Bomba sumergible Dominator 1.2 HP | 2d | 2026-09-28 | 2026-09-30 | 553 | 2026-09-28 | 2026-09-30 | 2d | 72d | 59d |
| 555 | 1.3.26.6 | Cisterna prefabricada 2800 L | 1d | 2026-09-23 | 2026-09-24 | 417FF | 2026-09-23 | 2026-09-24 | 1d | 72d | 0d |
| 556 | 1.3.27 | **LUMINARIAS** | 5d | 2026-10-29 | 2026-11-04 |  | 2026-10-29 | 2026-11-04 | 5d | 42d |  |
| 557 | 1.3.27.1 | Roseta cerámica | 3d | 2026-10-29 | 2026-11-02 | 497 | 2026-10-29 | 2026-11-02 | 3d | 44d | 2d |
| 558 | 1.3.27.2 | Luminaria lagartijera LED | 3d | 2026-10-29 | 2026-11-02 | 497 | 2026-10-29 | 2026-11-02 | 3d | 44d | 2d |
| 559 | 1.3.27.3 | Spot 6W Tecnolite | 3d | 2026-10-29 | 2026-11-02 | 497 | 2026-10-29 | 2026-11-02 | 3d | 44d | 2d |
| 560 | 1.3.27.4 | Spot 7W Tecnolite | 3d | 2026-10-29 | 2026-11-02 | 497 | 2026-10-29 | 2026-11-02 | 3d | 44d | 2d |
| 561 | 1.3.27.5 | Arbotante exterior | 2d | 2026-10-29 | 2026-10-30 | 497 | 2026-10-29 | 2026-10-30 | 2d | 42d | 0d |
| 562 | 1.3.27.6 | Estaca LED exterior | 3d | 2026-10-31 | 2026-11-04 | 561 | 2026-10-31 | 2026-11-04 | 3d | 42d | 0d |
| 563 | 1.3.27.7 | Tira LED | 3d | 2026-10-31 | 2026-11-04 | 561 | 2026-10-31 | 2026-11-04 | 3d | 42d | 0d |
| 564 | 1.3.27.8 | Spot exterior 50W | 2d | 2026-10-29 | 2026-10-30 | 497 | 2026-10-29 | 2026-10-30 | 2d | 45d | 3d |

| ID | WBS | Task | Type | Duration | Start | Finish | Predecessors | Complete | Remaining | Baseline start | Baseline finish | Baseline duration | Total slack | Free slack |
| --- | --- | --- | --- | --- | --- | --- | --- | --- | --- | --- | --- | --- | --- | --- |
| 565 | 1.3.28 | **TIMBRE** |  | 2d | 2026-10-30 | 2026-11-02 |  |  |  | 2026-10-30 | 2026-11-02 | 2d | 44d |  |
| 566 | 1.3.28.1 | Timbre inalámbrico con bocina |  | 2d | 2026-10-30 | 2026-11-02 | 495FS+3d, 496FS+3d |  |  | 2026-10-30 | 2026-11-02 | 2d | 44d | 2d |
| 567 | 1.3.29 | **OBRA EXTERIOR - BARDA** |  | 18d | 2026-10-05 | 2026-10-27 |  |  |  | 2026-10-05 | 2026-10-27 | 18d | 50d |  |
| 568 | 1.3.29.1 | Murete convencional |  | 5d | 2026-10-12 | 2026-10-17 | 460FS+5d |  |  | 2026-10-12 | 2026-10-17 | 5d | 56d | 14d |
| 569 | 1.3.29.2 | Barda de block aparente |  | 18d | 2026-10-05 | 2026-10-27 | 460 |  |  | 2026-10-05 | 2026-10-27 | 18d | 50d | 37d |
| 570 | 1.3.30 | **TERCER LIMPIEZA DE OBRA** |  | 13d | 2026-12-14 | 2027-01-04 |  |  |  | 2026-12-14 | 2027-01-04 | 13d | 13d |  |
| 571 | 1.3.30.1 | Limpieza fina para entrega |  | 6d | 2026-12-14 | 2026-12-21 | 437, 438, 439, 470, 479, 480, 504, 530, 531, 545, 546, 547, 548, 550, 551, 552, 553, 554, 569 |  |  | 2026-12-14 | 2026-12-21 | 6d | 13d | 0d |
| 572 | 1.3.30.2 | Tercera limpieza de obra |  | 4d | 2026-12-22 | 2026-12-29 | 571, 463 |  |  | 2026-12-22 | 2026-12-29 | 4d | 13d | 0d |
| 573 | 1.3.30.3 | Tercera carga y acarreo de escombro |  | 3d | 2026-12-29 | 2027-01-04 | 572 |  |  | 2026-12-29 | 2027-01-04 | 3d | 13d | 0d |
| 574 | 1.4 | **LOTE 03 M-661 CORSAC-A** |  | 181d | 2026-05-20 A | 2027-01-07 |  | 5% | 171.71d | 2026-05-20 | 2027-01-07 | 181d | 10d |  |
| 575 | 1.4.1 | **HITOS IMPORTANTES DEL LOTE** |  | 181d | 2026-05-20 A | 2027-01-07 |  |  | 181d | 2026-05-20 | 2027-01-07 | 181d | 10d |  |
| 576 | 1.4.1.1 | Inicio del Lote-03 M-661 Corsac-A | milestone | 0d | 2026-05-20 A | 2026-05-20 A | 6 | 100% |  | 2026-05-20 | 2026-05-20 |  |  |  |
| 577 | 1.4.1.2 | Colado de Losa de Cimentación | milestone | 0d | 2026-06-10 | 2026-06-10 | 608 |  |  | 2026-06-10 | 2026-06-10 |  | 174d |  |
| 578 | 1.4.1.3 | Colado de Losa de Entrepiso | milestone | 0d | 2026-07-17 | 2026-07-17 | 644 |  |  | 2026-07-17 | 2026-07-17 |  | 144d |  |
| 579 | 1.4.1.4 | Colado de Losa de Azotea | milestone | 0d | 2026-08-24 | 2026-08-24 | 684 |  |  | 2026-08-24 | 2026-08-24 |  | 114d |  |
| 580 | 1.4.1.5 | Entrega de vivienda | milestone | 0d | 2027-01-07 | 2027-01-07 | 876, 877, 878 |  |  | 2027-01-07 | 2027-01-07 |  | 10d |  |
| 581 | 1.4.2 | **TRABAJOS PRELIMINARES** |  | 2d | 2026-05-20 A | 2026-05-22 A |  | 100% |  | 2026-05-20 | 2026-05-22 | 2d |  |  |
| 582 | 1.4.2.1 | Trazo y nivelación |  | 2d | 2026-05-20 A | 2026-05-22 A | 576 | 100% |  | 2026-05-20 | 2026-05-22 | 2d |  |  |
| 583 | 1.4.3 | **EXCAVACIONES** |  | 3d | 2026-05-22 A | 2026-05-26 A |  | 100% |  | 2026-05-22 | 2026-05-26 | 3d |  |  |
| 584 | 1.4.3.1 | Excavación a mano material tipo B |  | 3d | 2026-05-22 A | 2026-05-26 A | 582 | 100% |  | 2026-05-22 | 2026-05-26 | 3d |  |  |
| 585 | 1.4.3.2 | Acarreo en carretilla 20 m |  | 2d | 2026-05-23 A | 2026-05-26 A | 584SS+1d | 100% |  | 2026-05-23 | 2026-05-26 | 2d |  |  |
| 586 | 1.4.4 | **CIMENTACION** |  | 13d | 2026-05-26 A | 2026-06-11 |  | 93% | 0.95d | 2026-05-26 | 2026-06-11 | 13d | 10d |  |
| 587 | 1.4.4.1 | Cimbra perimetral losa de cimentación |  | 3d | 2026-05-26 A | 2026-05-29 A | 584, 585 | 100% |  | 2026-05-26 | 2026-05-29 | 3d |  |  |
| 588 | 1.4.4.2 | Sistema antitermitas PVC |  | 3d | 2026-05-26 A | 2026-05-29 A | 584, 585 | 100% |  | 2026-05-26 | 2026-05-29 | 3d |  |  |
| 589 | 1.4.4.3 | Hule negro en cimentación |  | 1d | 2026-05-29 A | 2026-06-01 A | 588 | 100% |  | 2026-05-29 | 2026-06-01 | 1d |  |  |
| 590 | 1.4.4.4 | Ramaleo poliducto eléctrico cimentación |  | 2d | 2026-06-01 A | 2026-06-03 A | 589 | 100% |  | 2026-06-01 | 2026-06-03 | 2d |  |  |
| 591 | 1.4.4.5 | Ramaleo eléctrico base-medición a centro de carga |  | 1d | 2026-06-01 A | 2026-06-02 A | 589 | 100% |  | 2026-06-01 | 2026-06-02 | 1d |  |  |
| 592 | 1.4.4.6 | Ramaleo eléctrico exterior |  | 1d | 2026-06-03 A | 2026-06-04 A | 590, 591 | 100% |  | 2026-06-03 | 2026-06-04 | 1d |  |  |
| 593 | 1.4.4.7 | Ramaleo para cable poliducto 3/4 |  | 1d | 2026-06-03 A | 2026-06-04 A | 590, 591 | 100% |  | 2026-06-03 | 2026-06-04 | 1d |  |  |
| 594 | 1.4.4.8 | Ramaleo para TV poliducto 3/4 |  | 1d | 2026-06-03 A | 2026-06-04 A | 590, 591 | 100% |  | 2026-06-03 | 2026-06-04 | 1d |  |  |
| 595 | 1.4.4.9 | Ramaleo hidráulico CPVC 1-1/4" cimentación |  | 1d | 2026-06-01 A | 2026-06-02 A | 589 | 100% |  | 2026-06-01 | 2026-06-02 | 1d |  |  |
| 596 | 1.4.4.10 | Ramaleo hidráulico CPVC 1 cimentación |  | 1d | 2026-06-01 A | 2026-06-02 A | 589, 595SS | 100% |  | 2026-06-01 | 2026-06-02 | 1d |  |  |
| 597 | 1.4.4.11 | Ramaleo hidráulico CPVC 3/4 cimentación |  | 2d | 2026-06-02 A | 2026-06-04 A | 596 | 100% |  | 2026-06-02 | 2026-06-04 | 2d |  |  |
| 598 | 1.4.4.12 | Ramaleo hidráulico CPVC 1/2 cimentación |  | 2d | 2026-06-04 A | 2026-06-06 A | 597 | 100% |  | 2026-06-04 | 2026-06-06 | 2d |  |  |
| 599 | 1.4.4.13 | Prueba hidráulica |  | 1d | 2026-06-06 A | 2026-06-08 A | 595, 596, 597, 598 | 100% |  | 2026-06-06 | 2026-06-08 | 1d |  |  |
| 600 | 1.4.4.14 | Ramaleo sanitario PVC 4 cimentación |  | 2d | 2026-06-02 A | 2026-06-04 A | 589FS+1d | 100% |  | 2026-06-02 | 2026-06-04 | 2d |  |  |
| 601 | 1.4.4.15 | Ramaleo sanitario PVC 2 cimentación |  | 1d | 2026-06-04 A | 2026-06-05 A | 600 | 100% |  | 2026-06-04 | 2026-06-05 | 1d |  |  |
| 602 | 1.4.4.16 | Prueba sanitaria |  | 1d | 2026-06-05 A | 2026-06-06 A | 600, 601 | 100% |  | 2026-06-05 | 2026-06-06 | 1d |  |  |
| 603 | 1.4.4.17 | Acero contratrabe CT-1 |  | 4d | 2026-05-29 A | 2026-06-04 A | 587 | 100% |  | 2026-05-29 | 2026-06-04 | 4d |  |  |
| 604 | 1.4.4.18 | Acero contratrabe CT-2 |  | 4d | 2026-05-29 A | 2026-06-04 A | 587 | 100% |  | 2026-05-29 | 2026-06-04 | 4d |  |  |
| 605 | 1.4.4.19 | Malla electrosoldada 6-6/8-8 |  | 2d | 2026-06-06 A | 2026-06-09 | 603, 604, 606, 607 | 75% | 0.5d | 2026-06-06 | 2026-06-09 | 2d | 10d | 0d |
| 606 | 1.4.4.20 | Bastón de refuerzo LS |  | 2d | 2026-06-04 A | 2026-06-06 A | 603, 604 | 100% |  | 2026-06-04 | 2026-06-06 | 2d |  |  |
| 607 | 1.4.4.21 | Bastón de refuerzo LI |  | 2d | 2026-06-04 A | 2026-06-06 A | 603, 604 | 100% |  | 2026-06-04 | 2026-06-06 | 2d |  |  |
| 608 | 1.4.4.22 | Colado losa de cimentación f’c=200 |  | 1d | 2026-06-09 | 2026-06-10 | 587, 589, 592, 593, 594, 599, 602, 603, 604, 605, 606, 607, 610, 611 |  |  | 2026-06-09 | 2026-06-10 | 1d | 10d | 0d |
| 609 | 1.4.4.23 | Curado de concreto |  | 1d | 2026-06-10 | 2026-06-11 | 608 |  |  | 2026-06-10 | 2026-06-11 | 1d | 10d | 0d |
| 610 | 1.4.4.24 | Acero zapata ZT-1 |  | 4d | 2026-06-04 A | 2026-06-09 | 603, 604 | 88% | 0.5d | 2026-06-04 | 2026-06-09 | 4d | 10d | 0d |
| 611 | 1.4.4.25 | Acero zapata ZT-2 |  | 4d | 2026-06-04 A | 2026-06-09 | 603, 604 | 88% | 0.5d | 2026-06-04 | 2026-06-09 | 4d | 10d | 0d |

| ID | WBS | Task | Duration | Start | Finish | Predecessors | Complete | Remaining | Baseline start | Baseline finish | Baseline duration | Total slack | Free slack |
| --- | --- | --- | --- | --- | --- | --- | --- | --- | --- | --- | --- | --- | --- |
| 612 | 1.4.5 | **MUROS, PLANTA BAJA. CASTILLOS Y CERRAMIENTOS** | 20d | 2026-06-05 A | 2026-06-30 |  | 4% | 19.28d | 2026-06-05 | 2026-06-30 | 20d | 158d |  |
| 613 | 1.4.5.1 | Anclaje de castillos y Columnas PB | 5d | 2026-06-05 A | 2026-06-11 | 603FS+1d, 604FS+1d | 50% | 2.5d | 2026-06-05 | 2026-06-11 | 5d | 161d | 0d |
| 614 | 1.4.5.2 | Castillo K1 | 4d | 2026-06-11 | 2026-06-16 | 609, 613 |  |  | 2026-06-11 | 2026-06-16 | 4d | 161d | 0d |
| 615 | 1.4.5.3 | Castillo K3 | 3d | 2026-06-13 | 2026-06-17 | 614FS-2d |  |  | 2026-06-13 | 2026-06-17 | 3d | 161d | 0d |
| 616 | 1.4.5.4 | Castillo K4 | 3d | 2026-06-13 | 2026-06-17 | 614FS-2d |  |  | 2026-06-13 | 2026-06-17 | 3d | 161d | 0d |
| 617 | 1.4.5.5 | Castillo K5 | 3d | 2026-06-16 | 2026-06-19 | 615FS-1d, 616FS-1d |  |  | 2026-06-16 | 2026-06-19 | 3d | 161d | 0d |
| 618 | 1.4.5.6 | Refuerzo de muro K6 | 3d | 2026-06-17 | 2026-06-22 | 617FS-2d |  |  | 2026-06-17 | 2026-06-22 | 3d | 161d | 0d |
| 619 | 1.4.5.7 | Dala de cerramiento CR-1 | 4d | 2026-06-17 | 2026-06-23 | 614, 615 |  |  | 2026-06-17 | 2026-06-23 | 4d | 164d |  |
| 620 | 1.4.5.8 | Dala de cerramiento CR-2 | 3d | 2026-06-17 | 2026-06-22 | 614, 615 |  |  | 2026-06-17 | 2026-06-22 | 3d | 165d |  |
| 621 | 1.4.5.9 | Cadena block dala | 4d | 2026-06-22 | 2026-06-26 | 618 |  |  | 2026-06-22 | 2026-06-26 | 4d | 161d |  |
| 622 | 1.4.5.10 | Muro de ladrillo aparente | 15d | 2026-06-11 | 2026-06-30 | 609 |  |  | 2026-06-11 | 2026-06-30 | 15d | 10d | 0d |
| 623 | 1.4.5.11 | Muro de block planta baja | 13d | 2026-06-13 | 2026-06-30 | 609FS+2d |  |  | 2026-06-13 | 2026-06-30 | 13d | 10d | 0d |
| 624 | 1.4.5.12 | Ramaleo electrico en Muros Planta Baja | 4d | 2026-06-17 | 2026-06-23 | 622SS+5d |  |  | 2026-06-17 | 2026-06-23 | 4d | 13d | 0d |
| 625 | 1.4.5.13 | Ramaleo para cable poliducto 3/4 | 2d | 2026-06-23 | 2026-06-25 | 624 |  |  | 2026-06-23 | 2026-06-25 | 2d | 13d | 0d |
| 626 | 1.4.5.14 | Ramaleo para TV poliducto 3/4 | 3d | 2026-06-25 | 2026-06-29 | 625 |  |  | 2026-06-25 | 2026-06-29 | 3d | 13d | 2d |
| 627 | 1.4.6 | **ESCALERA** | 10d | 2026-07-17 | 2026-07-30 |  |  |  | 2026-07-17 | 2026-07-30 | 10d | 87d |  |
| 628 | 1.4.6.1 | Escalera de concreto armado | 10d | 2026-07-17 | 2026-07-30 | 644 |  |  | 2026-07-17 | 2026-07-30 | 10d | 87d | 77d |
| 629 | 1.4.7 | **LOSA DE ENTREPISO (viegueta y caseton)** | 17d | 2026-06-27 | 2026-07-18 |  |  |  | 2026-06-27 | 2026-07-18 | 17d | 13d |  |
| 630 | 1.4.7.1 | Dala de coronamiento 10cm | 3d | 2026-07-07 | 2026-07-09 | 646FS-1d, 632, 633, 634, 635, 636, 637 |  |  | 2026-07-07 | 2026-07-09 | 3d | 13d | 3d |
| 631 | 1.4.7.2 | Dala de coronamiento 12cm | 3d | 2026-07-08 | 2026-07-10 | 646, 632, 633, 634, 635, 636, 637 |  |  | 2026-07-08 | 2026-07-10 | 3d | 12d | 2d |
| 632 | 1.4.7.3 | Trabe TR-1 | 3d | 2026-06-27 | 2026-07-01 | 622FS-2d, 623FS-2d |  |  | 2026-06-27 | 2026-07-01 | 3d | 14d | 4d |
| 633 | 1.4.7.4 | Trabe TR-2 | 4d | 2026-06-29 | 2026-07-03 | 622FS-1d, 623FS-1d |  |  | 2026-06-29 | 2026-07-03 | 4d | 12d | 2d |
| 634 | 1.4.7.5 | Nervadura NR-1 | 4d | 2026-06-30 | 2026-07-04 | 622, 623 |  |  | 2026-06-30 | 2026-07-04 | 4d | 11d | 1d |
| 635 | 1.4.7.6 | Nervadura NR-2 | 4d | 2026-07-01 | 2026-07-06 | 622FS+1d, 623FS+1d |  |  | 2026-07-01 | 2026-07-06 | 4d | 10d | 0d |
| 636 | 1.4.7.7 | Nervadura NR-3 | 4d | 2026-07-01 | 2026-07-06 | 622FS+1d, 623FS+1d |  |  | 2026-07-01 | 2026-07-06 | 4d | 10d | 0d |
| 637 | 1.4.7.8 | Nervadura NR-4 | 4d | 2026-07-01 | 2026-07-06 | 622FS+1d, 623FS+1d |  |  | 2026-07-01 | 2026-07-06 | 4d | 10d | 0d |
| 638 | 1.4.7.9 | Acero de refuerzo en nervios #3 | 2d | 2026-07-07 | 2026-07-08 | 632, 633, 634, 635, 636, 637 |  |  | 2026-07-07 | 2026-07-08 | 2d | 10d | 0d |
| 639 | 1.4.7.10 | Acero de refuerzo long. #3 | 3d | 2026-07-08 | 2026-07-10 | 632, 633, 634, 635, 636, 637, 646 |  |  | 2026-07-08 | 2026-07-10 | 3d | 11d | 0d |
| 640 | 1.4.7.11 | Acero de refuerzo long. #4 | 3d | 2026-07-08 | 2026-07-10 | 639SS |  |  | 2026-07-08 | 2026-07-10 | 3d | 11d | 0d |
| 641 | 1.4.7.12 | Malla 66-10/10 losa de compresión | 2d | 2026-07-14 | 2026-07-16 | 630, 631, 638, 651, 654, 643 |  |  | 2026-07-14 | 2026-07-16 | 2d | 10d | 0d |
| 642 | 1.4.7.13 | Acero de Losa Maciza | 3d | 2026-07-07 | 2026-07-09 | 634, 635, 636, 637 |  |  | 2026-07-07 | 2026-07-09 | 3d | 15d | 5d |
| 643 | 1.4.7.14 | Caseton de 60x60x20cm | 2d | 2026-07-07 | 2026-07-08 | 634, 635, 636, 637 |  |  | 2026-07-07 | 2026-07-08 | 2d | 14d | 4d |
| 644 | 1.4.7.15 | Concreto losa de entrepiso f’c=200 | 1d | 2026-07-16 | 2026-07-17 | 639, 640, 641, 642, 651, 654, 647, 656 |  |  | 2026-07-16 | 2026-07-17 | 1d | 10d | 0d |
| 645 | 1.4.7.16 | Curado de concreto | 1d | 2026-07-17 | 2026-07-18 | 644 |  |  | 2026-07-17 | 2026-07-18 | 1d | 10d | 0d |
| 646 | 1.4.7.17 | Cimbra losa de azotea | 5d | 2026-07-01 | 2026-07-07 | 622FS+1d, 623FS+1d, 626 |  |  | 2026-07-01 | 2026-07-07 | 5d | 11d | 0d |
| 647 | 1.4.7.18 | Cimbra exterior corta losa | 3d | 2026-07-10 | 2026-07-14 | 639FS-1d, 640FS-1d |  |  | 2026-07-10 | 2026-07-14 | 3d | 12d | 2d |
| 648 | 1.4.7.19 | Ramaleo poliducto eléctrico entrepiso | 2d | 2026-07-09 | 2026-07-10 | 638 |  |  | 2026-07-09 | 2026-07-10 | 2d | 149d |  |
| 649 | 1.4.7.20 | Ramaleo hidráulico CPVC 3/4" | 2d | 2026-07-10 | 2026-07-13 | 638FS+1d |  |  | 2026-07-10 | 2026-07-13 | 2d | 10d | 0d |
| 650 | 1.4.7.21 | Ramaleo hidráulico CPVC 1/2" | 1d | 2026-07-13 | 2026-07-14 | 649 |  |  | 2026-07-13 | 2026-07-14 | 1d | 10d | 0d |
| 651 | 1.4.7.22 | Prueba hidráulica | 1d | 2026-07-13 | 2026-07-14 | 649, 650FS-1d |  |  | 2026-07-13 | 2026-07-14 | 1d | 10d | 0d |
| 652 | 1.4.7.23 | Ramaleo sanitario PVC 4" | 2d | 2026-07-10 | 2026-07-13 | 638FS+1d |  |  | 2026-07-10 | 2026-07-13 | 2d | 10d | 0d |
| 653 | 1.4.7.24 | Ramaleo sanitario PVC 2" | 1d | 2026-07-13 | 2026-07-14 | 652 |  |  | 2026-07-13 | 2026-07-14 | 1d | 10d | 0d |
| 654 | 1.4.7.25 | Prueba sanitaria | 1d | 2026-07-13 | 2026-07-14 | 652, 653FS-1d |  |  | 2026-07-13 | 2026-07-14 | 1d | 10d | 0d |

| ID | WBS | Task | Duration | Start | Finish | Predecessors | Baseline start | Baseline finish | Baseline duration | Total slack | Free slack |
| --- | --- | --- | --- | --- | --- | --- | --- | --- | --- | --- | --- |
| 655 | 1.4.8 | **MUROS EN PLANTA ALTA, CASTILLOS Y CERRM.** | 22d | 2026-07-10 | 2026-08-06 |  | 2026-07-10 | 2026-08-06 | 22d | 11d |  |
| 656 | 1.4.8.1 | Anclaje de castillos y Columnas PA | 4d | 2026-07-10 | 2026-07-15 | 639FS-1d, 640FS-1d | 2026-07-10 | 2026-07-15 | 4d | 11d | 1d |
| 657 | 1.4.8.2 | Castillo K1 | 4d | 2026-07-18 | 2026-07-23 | 645 | 2026-07-18 | 2026-07-23 | 4d | 14d | 0d |
| 658 | 1.4.8.3 | Castillo K2 | 4d | 2026-07-20 | 2026-07-24 | 645FS+1d | 2026-07-20 | 2026-07-24 | 4d | 13d | 0d |
| 659 | 1.4.8.4 | Castillo K4 | 3d | 2026-07-23 | 2026-07-28 | 657 | 2026-07-23 | 2026-07-28 | 3d | 14d | 1d |
| 660 | 1.4.8.5 | Castillo K5 | 3d | 2026-07-23 | 2026-07-28 | 657 | 2026-07-23 | 2026-07-28 | 3d | 14d | 1d |
| 661 | 1.4.8.6 | Castillo K6 | 3d | 2026-07-23 | 2026-07-28 | 657 | 2026-07-23 | 2026-07-28 | 3d | 14d | 1d |
| 662 | 1.4.8.7 | Refuerzo de muro | 3d | 2026-07-24 | 2026-07-29 | 657, 658 | 2026-07-24 | 2026-07-29 | 3d | 13d | 0d |
| 663 | 1.4.8.8 | Dala de cerramiento CR-1 | 4d | 2026-07-29 | 2026-08-03 | 659, 660, 661, 662 | 2026-07-29 | 2026-08-03 | 4d | 13d | 0d |
| 664 | 1.4.8.9 | Dala de cerramiento CR-2 | 4d | 2026-07-29 | 2026-08-03 | 659, 660, 661, 662 | 2026-07-29 | 2026-08-03 | 4d | 13d | 0d |
| 665 | 1.4.8.10 | Cadena block dala | 3d | 2026-08-03 | 2026-08-06 | 662, 663, 664 | 2026-08-03 | 2026-08-06 | 3d | 13d | 0d |
| 666 | 1.4.8.11 | Muro de ladrillo aparente | 15d | 2026-07-18 | 2026-08-06 | 645 | 2026-07-18 | 2026-08-06 | 15d | 10d | 0d |
| 667 | 1.4.8.12 | Muro de block planta alta | 14d | 2026-07-20 | 2026-08-06 | 645FS+1d | 2026-07-20 | 2026-08-06 | 14d | 10d | 0d |
| 668 | 1.4.8.13 | Ramaleo electrico en Muros Planta Alta | 4d | 2026-07-29 | 2026-08-03 | 666SS+8d | 2026-07-29 | 2026-08-03 | 4d | 21d | 3d |
| 669 | 1.4.9 | **LOSA AZOTEA** | 15d | 2026-08-06 | 2026-08-25 |  | 2026-08-06 | 2026-08-25 | 15d | 10d |  |
| 670 | 1.4.9.1 | Cortalosa CL-1 | 2d | 2026-08-20 | 2026-08-22 | 682 | 2026-08-20 | 2026-08-22 | 2d | 10d | 0d |
| 671 | 1.4.9.2 | Cortalosa CL-2 | 2d | 2026-08-20 | 2026-08-22 | 682 | 2026-08-20 | 2026-08-22 | 2d | 10d | 0d |
| 672 | 1.4.9.3 | Vigueta pretensada V11-30 125 | 5d | 2026-08-06 | 2026-08-12 | 665, 666, 667 | 2026-08-06 | 2026-08-12 | 5d | 13d | 3d |
| 673 | 1.4.9.4 | Vigueta pretensada V11-30 185 | 5d | 2026-08-06 | 2026-08-12 | 666, 667 | 2026-08-06 | 2026-08-12 | 5d | 13d | 3d |
| 674 | 1.4.9.5 | Vigueta pretensada V11-30 190 | 5d | 2026-08-06 | 2026-08-12 | 666, 667 | 2026-08-06 | 2026-08-12 | 5d | 13d | 3d |
| 675 | 1.4.9.6 | Vigueta pretensada V11-30 205 | 5d | 2026-08-08 | 2026-08-14 | 666FS+2d, 667FS+2d | 2026-08-08 | 2026-08-14 | 5d | 11d | 1d |
| 676 | 1.4.9.7 | Vigueta pretensada V11-30 215 | 5d | 2026-08-08 | 2026-08-14 | 666FS+2d, 667FS+2d | 2026-08-08 | 2026-08-14 | 5d | 11d | 1d |
| 677 | 1.4.9.8 | Vigueta pretensada V11-30 260 | 5d | 2026-08-10 | 2026-08-17 | 666FS+3d, 667FS+3d | 2026-08-10 | 2026-08-17 | 5d | 10d | 0d |
| 678 | 1.4.9.9 | Vigueta pretensada V11-30 285 | 5d | 2026-08-10 | 2026-08-17 | 666FS+3d, 667FS+3d | 2026-08-10 | 2026-08-17 | 5d | 10d | 0d |
| 679 | 1.4.9.10 | Vigueta pretensada V11-40 330 | 5d | 2026-08-10 | 2026-08-17 | 666FS+3d, 667 | 2026-08-10 | 2026-08-17 | 5d | 10d | 0d |
| 680 | 1.4.9.11 | Vigueta pretensada V11-40 335 | 5d | 2026-08-10 | 2026-08-17 | 666FS+3d, 667 | 2026-08-10 | 2026-08-17 | 5d | 10d | 0d |
| 681 | 1.4.9.12 | Vigueta pretensada V11-40 505 | 5d | 2026-08-10 | 2026-08-17 | 666FS+3d, 667 | 2026-08-10 | 2026-08-17 | 5d | 10d | 0d |
| 682 | 1.4.9.13 | Bovedilla poliestireno azotea | 3d | 2026-08-17 | 2026-08-20 | 672, 673, 674, 675, 676, 677, 678, 679, 680, 681 | 2026-08-17 | 2026-08-20 | 3d | 10d | 0d |
| 683 | 1.4.9.14 | Malla 66-10/10 losa de compresión | 2d | 2026-08-20 | 2026-08-22 | 682 | 2026-08-20 | 2026-08-22 | 2d | 10d | 0d |
| 684 | 1.4.9.15 | Concreto losa de azotea f’c=200 | 1d | 2026-08-22 | 2026-08-24 | 670, 671, 682, 683, 687, 686 | 2026-08-22 | 2026-08-24 | 1d | 10d | 0d |
| 685 | 1.4.9.16 | Curado de concreto | 1d | 2026-08-24 | 2026-08-25 | 684 | 2026-08-24 | 2026-08-25 | 1d | 10d | 0d |
| 686 | 1.4.9.17 | Cimbra losa de azotea | 5d | 2026-08-06 | 2026-08-12 | 666, 667, 668 | 2026-08-06 | 2026-08-12 | 5d | 18d | 8d |
| 687 | 1.4.9.18 | Ramaleo de poliducto para inst. electrica en azotea | 2d | 2026-08-20 | 2026-08-22 | 682 | 2026-08-20 | 2026-08-22 | 2d | 10d | 0d |

| ID | WBS | Task | Duration | Start | Finish | Predecessors | Baseline start | Baseline finish | Baseline duration | Total slack | Free slack |
| --- | --- | --- | --- | --- | --- | --- | --- | --- | --- | --- | --- |
| 688 | 1.4.10 | **PRETIL Y ACABADOS DE AZOTEA** | 19d | 2026-08-25 | 2026-09-18 |  | 2026-08-25 | 2026-09-18 | 19d | 10d |  |
| 689 | 1.4.10.1 | Castillo K1 | 5d | 2026-08-27 | 2026-09-02 | 691SS+2d | 2026-08-27 | 2026-09-02 | 5d | 10d | 0d |
| 690 | 1.4.10.2 | Dala de cerramiento en pretil | 4d | 2026-09-01 | 2026-09-04 | 689FS-2d, 691FS-2d | 2026-09-01 | 2026-09-04 | 4d | 10d | 0d |
| 691 | 1.4.10.3 | Muro de block 12x15x40 | 5d | 2026-08-25 | 2026-08-31 | 685 | 2026-08-25 | 2026-08-31 | 5d | 10d | 0d |
| 692 | 1.4.10.4 | Chaflán en azotea | 4d | 2026-09-03 | 2026-09-08 | 689, 691 | 2026-09-03 | 2026-09-08 | 4d | 10d | 0d |
| 693 | 1.4.10.5 | Diamante de entortado | 4d | 2026-09-03 | 2026-09-08 | 689, 691 | 2026-09-03 | 2026-09-08 | 4d | 10d | 0d |
| 694 | 1.4.10.6 | Aplanado exterior Mortermax fino | 5d | 2026-09-05 | 2026-09-11 | 690, 692FS-2d, 693FS-2d | 2026-09-05 | 2026-09-11 | 5d | 10d | 0d |
| 695 | 1.4.10.7 | Entortado de Losa | 4d | 2026-09-12 | 2026-09-18 | 696 | 2026-09-12 | 2026-09-18 | 4d | 10d | 0d |
| 696 | 1.4.10.8 | Curado de concreto | 1d | 2026-09-11 | 2026-09-12 | 692, 694 | 2026-09-11 | 2026-09-12 | 1d | 10d | 0d |
| 697 | 1.4.11 | **PRIMERA LIMPIEZA DE OBRA** | 4d | 2026-08-25 | 2026-08-29 |  | 2026-08-25 | 2026-08-29 | 4d | 70d |  |
| 698 | 1.4.11.1 | Primera limpieza de obra | 2d | 2026-08-25 | 2026-08-27 | 685 | 2026-08-25 | 2026-08-27 | 2d | 70d | 0d |
| 699 | 1.4.11.2 | Primera carga y acarreo de escombro | 2d | 2026-08-27 | 2026-08-29 | 698 | 2026-08-27 | 2026-08-29 | 2d | 70d | 1d |
| 700 | 1.4.12 | **IMPERMEABILIZACION** | 5d | 2026-09-18 | 2026-09-25 |  | 2026-09-18 | 2026-09-25 | 5d | 10d |  |
| 701 | 1.4.12.1 | Impermeabilización de pretil Kover 5 años | 4d | 2026-09-18 | 2026-09-24 | 695 | 2026-09-18 | 2026-09-24 | 4d | 11d | 1d |
| 702 | 1.4.12.2 | Impermeabilización de losa Kover 5 años | 5d | 2026-09-18 | 2026-09-25 | 695 | 2026-09-18 | 2026-09-25 | 5d | 10d | 0d |
| 703 | 1.4.13 | **ALBAÑILERIA** | 62d | 2026-09-01 | 2026-11-19 |  | 2026-09-01 | 2026-11-19 | 62d | 29d |  |
| 704 | 1.4.13.1 | Lavadero de granito | 4d | 2026-10-15 | 2026-10-20 | 740SS+8d | 2026-10-15 | 2026-10-20 | 4d | 69d |  |
| 705 | 1.4.13.2 | Ranurado y resane general inst. en muros | 3d | 2026-09-23 | 2026-09-26 | 702FS-2d | 2026-09-23 | 2026-09-26 | 3d | 12d | 1d |
| 706 | 1.4.13.3 | Ranurado y resane eléctrico 1/2 a 3/4 | 3d | 2026-09-23 | 2026-09-26 | 702FS-2d | 2026-09-23 | 2026-09-26 | 3d | 12d | 1d |
| 707 | 1.4.13.4 | Ranurado y resane hidráulico 1/2 a 1 | 2d | 2026-09-25 | 2026-09-28 | 702 | 2026-09-25 | 2026-09-28 | 2d | 11d | 0d |
| 708 | 1.4.13.5 | Resane sanitario tubería 2 | 2d | 2026-09-25 | 2026-09-28 | 702 | 2026-09-25 | 2026-09-28 | 2d | 11d | 0d |
| 709 | 1.4.13.6 | Resane sanitario tubería 4 | 2d | 2026-09-25 | 2026-09-28 | 702 | 2026-09-25 | 2026-09-28 | 2d | 11d | 0d |
| 710 | 1.4.13.7 | Resane minisplit tubería 3 | 2d | 2026-09-25 | 2026-09-28 | 702 | 2026-09-25 | 2026-09-28 | 2d | 11d | 0d |
| 711 | 1.4.13.8 | Ramaleo hidráulico exterior CPVC 1 1/4 | 3d | 2026-09-25 | 2026-09-29 | 701, 702 | 2026-09-25 | 2026-09-29 | 3d | 10d | 0d |
| 712 | 1.4.13.9 | Ramaleo hidráulico exterior CPVC 1 | 2d | 2026-09-25 | 2026-09-28 | 711SS | 2026-09-25 | 2026-09-28 | 2d | 10d | 0d |
| 713 | 1.4.13.10 | Ramaleo hidráulico exterior CPVC 3/4 | 2d | 2026-09-28 | 2026-09-30 | 712 | 2026-09-28 | 2026-09-30 | 2d | 10d | 0d |
| 714 | 1.4.13.11 | Ramaleo hidráulico exterior CPVC 1/2 | 2d | 2026-09-28 | 2026-09-30 | 712 | 2026-09-28 | 2026-09-30 | 2d | 10d | 0d |
| 715 | 1.4.13.12 | Prueba hidráulica | 1d | 2026-09-30 | 2026-10-01 | 707, 711, 712, 713, 714 | 2026-09-30 | 2026-10-01 | 1d | 10d | 0d |
| 716 | 1.4.13.13 | Ramaleo sanitario exterior PVC 4 | 4d | 2026-09-25 | 2026-09-30 | 701, 702 | 2026-09-25 | 2026-09-30 | 4d | 10d | 0d |
| 717 | 1.4.13.14 | Ramaleo sanitario exterior PVC 2 | 3d | 2026-09-26 | 2026-09-30 | 716SS+1d | 2026-09-26 | 2026-09-30 | 3d | 10d | 0d |
| 718 | 1.4.13.15 | Prueba sanitaria | 1d | 2026-09-30 | 2026-10-01 | 708, 709, 710, 716, 717 | 2026-09-30 | 2026-10-01 | 1d | 10d | 0d |
| 719 | 1.4.13.16 | Centro de carga muros PB | 4d | 2026-09-29 | 2026-10-03 | 701FS+3d, 702FS+3d | 2026-09-29 | 2026-10-03 | 4d | 12d | 2d |
| 720 | 1.4.13.17 | Firme de concreto 8 cm | 4d | 2026-10-01 | 2026-10-06 | 715, 718, 722 | 2026-10-01 | 2026-10-06 | 4d | 63d | 0d |
| 721 | 1.4.13.18 | Curado de concreto | 1d | 2026-10-06 | 2026-10-07 | 720 | 2026-10-06 | 2026-10-07 | 1d | 63d | 17d |
| 722 | 1.4.13.19 | Cisterna 2800 L con instalación | 18d | 2026-09-01 | 2026-09-24 | 691, 698, 699 | 2026-09-01 | 2026-09-24 | 18d | 69d | 0d |
| 723 | 1.4.13.20 | Banqueta y huellas de concreto | 8d | 2026-10-08 | 2026-10-19 | 715, 718, 765, 833FS-2d, 842, 834 | 2026-10-08 | 2026-10-19 | 8d | 46d | 0d |
| 724 | 1.4.13.21 | Curado de concreto | 1d | 2026-10-19 | 2026-10-20 | 723 | 2026-10-19 | 2026-10-20 | 1d | 46d | 0d |
| 725 | 1.4.13.22 | Número oficial | 1d | 2026-11-18 | 2026-11-19 | 733, 734 | 2026-11-18 | 2026-11-19 | 1d | 46d |  |
| 726 | 1.4.13.23 | Detallado de rodapié exterior | 4d | 2026-10-03 | 2026-10-08 | 731 | 2026-10-03 | 2026-10-08 | 4d | 78d |  |
| 727 | 1.4.13.24 | Detalle de losas y volados acabado fino | 4d | 2026-09-25 | 2026-09-30 | 701, 702 | 2026-09-25 | 2026-09-30 | 4d | 14d | 4d |
| 728 | 1.4.13.25 | Detalle fino en muros interiores | 5d | 2026-09-28 | 2026-10-03 | 705, 706, 707, 708, 709, 710 | 2026-09-28 | 2026-10-03 | 5d | 11d | 1d |
| 729 | 1.4.13.26 | Jardín interior bajo escalera con pozo de absorción | 12d | 2026-09-25 | 2026-10-09 | 708FS-2d, 709FS-2d, 710FS-2d | 2026-09-25 | 2026-10-09 | 12d | 14d | 0d |

| ID | WBS | Task | Duration | Start | Finish | Predecessors | Baseline start | Baseline finish | Baseline duration | Total slack | Free slack |
| --- | --- | --- | --- | --- | --- | --- | --- | --- | --- | --- | --- |
| 730 | 1.4.14 | **ACABADOS EN FACHADA A** | 47d | 2026-09-18 | 2026-11-18 |  | 2026-09-18 | 2026-11-18 | 47d | 46d |  |
| 731 | 1.4.14.1 | Aplanado grueso fachada | 12d | 2026-09-18 | 2026-10-03 | 695 | 2026-09-18 | 2026-10-03 | 12d | 52d | 0d |
| 732 | 1.4.14.2 | Aplanado fino estuco fachada | 10d | 2026-09-28 | 2026-10-09 | 731SS+7d | 2026-09-28 | 2026-10-09 | 10d | 52d | 0d |
| 733 | 1.4.14.3 | Pintura acrílica 1-0102P | 8d | 2026-11-04 | 2026-11-13 | 721FS+5d, 724FS+12d, 735, 738 | 2026-11-04 | 2026-11-13 | 8d | 48d | 2d |
| 734 | 1.4.14.4 | Pintura acrílica 1-1404D | 10d | 2026-11-04 | 2026-11-18 | 721FS+5d, 724FS+12d, 735, 738 | 2026-11-04 | 2026-11-18 | 10d | 46d | 0d |
| 735 | 1.4.14.5 | Cantera 40x60cm | 14d | 2026-10-09 | 2026-10-27 | 731, 732 | 2026-10-09 | 2026-10-27 | 14d | 52d | 6d |
| 736 | 1.4.14.6 | Lambrin de permabase 1 cara | 3d | 2026-10-03 | 2026-10-07 | 731 | 2026-10-03 | 2026-10-07 | 3d | 59d | 0d |
| 737 | 1.4.14.7 | Enchapado de Permabase | 4d | 2026-10-07 | 2026-10-13 | 736 | 2026-10-07 | 2026-10-13 | 4d | 59d | 0d |
| 738 | 1.4.14.8 | Cubierta de Permabase | 5d | 2026-10-13 | 2026-10-19 | 737 | 2026-10-13 | 2026-10-19 | 5d | 59d | 13d |
| 739 | 1.4.15 | **APLANADOS Y PINTURA** | 63d | 2026-09-25 | 2026-12-14 |  | 2026-09-25 | 2026-12-14 | 63d | 12d |  |
| 740 | 1.4.15.1 | Yeso pulido en muros | 14d | 2026-10-05 | 2026-10-22 | 705, 706, 719FS-1d, 727, 728, 729FS-8d, 745FS-4d, 811FS-2d, 814, 815, 816, 817, 818FS-1d, 819FS-1d, 820FS-1d, 821FS-1d, 822FS-2d, 823FS-2d, 824FS-3d, 827FS-1d, 828FS-5d, 829FS-5d, 830FS-6d, 831FS-2d, 832FS-7d, 741 | 2026-10-05 | 2026-10-22 | 14d | 10d | 0d |
| 741 | 1.4.15.2 | Aplanado en muros enjarre grueso | 5d | 2026-09-25 | 2026-10-01 | 701, 702 | 2026-09-25 | 2026-10-01 | 5d | 13d | 3d |
| 742 | 1.4.15.3 | Pintura vinílica OR-W13 SHOELACE | 13d | 2026-11-27 | 2026-12-14 | 749FS-2d, 750FS-2d, 763FS-2d, 770, 771, 772, 773, 774, 775, 781, 782, 783, 784, 845, 846, 848, 849, 778, 779, 776, 777, 785 | 2026-11-27 | 2026-12-14 | 13d | 10d | 0d |
| 743 | 1.4.15.4 | Pintura vinílica PPUI5-13 Creamy M. | 10d | 2026-11-21 | 2026-12-03 | 749, 750, 763, 793, 794, 789, 787 | 2026-11-21 | 2026-12-03 | 10d | 18d | 8d |
| 744 | 1.4.15.5 | Pintura vinílica MD-06 Nano White | 8d | 2026-11-21 | 2026-12-01 | 749, 750, 763, 793, 794, 789, 787 | 2026-11-21 | 2026-12-01 | 8d | 20d | 10d |
| 745 | 1.4.15.6 | Yeso pulido en plafones | 10d | 2026-09-25 | 2026-10-07 | 701, 702 | 2026-09-25 | 2026-10-07 | 10d | 12d | 2d |
| 746 | 1.4.15.7 | Perfilado de puertas y ventanas | 4d | 2026-10-09 | 2026-10-15 | 740SS+4d | 2026-10-09 | 2026-10-15 | 4d | 73d |  |
| 747 | 1.4.16 | **PISOS Y AZULEJOS** | 24d | 2026-10-16 | 2026-11-17 |  | 2026-10-16 | 2026-11-17 | 24d | 10d |  |
| 748 | 1.4.16.1 | **AREA SOCIAL** | 15d | 2026-10-20 | 2026-11-07 |  | 2026-10-20 | 2026-11-07 | 15d | 10d |  |
| 749 | 1.4.16.1.1 | Piso Adhara 44X89 | 14d | 2026-10-20 | 2026-11-06 | 740FS-2d, 836, 835, 752FS-5d | 2026-10-20 | 2026-11-06 | 14d | 10d | 0d |
| 750 | 1.4.16.1.2 | Zoclo Adhara 44X89 | 5d | 2026-11-02 | 2026-11-07 | 749FS-4d | 2026-11-02 | 2026-11-07 | 5d | 27d | 10d |
| 751 | 1.4.16.2 | **RECAMARAS** | 8d | 2026-10-16 | 2026-10-26 |  | 2026-10-16 | 2026-10-26 | 8d | 10d |  |
| 752 | 1.4.16.2.1 | Acabado aparente de pisos - pulido | 8d | 2026-10-16 | 2026-10-26 | 740FS-5d | 2026-10-16 | 2026-10-26 | 8d | 10d | 0d |
| 753 | 1.4.16.3 | **BAÑOS** | 17d | 2026-10-17 | 2026-11-07 |  | 2026-10-17 | 2026-11-07 | 17d | 21d |  |
| 754 | 1.4.16.3.1 | Azulejo Mod. Ornamenta 60x30 | 5d | 2026-10-27 | 2026-11-02 | 755FS-1d, 825, 826, 836 | 2026-10-27 | 2026-11-02 | 5d | 21d | 0d |
| 755 | 1.4.16.3.2 | Impermeabilización en regadera | 2d | 2026-10-26 | 2026-10-27 | 740, 759 | 2026-10-26 | 2026-10-27 | 2d | 21d | 0d |
| 756 | 1.4.16.3.3 | Piso Mod. Valparaiso 20x20 | 4d | 2026-11-02 | 2026-11-06 | 754 | 2026-11-02 | 2026-11-06 | 4d | 21d | 0d |
| 757 | 1.4.16.3.4 | Zoclo Adhara 44X89 | 2d | 2026-11-05 | 2026-11-07 | 756FS-1d | 2026-11-05 | 2026-11-07 | 2d | 54d |  |
| 758 | 1.4.16.3.5 | Piso Adhara 44X89 | 3d | 2026-11-02 | 2026-11-05 | 754 | 2026-11-02 | 2026-11-05 | 3d | 56d |  |
| 759 | 1.4.16.3.6 | Fabricacion de nicho decorativo en baños | 6d | 2026-10-17 | 2026-10-24 | 740FS-4d | 2026-10-17 | 2026-10-24 | 6d | 21d | 0d |
| 760 | 1.4.16.3.7 | Sardinel en regadera | 4d | 2026-11-02 | 2026-11-06 | 754 | 2026-11-02 | 2026-11-06 | 4d | 55d |  |

| ID | WBS | Task | Duration | Start | Finish | Predecessors | Baseline start | Baseline finish | Baseline duration | Total slack | Free slack |
| --- | --- | --- | --- | --- | --- | --- | --- | --- | --- | --- | --- |
| 761 | 1.4.16.4 | **ESCALERA** | 9d | 2026-11-04 | 2026-11-17 |  | 2026-11-04 | 2026-11-17 | 9d | 10d |  |
| 762 | 1.4.16.4.1 | Piso Adhara 44X89 | 7d | 2026-11-04 | 2026-11-12 | 628, 740, 749FS-2d | 2026-11-04 | 2026-11-12 | 7d | 10d | 0d |
| 763 | 1.4.16.4.2 | Zoclo Adhara 44X89 | 4d | 2026-11-10 | 2026-11-17 | 762FS-2d | 2026-11-10 | 2026-11-17 | 4d | 10d | 0d |
| 764 | 1.4.17 | **EXTERIOR** | 3d | 2026-10-01 | 2026-10-05 |  | 2026-10-01 | 2026-10-05 | 3d | 15d |  |
| 765 | 1.4.17.1 | Rastrilleo, afine y nivelado de tierra | 3d | 2026-10-01 | 2026-10-05 | 715, 718 | 2026-10-01 | 2026-10-05 | 3d | 15d | 0d |
| 766 | 1.4.18 | **SEGUNDA LIMPIEZA DE OBRA** | 4d | 2026-11-17 | 2026-11-21 |  | 2026-11-17 | 2026-11-21 | 4d | 33d |  |
| 767 | 1.4.18.1 | Segunda limpieza de obra | 2d | 2026-11-17 | 2026-11-19 | 762, 763 | 2026-11-17 | 2026-11-19 | 2d | 33d | 0d |
| 768 | 1.4.18.2 | Segunda carga y acarreo de escombro | 2d | 2026-11-19 | 2026-11-21 | 767 | 2026-11-19 | 2026-11-21 | 2d | 33d | 23d |
| 769 | 1.4.19 | **CANCELERIA PUERTAS Y VENTANAS DE ALUMINIO** | 17d | 2026-11-04 | 2026-11-26 |  | 2026-11-04 | 2026-11-26 | 17d | 11d |  |
| 770 | 1.4.19.1 | Fijo medidas 0.30x4.90m | 7d | 2026-11-06 | 2026-11-17 | 740, 749 | 2026-11-06 | 2026-11-17 | 7d | 19d | 9d |
| 771 | 1.4.19.2 | Ventana Corrediza 1.80x1.60m | 4d | 2026-11-04 | 2026-11-09 | 740FS+10d | 2026-11-04 | 2026-11-09 | 4d | 24d | 14d |
| 772 | 1.4.19.3 | Ventana Corrediza 0.60x0.40m | 4d | 2026-11-06 | 2026-11-11 | 740FS+12d | 2026-11-06 | 2026-11-11 | 4d | 22d | 12d |
| 773 | 1.4.19.4 | Ventana Corrediza 1.54x0.50m | 4d | 2026-11-06 | 2026-11-11 | 740FS+12d | 2026-11-06 | 2026-11-11 | 4d | 22d | 12d |
| 774 | 1.4.19.5 | Fijo medidas 1.40x2.50m | 4d | 2026-11-10 | 2026-11-17 | 740FS+10d, 749FS+3d | 2026-11-10 | 2026-11-17 | 4d | 13d | 0d |
| 775 | 1.4.19.6 | Ventana Corrediza 1.80x1.50m | 4d | 2026-11-12 | 2026-11-19 | 740FS+7d, 749FS+2d, 762 | 2026-11-12 | 2026-11-19 | 4d | 11d | 0d |
| 776 | 1.4.19.7 | Ventana Corrediza 1.40x1.60m | 4d | 2026-11-12 | 2026-11-19 | 740, 749, 762 | 2026-11-12 | 2026-11-19 | 4d | 11d | 0d |
| 777 | 1.4.19.8 | Ventana Corrediza 0.95x0.40m | 4d | 2026-11-12 | 2026-11-19 | 740, 749, 762 | 2026-11-12 | 2026-11-19 | 4d | 11d | 0d |
| 778 | 1.4.19.9 | Puerta corrediza 3.85x2.10m | 6d | 2026-11-17 | 2026-11-24 | 774 | 2026-11-17 | 2026-11-24 | 6d | 13d | 3d |
| 779 | 1.4.19.10 | Barandal de Cristal Templado | 6d | 2026-11-19 | 2026-11-26 | 775, 776, 777 | 2026-11-19 | 2026-11-26 | 6d | 11d | 1d |
| 780 | 1.4.20 | **CARPINTERIA, PUERTAS EXTERIORES E INTERIORES** | 9d | 2026-11-17 | 2026-11-27 |  | 2026-11-17 | 2026-11-27 | 9d | 10d |  |
| 781 | 1.4.20.1 | Puerta P-01 de seguridad | 5d | 2026-11-17 | 2026-11-23 | 763 | 2026-11-17 | 2026-11-23 | 5d | 14d | 4d |
| 782 | 1.4.20.2 | Puerta P-01 interior | 8d | 2026-11-17 | 2026-11-26 | 763 | 2026-11-17 | 2026-11-26 | 8d | 11d | 1d |
| 783 | 1.4.20.3 | Puerta P-02 interior | 8d | 2026-11-17 | 2026-11-26 | 763 | 2026-11-17 | 2026-11-26 | 8d | 11d | 1d |
| 784 | 1.4.20.4 | Puerta P-03 interior | 4d | 2026-11-23 | 2026-11-27 | 763FS+5d | 2026-11-23 | 2026-11-27 | 4d | 10d | 0d |
| 785 | 1.4.20.5 | Puerta P-04 interior | 4d | 2026-11-23 | 2026-11-27 | 763FS+5d | 2026-11-23 | 2026-11-27 | 4d | 10d | 0d |

| ID | WBS | Task | Duration | Start | Finish | Predecessors | Baseline start | Baseline finish | Baseline duration | Total slack | Free slack |
| --- | --- | --- | --- | --- | --- | --- | --- | --- | --- | --- | --- |
| 786 | 1.4.21 | **VOLADOS, BARANDAL Y ESCALERA** | 33d | 2026-10-09 | 2026-11-21 |  | 2026-10-09 | 2026-11-21 | 33d | 18d |  |
| 787 | 1.4.21.1 | Barandal de Herreria en escalera | 4d | 2026-10-28 | 2026-11-02 | 788FS-4d | 2026-10-28 | 2026-11-02 | 4d | 33d | 15d |
| 788 | 1.4.21.2 | Escalera de herreria | 18d | 2026-10-09 | 2026-11-02 | 729 | 2026-10-09 | 2026-11-02 | 18d | 18d | 0d |
| 789 | 1.4.21.3 | Techumbre en acceso Principal | 14d | 2026-10-27 | 2026-11-12 | 788FS-5d | 2026-10-27 | 2026-11-12 | 14d | 24d | 6d |
| 790 | 1.4.21.4 | Techumbre en 1.80x0.50m | 7d | 2026-10-27 | 2026-11-04 | 788FS-5d | 2026-10-27 | 2026-11-04 | 7d | 18d | 0d |
| 791 | 1.4.21.5 | Techumbre en 1.40x0.50m | 7d | 2026-11-04 | 2026-11-12 | 790 | 2026-11-04 | 2026-11-12 | 7d | 18d | 0d |
| 792 | 1.4.21.6 | Imper con manto prefabricado | 5d | 2026-11-07 | 2026-11-13 | 790, 791FS-4d | 2026-11-07 | 2026-11-13 | 5d | 18d | 0d |
| 793 | 1.4.21.7 | Plafon hoja tablaroca std | 5d | 2026-11-13 | 2026-11-21 | 792 | 2026-11-13 | 2026-11-21 | 5d | 18d | 0d |
| 794 | 1.4.21.8 | Acabado Woodstock en parte inf. Cubierta | 5d | 2026-11-13 | 2026-11-21 | 792 | 2026-11-13 | 2026-11-21 | 5d | 18d | 0d |
| 795 | 1.4.22 | **INSTALACION ELECTRICA** | 16d | 2026-10-17 | 2026-11-06 |  | 2026-10-17 | 2026-11-06 | 16d | 39d |  |
| 796 | 1.4.22.1 | Alimentación eléctrica base a centro de carga | 5d | 2026-10-22 | 2026-10-28 | 719, 740 | 2026-10-22 | 2026-10-28 | 5d | 43d | 0d |
| 797 | 1.4.22.2 | Interruptor termomagnético 1x20 A | 1d | 2026-10-29 | 2026-10-29 | 796 | 2026-10-29 | 2026-10-29 | 1d | 43d | 4d |
| 798 | 1.4.22.3 | Interruptor termomagnético 2x20 A | 1d | 2026-10-29 | 2026-10-29 | 796 | 2026-10-29 | 2026-10-29 | 1d | 43d | 4d |
| 799 | 1.4.22.4 | Salida para apagador 3 vías | 4d | 2026-10-17 | 2026-10-22 | 701, 740FS-4d | 2026-10-17 | 2026-10-22 | 4d | 39d | 0d |
| 800 | 1.4.22.5 | Salida para apagador doble | 3d | 2026-10-22 | 2026-10-26 | 799 | 2026-10-22 | 2026-10-26 | 3d | 41d | 0d |
| 801 | 1.4.22.6 | Salida para apagador sencillo | 3d | 2026-10-22 | 2026-10-26 | 799 | 2026-10-22 | 2026-10-26 | 3d | 41d | 0d |
| 802 | 1.4.22.7 | Salida de alumbrado en losa | 5d | 2026-10-22 | 2026-10-28 | 799 | 2026-10-22 | 2026-10-28 | 5d | 39d | 0d |
| 803 | 1.4.22.8 | Salida para contacto exterior doble | 2d | 2026-10-22 | 2026-10-24 | 799 | 2026-10-22 | 2026-10-24 | 2d | 42d | 3d |
| 804 | 1.4.22.9 | Salida para contacto 220 V | 3d | 2026-10-26 | 2026-10-28 | 799FS+2d | 2026-10-26 | 2026-10-28 | 3d | 39d | 0d |
| 805 | 1.4.22.10 | Salida para contacto doble | 5d | 2026-10-26 | 2026-10-30 | 799FS+2d | 2026-10-26 | 2026-10-30 | 5d | 42d | 3d |
| 806 | 1.4.22.11 | Salida para contacto doble área húmeda | 2d | 2026-10-29 | 2026-10-30 | 803, 804 | 2026-10-29 | 2026-10-30 | 2d | 42d | 3d |
| 807 | 1.4.22.12 | Salida TV / telefonía / intercom | 4d | 2026-10-29 | 2026-11-03 | 803, 804 | 2026-10-29 | 2026-11-03 | 4d | 40d | 1d |
| 808 | 1.4.22.13 | Extractor 4 baño | 5d | 2026-10-29 | 2026-11-04 | 803, 804 | 2026-10-29 | 2026-11-04 | 5d | 39d | 0d |
| 809 | 1.4.22.14 | Prueba eléctrica | 2d | 2026-11-04 | 2026-11-06 | 796, 797, 798, 799, 800, 801, 802, 803, 804, 805, 806, 807, 808, 862, 863, 869, 864, 865, 867, 868, 871, 873 | 2026-11-04 | 2026-11-06 | 2d | 39d | 29d |

| ID | WBS | Task | Duration | Start | Finish | Predecessors | Baseline start | Baseline finish | Baseline duration | Total slack | Free slack |
| --- | --- | --- | --- | --- | --- | --- | --- | --- | --- | --- | --- |
| 810 | 1.4.23 | **INSTALACIÓN HIDRO-SANITARIA** | 11d | 2026-10-01 | 2026-10-15 |  | 2026-10-01 | 2026-10-15 | 11d | 10d |  |
| 811 | 1.4.23.1 | Tubería condensados PVC 1 | 5d | 2026-10-01 | 2026-10-07 | 715 | 2026-10-01 | 2026-10-07 | 5d | 10d | 0d |
| 812 | 1.4.23.2 | Tubería sanitaria PVC 4 | 5d | 2026-10-01 | 2026-10-07 | 718 | 2026-10-01 | 2026-10-07 | 5d | 18d | 0d |
| 813 | 1.4.23.3 | Coladera H-444 | 1d | 2026-10-07 | 2026-10-08 | 812 | 2026-10-07 | 2026-10-08 | 1d | 18d | 4d |
| 814 | 1.4.23.4 | Caja PVC para lavadora | 3d | 2026-10-01 | 2026-10-05 | 715 | 2026-10-01 | 2026-10-05 | 3d | 10d | 0d |
| 815 | 1.4.23.5 | Salida para secadora PVC 4 | 3d | 2026-10-01 | 2026-10-05 | 718 | 2026-10-01 | 2026-10-05 | 3d | 10d | 0d |
| 816 | 1.4.23.6 | Salida hidráulica para boiler | 2d | 2026-10-01 | 2026-10-03 | 715 | 2026-10-01 | 2026-10-03 | 2d | 11d | 1d |
| 817 | 1.4.23.7 | Salida hidráulica para llave de jardín | 3d | 2026-10-01 | 2026-10-05 | 715 | 2026-10-01 | 2026-10-05 | 3d | 10d | 0d |
| 818 | 1.4.23.8 | Salida hidráulica para lavabo | 4d | 2026-10-01 | 2026-10-06 | 715 | 2026-10-01 | 2026-10-06 | 4d | 10d | 0d |
| 819 | 1.4.23.9 | Salida hidráulica para purificación | 4d | 2026-10-01 | 2026-10-06 | 715 | 2026-10-01 | 2026-10-06 | 4d | 10d | 0d |
| 820 | 1.4.23.10 | Salida sanitaria para lavabo | 2d | 2026-10-03 | 2026-10-06 | 715FS+2d | 2026-10-03 | 2026-10-06 | 2d | 10d | 0d |
| 821 | 1.4.23.11 | Salida hidráulica para lavadero | 2d | 2026-10-03 | 2026-10-06 | 715FS+2d | 2026-10-03 | 2026-10-06 | 2d | 10d | 0d |
| 822 | 1.4.23.12 | Salida sanitaria para lavadero | 2d | 2026-10-05 | 2026-10-07 | 715FS+3d | 2026-10-05 | 2026-10-07 | 2d | 10d | 0d |
| 823 | 1.4.23.13 | Salida hidráulica para lavadora | 2d | 2026-10-05 | 2026-10-07 | 715FS+3d | 2026-10-05 | 2026-10-07 | 2d | 10d | 0d |
| 824 | 1.4.23.14 | Salida sanitaria para lavadora | 2d | 2026-10-06 | 2026-10-08 | 718FS+4d | 2026-10-06 | 2026-10-08 | 2d | 10d | 0d |
| 825 | 1.4.23.15 | Salida hidráulica para regadera | 5d | 2026-10-06 | 2026-10-13 | 715FS+4d | 2026-10-06 | 2026-10-13 | 5d | 15d | 0d |
| 826 | 1.4.23.16 | Salida sanitaria para regadera | 4d | 2026-10-06 | 2026-10-12 | 718FS+4d | 2026-10-06 | 2026-10-12 | 4d | 16d | 2d |
| 827 | 1.4.23.17 | Salida hidráulica para WC | 2d | 2026-10-03 | 2026-10-06 | 718FS+2d | 2026-10-03 | 2026-10-06 | 2d | 10d | 0d |
| 828 | 1.4.23.18 | Salida sanitaria para WC | 4d | 2026-10-06 | 2026-10-12 | 718FS+4d | 2026-10-06 | 2026-10-12 | 4d | 10d | 0d |
| 829 | 1.4.23.19 | Salida hidráulica para zinc | 4d | 2026-10-06 | 2026-10-12 | 718FS+4d | 2026-10-06 | 2026-10-12 | 4d | 10d | 0d |
| 830 | 1.4.23.20 | Salida sanitaria para zinc | 3d | 2026-10-08 | 2026-10-13 | 718FS+6d | 2026-10-08 | 2026-10-13 | 3d | 10d | 0d |
| 831 | 1.4.23.21 | Tubo para ventila de baño 2 | 5d | 2026-10-01 | 2026-10-07 | 811SS | 2026-10-01 | 2026-10-07 | 5d | 10d | 0d |
| 832 | 1.4.23.22 | Tubo para minisplit PVC 3 | 5d | 2026-10-07 | 2026-10-14 | 831 | 2026-10-07 | 2026-10-14 | 5d | 10d | 0d |
| 833 | 1.4.23.23 | Cuadro de medición | 5d | 2026-10-05 | 2026-10-12 | 765 | 2026-10-05 | 2026-10-12 | 5d | 15d | 0d |
| 834 | 1.4.23.24 | Pozo de absorción 0.50x0.50x0.50 | 3d | 2026-10-05 | 2026-10-08 | 765 | 2026-10-05 | 2026-10-08 | 3d | 18d | 0d |
| 835 | 1.4.23.25 | Prueba sanitaria final | 1d | 2026-10-14 | 2026-10-15 | 811, 812, 813, 815, 820, 822, 824, 826, 828, 831, 832 | 2026-10-14 | 2026-10-15 | 1d | 14d | 4d |
| 836 | 1.4.23.26 | Prueba hidrostática final | 1d | 2026-10-13 | 2026-10-14 | 816, 817, 818, 819, 821, 823, 825, 827, 829, 833, 834, 839, 840, 838, 837 | 2026-10-13 | 2026-10-14 | 1d | 15d | 5d |
| 837 | 1.4.23.27 | Salida válvula control 19 mm | 1d | 2026-10-12 | 2026-10-13 | 833 | 2026-10-12 | 2026-10-13 | 1d | 15d | 0d |
| 838 | 1.4.23.28 | Salida válvula control 13 mm | 1d | 2026-10-12 | 2026-10-13 | 833 | 2026-10-12 | 2026-10-13 | 1d | 15d | 0d |
| 839 | 1.4.23.29 | Salida hidráulica para tanque hidroneumático | 3d | 2026-10-05 | 2026-10-08 | 765 | 2026-10-05 | 2026-10-08 | 3d | 18d | 3d |
| 840 | 1.4.23.30 | Salida hidráulica para Active Driver | 3d | 2026-10-05 | 2026-10-08 | 765 | 2026-10-05 | 2026-10-08 | 3d | 18d | 3d |

| ID | WBS | Task | Duration | Start | Finish | Predecessors | Baseline start | Baseline finish | Baseline duration | Total slack | Free slack |
| --- | --- | --- | --- | --- | --- | --- | --- | --- | --- | --- | --- |
| 841 | 1.4.24 | **INSTALACION DE GAS** | 8d | 2026-09-29 | 2026-10-08 |  | 2026-09-29 | 2026-10-08 | 8d | 46d |  |
| 842 | 1.4.24.1 | Ramaleo para gas 1/2 | 5d | 2026-10-02 | 2026-10-08 | 765FS-2d, 843 | 2026-10-02 | 2026-10-08 | 5d | 46d | 0d |
| 843 | 1.4.24.2 | Excavación a mano material tipo B | 3d | 2026-09-29 | 2026-10-02 | 765FF-2d | 2026-09-29 | 2026-10-02 | 3d | 46d | 0d |
| 844 | 1.4.25 | **MUEBLES SANITARIOS** | 29d | 2026-11-06 | 2026-12-14 |  | 2026-11-06 | 2026-12-14 | 29d | 22d |  |
| 845 | 1.4.25.1 | WC completo Austral | 2d | 2026-11-06 | 2026-11-09 | 749, 756, 835, 836 | 2026-11-06 | 2026-11-09 | 2d | 24d | 14d |
| 846 | 1.4.25.2 | Lavabo Senna con pedestal | 4d | 2026-11-06 | 2026-11-11 | 749, 754, 756, 835, 836 | 2026-11-06 | 2026-11-11 | 4d | 22d | 12d |
| 847 | 1.4.25.3 | Tarja / lavabo combo Guinea 80x45 | 2d | 2026-11-06 | 2026-11-09 | 593, 749, 754, 756, 836 | 2026-11-06 | 2026-11-09 | 2d | 53d |  |
| 848 | 1.4.25.4 | Regadera con monomando | 3d | 2026-11-09 | 2026-11-12 | 749, 754FS+2d, 756FS+2d, 835, 836 | 2026-11-09 | 2026-11-12 | 3d | 21d | 11d |
| 849 | 1.4.25.5 | Coladera inserto cerámico | 2d | 2026-11-10 | 2026-11-12 | 754, 756FS+3d, 836 | 2026-11-10 | 2026-11-12 | 2d | 21d | 11d |
| 850 | 1.4.25.6 | Toallero sencillo | 1d | 2026-12-12 | 2026-12-14 | 742FS-1d | 2026-12-12 | 2026-12-14 | 1d | 10d | 0d |
| 851 | 1.4.25.7 | Toallero barra | 1d | 2026-12-12 | 2026-12-14 | 742FS-1d | 2026-12-12 | 2026-12-14 | 1d | 10d | 0d |
| 852 | 1.4.25.8 | Portapapel | 1d | 2026-12-12 | 2026-12-14 | 742FS-1d | 2026-12-12 | 2026-12-14 | 1d | 10d | 0d |
| 853 | 1.4.25.9 | Gancho baño | 1d | 2026-12-12 | 2026-12-14 | 742FS-1d | 2026-12-12 | 2026-12-14 | 1d | 10d | 0d |
| 854 | 1.4.26 | **EQUIPAMIENTO** | 6d | 2026-09-23 | 2026-09-30 |  | 2026-09-23 | 2026-09-30 | 6d | 69d |  |
| 855 | 1.4.26.1 | Electronivel Rotoplas 5 m | 2d | 2026-09-24 | 2026-09-26 | 860 | 2026-09-24 | 2026-09-26 | 2d | 72d | 62d |
| 856 | 1.4.26.2 | Manómetro | 1d | 2026-09-24 | 2026-09-25 | 860 | 2026-09-24 | 2026-09-25 | 1d | 73d | 63d |
| 857 | 1.4.26.3 | Interruptor de presión 30-50 PSI | 1d | 2026-09-24 | 2026-09-25 | 860 | 2026-09-24 | 2026-09-25 | 1d | 73d | 63d |
| 858 | 1.4.26.4 | Tanque hidroneumático FPS-24LX | 3d | 2026-09-24 | 2026-09-28 | 860 | 2026-09-24 | 2026-09-28 | 3d | 69d | 0d |
| 859 | 1.4.26.5 | Bomba sumergible Dominator 1.2 HP | 2d | 2026-09-28 | 2026-09-30 | 858 | 2026-09-28 | 2026-09-30 | 2d | 69d | 59d |
| 860 | 1.4.26.6 | Cisterna prefabricada 2800 L | 1d | 2026-09-23 | 2026-09-24 | 722FF | 2026-09-23 | 2026-09-24 | 1d | 69d | 0d |
| 861 | 1.4.27 | **LUMINARIAS** | 5d | 2026-10-29 | 2026-11-04 |  | 2026-10-29 | 2026-11-04 | 5d | 39d |  |
| 862 | 1.4.27.1 | Roseta cerámica | 3d | 2026-10-29 | 2026-11-02 | 802 | 2026-10-29 | 2026-11-02 | 3d | 41d | 2d |
| 863 | 1.4.27.2 | Luminaria lagartijera LED | 3d | 2026-10-29 | 2026-11-02 | 802 | 2026-10-29 | 2026-11-02 | 3d | 41d | 2d |
| 864 | 1.4.27.3 | Spot 6W Tecnolite | 3d | 2026-10-29 | 2026-11-02 | 802 | 2026-10-29 | 2026-11-02 | 3d | 41d | 2d |
| 865 | 1.4.27.4 | Spot 7W Tecnolite | 3d | 2026-10-29 | 2026-11-02 | 802 | 2026-10-29 | 2026-11-02 | 3d | 41d | 2d |
| 866 | 1.4.27.5 | Arbotante exterior | 2d | 2026-10-29 | 2026-10-30 | 802 | 2026-10-29 | 2026-10-30 | 2d | 39d | 0d |
| 867 | 1.4.27.6 | Estaca LED exterior | 3d | 2026-10-31 | 2026-11-04 | 866 | 2026-10-31 | 2026-11-04 | 3d | 39d | 0d |
| 868 | 1.4.27.7 | Tira LED | 3d | 2026-10-31 | 2026-11-04 | 866 | 2026-10-31 | 2026-11-04 | 3d | 39d | 0d |
| 869 | 1.4.27.8 | Spot exterior 50W | 2d | 2026-10-29 | 2026-10-30 | 802 | 2026-10-29 | 2026-10-30 | 2d | 42d | 3d |

| ID | WBS | Task | Type | Duration | Start | Finish | Predecessors | Complete | Remaining | Baseline start | Baseline finish | Baseline duration | Total slack | Free slack |
| --- | --- | --- | --- | --- | --- | --- | --- | --- | --- | --- | --- | --- | --- | --- |
| 870 | 1.4.28 | **TIMBRE** |  | 2d | 2026-10-30 | 2026-11-02 |  |  |  | 2026-10-30 | 2026-11-02 | 2d | 41d |  |
| 871 | 1.4.28.1 | Timbre inalámbrico con bocina |  | 2d | 2026-10-30 | 2026-11-02 | 800FS+3d, 801FS+3d |  |  | 2026-10-30 | 2026-11-02 | 2d | 41d | 2d |
| 872 | 1.4.29 | **OBRA EXTERIOR - BARDA** |  | 18d | 2026-10-05 | 2026-10-27 |  |  |  | 2026-10-05 | 2026-10-27 | 18d | 47d |  |
| 873 | 1.4.29.1 | Murete convencional |  | 5d | 2026-10-12 | 2026-10-17 | 765FS+5d |  |  | 2026-10-12 | 2026-10-17 | 5d | 53d | 14d |
| 874 | 1.4.29.2 | Barda de block aparente |  | 18d | 2026-10-05 | 2026-10-27 | 765 |  |  | 2026-10-05 | 2026-10-27 | 18d | 47d | 37d |
| 875 | 1.4.30 | **TERCER LIMPIEZA DE OBRA** |  | 16d | 2026-12-14 | 2027-01-07 |  |  |  | 2026-12-14 | 2027-01-07 | 16d | 10d |  |
| 876 | 1.4.30.1 | Limpieza fina para entrega |  | 5d | 2026-12-14 | 2026-12-19 | 742, 743, 744, 775, 784, 785, 809, 835, 836, 850, 851, 852, 853, 855, 856, 857, 858, 859, 874 |  |  | 2026-12-14 | 2026-12-19 | 5d | 10d | 0d |
| 877 | 1.4.30.2 | Tercera limpieza de obra |  | 5d | 2026-12-21 | 2026-12-29 | 876, 768 |  |  | 2026-12-21 | 2026-12-29 | 5d | 10d | 0d |
| 878 | 1.4.30.3 | Tercera carga y acarreo de escombro |  | 6d | 2026-12-29 | 2027-01-07 | 877 |  |  | 2026-12-29 | 2027-01-07 | 6d | 10d | 0d |
| 879 | 1.5 | **LOTE 20 M-663 ARTICO-A** |  | 181d | 2026-05-29 A | 2027-01-18 |  | 1% | 178.94d | 2026-05-29 | 2027-01-18 | 181d | 2d |  |
| 880 | 1.5.1 | **HITOS IMPORTANTES DEL LOTE** |  | 181d | 2026-05-29 A | 2027-01-18 |  |  | 181d | 2026-05-29 | 2027-01-18 | 181d | 2d |  |
| 881 | 1.5.1.1 | Inicio del Lote-20 M-663 -Artico-A | milestone | 0d | 2026-05-29 A | 2026-05-29 A | 7 | 100% |  | 2026-05-29 | 2026-05-29 |  |  |  |
| 882 | 1.5.1.2 | Colado de Losa de Cimentación | milestone | 0d | 2026-06-19 | 2026-06-19 | 913 |  |  | 2026-06-19 | 2026-06-19 |  | 166d |  |
| 883 | 1.5.1.3 | Colado de Losa de Entrepiso | milestone | 0d | 2026-07-28 | 2026-07-28 | 949 |  |  | 2026-07-28 | 2026-07-28 |  | 136d |  |
| 884 | 1.5.1.4 | Colado de Losa de Azotea | milestone | 0d | 2026-09-02 | 2026-09-02 | 989 |  |  | 2026-09-02 | 2026-09-02 |  | 106d |  |
| 885 | 1.5.1.5 | Entrega de vivienda | milestone | 0d | 2027-01-18 | 2027-01-18 | 1181, 1182, 1183 |  |  | 2027-01-18 | 2027-01-18 |  | 2d |  |
| 886 | 1.5.2 | **TRABAJOS PRELIMINARES** |  | 2d | 2026-05-29 A | 2026-06-02 A |  | 100% |  | 2026-05-29 | 2026-06-02 | 2d |  |  |
| 887 | 1.5.2.1 | Trazo y nivelación |  | 2d | 2026-05-29 A | 2026-06-02 A | 881 | 100% |  | 2026-05-29 | 2026-06-02 | 2d |  |  |
| 888 | 1.5.3 | **EXCAVACIONES** |  | 3d | 2026-06-02 A | 2026-06-05 A |  | 100% |  | 2026-06-02 | 2026-06-05 | 3d |  |  |
| 889 | 1.5.3.1 | Excavación a mano material tipo B |  | 3d | 2026-06-02 A | 2026-06-05 A | 887 | 100% |  | 2026-06-02 | 2026-06-05 | 3d |  |  |
| 890 | 1.5.3.2 | Acarreo en carretilla 20 m |  | 2d | 2026-06-03 A | 2026-06-05 A | 889SS+1d | 100% |  | 2026-06-03 | 2026-06-05 | 2d |  |  |
| 891 | 1.5.4 | **CIMENTACION** |  | 13d | 2026-06-05 A | 2026-06-22 |  | 10% | 11.65d | 2026-06-05 | 2026-06-22 | 13d | 2d |  |
| 892 | 1.5.4.1 | Cimbra perimetral losa de cimentación |  | 3d | 2026-06-05 A | 2026-06-09 | 889, 890 | 83% | 0.5d | 2026-06-05 | 2026-06-09 | 3d | 2d | 0d |
| 893 | 1.5.4.2 | Sistema antitermitas PVC |  | 3d | 2026-06-05 A | 2026-06-09 | 889, 890 | 83% | 0.5d | 2026-06-05 | 2026-06-09 | 3d | 3d | 0d |
| 894 | 1.5.4.3 | Hule negro en cimentación |  | 1d | 2026-06-09 | 2026-06-10 | 893 |  |  | 2026-06-09 | 2026-06-10 | 1d | 3d | 0d |
| 895 | 1.5.4.4 | Ramaleo poliducto eléctrico cimentación |  | 2d | 2026-06-10 | 2026-06-12 | 894 |  |  | 2026-06-10 | 2026-06-12 | 2d | 6d | 0d |
| 896 | 1.5.4.5 | Ramaleo eléctrico base-medición a centro de carga |  | 1d | 2026-06-10 | 2026-06-11 | 894 |  |  | 2026-06-10 | 2026-06-11 | 1d | 7d | 1d |
| 897 | 1.5.4.6 | Ramaleo eléctrico exterior |  | 1d | 2026-06-12 | 2026-06-13 | 895, 896 |  |  | 2026-06-12 | 2026-06-13 | 1d | 6d | 4d |
| 898 | 1.5.4.7 | Ramaleo para cable poliducto 3/4 |  | 1d | 2026-06-12 | 2026-06-13 | 895, 896 |  |  | 2026-06-12 | 2026-06-13 | 1d | 6d | 4d |
| 899 | 1.5.4.8 | Ramaleo para TV poliducto 3/4 |  | 1d | 2026-06-12 | 2026-06-13 | 895, 896 |  |  | 2026-06-12 | 2026-06-13 | 1d | 6d | 4d |
| 900 | 1.5.4.9 | Ramaleo hidráulico CPVC 1-1/4" cimentación |  | 1d | 2026-06-10 | 2026-06-11 | 894 |  |  | 2026-06-10 | 2026-06-11 | 1d | 3d | 0d |
| 901 | 1.5.4.10 | Ramaleo hidráulico CPVC 1 cimentación |  | 1d | 2026-06-10 | 2026-06-11 | 894, 900SS |  |  | 2026-06-10 | 2026-06-11 | 1d | 3d | 0d |
| 902 | 1.5.4.11 | Ramaleo hidráulico CPVC 3/4 cimentación |  | 2d | 2026-06-11 | 2026-06-13 | 901 |  |  | 2026-06-11 | 2026-06-13 | 2d | 3d | 0d |
| 903 | 1.5.4.12 | Ramaleo hidráulico CPVC 1/2 cimentación |  | 2d | 2026-06-13 | 2026-06-16 | 902 |  |  | 2026-06-13 | 2026-06-16 | 2d | 3d | 0d |
| 904 | 1.5.4.13 | Prueba hidráulica |  | 1d | 2026-06-16 | 2026-06-17 | 900, 901, 902, 903 |  |  | 2026-06-16 | 2026-06-17 | 1d | 3d | 1d |
| 905 | 1.5.4.14 | Ramaleo sanitario PVC 4 cimentación |  | 2d | 2026-06-11 | 2026-06-13 | 894FS+1d |  |  | 2026-06-11 | 2026-06-13 | 2d | 4d | 0d |
| 906 | 1.5.4.15 | Ramaleo sanitario PVC 2 cimentación |  | 1d | 2026-06-13 | 2026-06-15 | 905 |  |  | 2026-06-13 | 2026-06-15 | 1d | 4d | 0d |
| 907 | 1.5.4.16 | Prueba sanitaria |  | 1d | 2026-06-15 | 2026-06-16 | 905, 906 |  |  | 2026-06-15 | 2026-06-16 | 1d | 4d | 2d |
| 908 | 1.5.4.17 | Acero contratrabe CT-1 |  | 4d | 2026-06-09 | 2026-06-13 | 892 |  |  | 2026-06-09 | 2026-06-13 | 4d | 2d | 0d |
| 909 | 1.5.4.18 | Acero contratrabe CT-2 |  | 4d | 2026-06-09 | 2026-06-13 | 892 |  |  | 2026-06-09 | 2026-06-13 | 4d | 2d | 0d |
| 910 | 1.5.4.19 | Malla electrosoldada 6-6/8-8 |  | 2d | 2026-06-16 | 2026-06-18 | 908, 909, 911, 912 |  |  | 2026-06-16 | 2026-06-18 | 2d | 2d | 0d |
| 911 | 1.5.4.20 | Bastón de refuerzo LS |  | 2d | 2026-06-13 | 2026-06-16 | 908, 909 |  |  | 2026-06-13 | 2026-06-16 | 2d | 2d | 0d |
| 912 | 1.5.4.21 | Bastón de refuerzo LI |  | 2d | 2026-06-13 | 2026-06-16 | 908, 909 |  |  | 2026-06-13 | 2026-06-16 | 2d | 2d | 0d |
| 913 | 1.5.4.22 | Colado losa de cimentación f’c=200 |  | 1d | 2026-06-18 | 2026-06-19 | 892, 894, 897, 898, 899, 904, 907, 908, 909, 910, 911, 912, 915, 916 |  |  | 2026-06-18 | 2026-06-19 | 1d | 2d | 0d |
| 914 | 1.5.4.23 | Curado de concreto |  | 1d | 2026-06-19 | 2026-06-22 | 913 |  |  | 2026-06-19 | 2026-06-22 | 1d | 2d | 0d |
| 915 | 1.5.4.24 | Acero zapata ZT-1 |  | 4d | 2026-06-13 | 2026-06-18 | 908, 909 |  |  | 2026-06-13 | 2026-06-18 | 4d | 2d | 0d |
| 916 | 1.5.4.25 | Acero zapata ZT-2 |  | 4d | 2026-06-13 | 2026-06-18 | 908, 909 |  |  | 2026-06-13 | 2026-06-18 | 4d | 2d | 0d |

| ID | WBS | Task | Duration | Start | Finish | Predecessors | Baseline start | Baseline finish | Baseline duration | Total slack | Free slack |
| --- | --- | --- | --- | --- | --- | --- | --- | --- | --- | --- | --- |
| 917 | 1.5.5 | **MUROS, PLANTA BAJA. CASTILLOS Y CERRAMIENTOS** | 20d | 2026-06-15 | 2026-07-09 |  | 2026-06-15 | 2026-07-09 | 20d | 7d |  |
| 918 | 1.5.5.1 | Anclaje de castillos y Columnas PB | 5d | 2026-06-15 | 2026-06-22 | 908FS+1d, 909FS+1d | 2026-06-15 | 2026-06-22 | 5d | 153d | 0d |
| 919 | 1.5.5.2 | Castillo K1 | 4d | 2026-06-22 | 2026-06-26 | 914, 918 | 2026-06-22 | 2026-06-26 | 4d | 153d | 0d |
| 920 | 1.5.5.3 | Castillo K3 | 3d | 2026-06-24 | 2026-06-27 | 919FS-2d | 2026-06-24 | 2026-06-27 | 3d | 153d | 0d |
| 921 | 1.5.5.4 | Castillo K4 | 3d | 2026-06-24 | 2026-06-27 | 919FS-2d | 2026-06-24 | 2026-06-27 | 3d | 153d | 0d |
| 922 | 1.5.5.5 | Castillo K5 | 3d | 2026-06-26 | 2026-06-30 | 920FS-1d, 921FS-1d | 2026-06-26 | 2026-06-30 | 3d | 153d | 0d |
| 923 | 1.5.5.6 | Refuerzo de muro K6 | 3d | 2026-06-27 | 2026-07-01 | 922FS-2d | 2026-06-27 | 2026-07-01 | 3d | 153d | 0d |
| 924 | 1.5.5.7 | Dala de cerramiento CR-1 | 4d | 2026-06-27 | 2026-07-02 | 919, 920 | 2026-06-27 | 2026-07-02 | 4d | 156d |  |
| 925 | 1.5.5.8 | Dala de cerramiento CR-2 | 3d | 2026-06-27 | 2026-07-01 | 919, 920 | 2026-06-27 | 2026-07-01 | 3d | 157d |  |
| 926 | 1.5.5.9 | Cadena block dala | 4d | 2026-07-01 | 2026-07-06 | 923 | 2026-07-01 | 2026-07-06 | 4d | 153d |  |
| 927 | 1.5.5.10 | Muro de ladrillo aparente | 15d | 2026-06-22 | 2026-07-09 | 914 | 2026-06-22 | 2026-07-09 | 15d | 2d | 0d |
| 928 | 1.5.5.11 | Muro de block planta baja | 13d | 2026-06-24 | 2026-07-09 | 914FS+2d | 2026-06-24 | 2026-07-09 | 13d | 2d | 0d |
| 929 | 1.5.5.12 | Ramaleo electrico en Muros Planta Baja | 4d | 2026-06-27 | 2026-07-02 | 927SS+5d | 2026-06-27 | 2026-07-02 | 4d | 5d | 0d |
| 930 | 1.5.5.13 | Ramaleo para cable poliducto 3/4 | 2d | 2026-07-02 | 2026-07-04 | 929 | 2026-07-02 | 2026-07-04 | 2d | 5d | 0d |
| 931 | 1.5.5.14 | Ramaleo para TV poliducto 3/4 | 3d | 2026-07-06 | 2026-07-08 | 930 | 2026-07-06 | 2026-07-08 | 3d | 5d | 2d |
| 932 | 1.5.6 | **ESCALERA** | 10d | 2026-07-28 | 2026-08-08 |  | 2026-07-28 | 2026-08-08 | 10d | 79d |  |
| 933 | 1.5.6.1 | Escalera de concreto armado | 10d | 2026-07-28 | 2026-08-08 | 949 | 2026-07-28 | 2026-08-08 | 10d | 79d | 77d |
| 934 | 1.5.7 | **LOSA DE ENTREPISO (viegueta y caseton)** | 17d | 2026-07-08 | 2026-07-29 |  | 2026-07-08 | 2026-07-29 | 17d | 5d |  |
| 935 | 1.5.7.1 | Dala de coronamiento 10cm | 3d | 2026-07-16 | 2026-07-20 | 951FS-1d, 937, 938, 939, 940, 941, 942 | 2026-07-16 | 2026-07-20 | 3d | 5d | 3d |
| 936 | 1.5.7.2 | Dala de coronamiento 12cm | 3d | 2026-07-17 | 2026-07-21 | 951, 937, 938, 939, 940, 941, 942 | 2026-07-17 | 2026-07-21 | 3d | 4d | 2d |
| 937 | 1.5.7.3 | Trabe TR-1 | 3d | 2026-07-08 | 2026-07-10 | 927FS-2d, 928FS-2d | 2026-07-08 | 2026-07-10 | 3d | 6d | 4d |
| 938 | 1.5.7.4 | Trabe TR-2 | 4d | 2026-07-09 | 2026-07-14 | 927FS-1d, 928FS-1d | 2026-07-09 | 2026-07-14 | 4d | 4d | 2d |
| 939 | 1.5.7.5 | Nervadura NR-1 | 4d | 2026-07-10 | 2026-07-15 | 927, 928 | 2026-07-10 | 2026-07-15 | 4d | 3d | 1d |
| 940 | 1.5.7.6 | Nervadura NR-2 | 4d | 2026-07-11 | 2026-07-16 | 927FS+1d, 928FS+1d | 2026-07-11 | 2026-07-16 | 4d | 2d | 0d |
| 941 | 1.5.7.7 | Nervadura NR-3 | 4d | 2026-07-11 | 2026-07-16 | 927FS+1d, 928FS+1d | 2026-07-11 | 2026-07-16 | 4d | 2d | 0d |
| 942 | 1.5.7.8 | Nervadura NR-4 | 4d | 2026-07-11 | 2026-07-16 | 927FS+1d, 928FS+1d | 2026-07-11 | 2026-07-16 | 4d | 2d | 0d |
| 943 | 1.5.7.9 | Acero de refuerzo en nervios #3 | 2d | 2026-07-16 | 2026-07-18 | 937, 938, 939, 940, 941, 942 | 2026-07-16 | 2026-07-18 | 2d | 2d | 0d |
| 944 | 1.5.7.10 | Acero de refuerzo long. #3 | 3d | 2026-07-17 | 2026-07-21 | 937, 938, 939, 940, 941, 942, 951 | 2026-07-17 | 2026-07-21 | 3d | 3d | 0d |
| 945 | 1.5.7.11 | Acero de refuerzo long. #4 | 3d | 2026-07-17 | 2026-07-21 | 944SS | 2026-07-17 | 2026-07-21 | 3d | 3d | 0d |
| 946 | 1.5.7.12 | Malla 66-10/10 losa de compresión | 2d | 2026-07-23 | 2026-07-27 | 935, 936, 943, 956, 959, 948 | 2026-07-23 | 2026-07-27 | 2d | 2d | 0d |
| 947 | 1.5.7.13 | Acero de Losa Maciza | 3d | 2026-07-16 | 2026-07-20 | 939, 940, 941, 942 | 2026-07-16 | 2026-07-20 | 3d | 7d | 5d |
| 948 | 1.5.7.14 | Caseton de 60x60x20cm | 2d | 2026-07-16 | 2026-07-18 | 939, 940, 941, 942 | 2026-07-16 | 2026-07-18 | 2d | 6d | 4d |
| 949 | 1.5.7.15 | Concreto losa de entrepiso f’c=200 | 1d | 2026-07-27 | 2026-07-28 | 944, 945, 946, 947, 956, 959, 952, 961 | 2026-07-27 | 2026-07-28 | 1d | 2d | 0d |
| 950 | 1.5.7.16 | Curado de concreto | 1d | 2026-07-28 | 2026-07-29 | 949 | 2026-07-28 | 2026-07-29 | 1d | 2d | 0d |
| 951 | 1.5.7.17 | Cimbra losa de azotea | 5d | 2026-07-11 | 2026-07-17 | 927FS+1d, 928FS+1d, 931 | 2026-07-11 | 2026-07-17 | 5d | 3d | 0d |
| 952 | 1.5.7.18 | Cimbra exterior corta losa | 3d | 2026-07-20 | 2026-07-23 | 944FS-1d, 945FS-1d | 2026-07-20 | 2026-07-23 | 3d | 4d | 2d |
| 953 | 1.5.7.19 | Ramaleo poliducto eléctrico entrepiso | 2d | 2026-07-18 | 2026-07-21 | 943 | 2026-07-18 | 2026-07-21 | 2d | 141d |  |
| 954 | 1.5.7.20 | Ramaleo hidráulico CPVC 3/4" | 2d | 2026-07-20 | 2026-07-22 | 943FS+1d | 2026-07-20 | 2026-07-22 | 2d | 2d | 0d |
| 955 | 1.5.7.21 | Ramaleo hidráulico CPVC 1/2" | 1d | 2026-07-22 | 2026-07-23 | 954 | 2026-07-22 | 2026-07-23 | 1d | 2d | 0d |
| 956 | 1.5.7.22 | Prueba hidráulica | 1d | 2026-07-22 | 2026-07-23 | 954, 955FS-1d | 2026-07-22 | 2026-07-23 | 1d | 2d | 0d |
| 957 | 1.5.7.23 | Ramaleo sanitario PVC 4" | 2d | 2026-07-20 | 2026-07-22 | 943FS+1d | 2026-07-20 | 2026-07-22 | 2d | 2d | 0d |
| 958 | 1.5.7.24 | Ramaleo sanitario PVC 2" | 1d | 2026-07-22 | 2026-07-23 | 957 | 2026-07-22 | 2026-07-23 | 1d | 2d | 0d |
| 959 | 1.5.7.25 | Prueba sanitaria | 1d | 2026-07-22 | 2026-07-23 | 957, 958FS-1d | 2026-07-22 | 2026-07-23 | 1d | 2d | 0d |

| ID | WBS | Task | Duration | Start | Finish | Predecessors | Baseline start | Baseline finish | Baseline duration | Total slack | Free slack |
| --- | --- | --- | --- | --- | --- | --- | --- | --- | --- | --- | --- |
| 960 | 1.5.8 | **MUROS EN PLANTA ALTA, CASTILLOS Y CERRM.** | 22d | 2026-07-20 | 2026-08-17 |  | 2026-07-20 | 2026-08-17 | 22d | 3d |  |
| 961 | 1.5.8.1 | Anclaje de castillos y Columnas PA | 4d | 2026-07-20 | 2026-07-24 | 944FS-1d, 945FS-1d | 2026-07-20 | 2026-07-24 | 4d | 3d | 1d |
| 962 | 1.5.8.2 | Castillo K1 | 4d | 2026-07-29 | 2026-08-03 | 950 | 2026-07-29 | 2026-08-03 | 4d | 6d | 0d |
| 963 | 1.5.8.3 | Castillo K2 | 4d | 2026-07-30 | 2026-08-04 | 950FS+1d | 2026-07-30 | 2026-08-04 | 4d | 5d | 0d |
| 964 | 1.5.8.4 | Castillo K4 | 3d | 2026-08-03 | 2026-08-06 | 962 | 2026-08-03 | 2026-08-06 | 3d | 6d | 1d |
| 965 | 1.5.8.5 | Castillo K5 | 3d | 2026-08-03 | 2026-08-06 | 962 | 2026-08-03 | 2026-08-06 | 3d | 6d | 1d |
| 966 | 1.5.8.6 | Castillo K6 | 3d | 2026-08-03 | 2026-08-06 | 962 | 2026-08-03 | 2026-08-06 | 3d | 6d | 1d |
| 967 | 1.5.8.7 | Refuerzo de muro | 3d | 2026-08-04 | 2026-08-07 | 962, 963 | 2026-08-04 | 2026-08-07 | 3d | 5d | 0d |
| 968 | 1.5.8.8 | Dala de cerramiento CR-1 | 4d | 2026-08-07 | 2026-08-12 | 964, 965, 966, 967 | 2026-08-07 | 2026-08-12 | 4d | 5d | 0d |
| 969 | 1.5.8.9 | Dala de cerramiento CR-2 | 4d | 2026-08-07 | 2026-08-12 | 964, 965, 966, 967 | 2026-08-07 | 2026-08-12 | 4d | 5d | 0d |
| 970 | 1.5.8.10 | Cadena block dala | 3d | 2026-08-12 | 2026-08-17 | 967, 968, 969 | 2026-08-12 | 2026-08-17 | 3d | 5d | 0d |
| 971 | 1.5.8.11 | Muro de ladrillo aparente | 15d | 2026-07-29 | 2026-08-17 | 950 | 2026-07-29 | 2026-08-17 | 15d | 2d | 0d |
| 972 | 1.5.8.12 | Muro de block planta alta | 14d | 2026-07-30 | 2026-08-17 | 950FS+1d | 2026-07-30 | 2026-08-17 | 14d | 2d | 0d |
| 973 | 1.5.8.13 | Ramaleo electrico en Muros Planta Alta | 4d | 2026-08-07 | 2026-08-12 | 971SS+8d | 2026-08-07 | 2026-08-12 | 4d | 13d | 3d |
| 974 | 1.5.9 | **LOSA AZOTEA** | 15d | 2026-08-17 | 2026-09-03 |  | 2026-08-17 | 2026-09-03 | 15d | 2d |  |
| 975 | 1.5.9.1 | Cortalosa CL-1 | 2d | 2026-08-31 | 2026-09-01 | 987 | 2026-08-31 | 2026-09-01 | 2d | 2d | 0d |
| 976 | 1.5.9.2 | Cortalosa CL-2 | 2d | 2026-08-31 | 2026-09-01 | 987 | 2026-08-31 | 2026-09-01 | 2d | 2d | 0d |
| 977 | 1.5.9.3 | Vigueta pretensada V11-30 125 | 5d | 2026-08-17 | 2026-08-22 | 970, 971, 972 | 2026-08-17 | 2026-08-22 | 5d | 5d | 3d |
| 978 | 1.5.9.4 | Vigueta pretensada V11-30 185 | 5d | 2026-08-17 | 2026-08-22 | 971, 972 | 2026-08-17 | 2026-08-22 | 5d | 5d | 3d |
| 979 | 1.5.9.5 | Vigueta pretensada V11-30 190 | 5d | 2026-08-17 | 2026-08-22 | 971, 972 | 2026-08-17 | 2026-08-22 | 5d | 5d | 3d |
| 980 | 1.5.9.6 | Vigueta pretensada V11-30 205 | 5d | 2026-08-19 | 2026-08-25 | 971FS+2d, 972FS+2d | 2026-08-19 | 2026-08-25 | 5d | 3d | 1d |
| 981 | 1.5.9.7 | Vigueta pretensada V11-30 215 | 5d | 2026-08-19 | 2026-08-25 | 971FS+2d, 972FS+2d | 2026-08-19 | 2026-08-25 | 5d | 3d | 1d |
| 982 | 1.5.9.8 | Vigueta pretensada V11-30 260 | 5d | 2026-08-20 | 2026-08-26 | 971FS+3d, 972FS+3d | 2026-08-20 | 2026-08-26 | 5d | 2d | 0d |
| 983 | 1.5.9.9 | Vigueta pretensada V11-30 285 | 5d | 2026-08-20 | 2026-08-26 | 971FS+3d, 972FS+3d | 2026-08-20 | 2026-08-26 | 5d | 2d | 0d |
| 984 | 1.5.9.10 | Vigueta pretensada V11-40 330 | 5d | 2026-08-20 | 2026-08-26 | 971FS+3d, 972 | 2026-08-20 | 2026-08-26 | 5d | 2d | 0d |
| 985 | 1.5.9.11 | Vigueta pretensada V11-40 335 | 5d | 2026-08-20 | 2026-08-26 | 971FS+3d, 972 | 2026-08-20 | 2026-08-26 | 5d | 2d | 0d |
| 986 | 1.5.9.12 | Vigueta pretensada V11-40 505 | 5d | 2026-08-20 | 2026-08-26 | 971FS+3d, 972 | 2026-08-20 | 2026-08-26 | 5d | 2d | 0d |
| 987 | 1.5.9.13 | Bovedilla poliestireno azotea | 3d | 2026-08-26 | 2026-08-29 | 977, 978, 979, 980, 981, 982, 983, 984, 985, 986 | 2026-08-26 | 2026-08-29 | 3d | 2d | 0d |
| 988 | 1.5.9.14 | Malla 66-10/10 losa de compresión | 2d | 2026-08-31 | 2026-09-01 | 987 | 2026-08-31 | 2026-09-01 | 2d | 2d | 0d |
| 989 | 1.5.9.15 | Concreto losa de azotea f’c=200 | 1d | 2026-09-02 | 2026-09-02 | 975, 976, 987, 988, 992, 991 | 2026-09-02 | 2026-09-02 | 1d | 2d | 0d |
| 990 | 1.5.9.16 | Curado de concreto | 1d | 2026-09-03 | 2026-09-03 | 989 | 2026-09-03 | 2026-09-03 | 1d | 2d | 0d |
| 991 | 1.5.9.17 | Cimbra losa de azotea | 5d | 2026-08-17 | 2026-08-22 | 971, 972, 973 | 2026-08-17 | 2026-08-22 | 5d | 10d | 8d |
| 992 | 1.5.9.18 | Ramaleo de poliducto para inst. electrica en azotea | 2d | 2026-08-31 | 2026-09-01 | 987 | 2026-08-31 | 2026-09-01 | 2d | 2d | 0d |

| ID | WBS | Task | Duration | Start | Finish | Predecessors | Baseline start | Baseline finish | Baseline duration | Total slack | Free slack |
| --- | --- | --- | --- | --- | --- | --- | --- | --- | --- | --- | --- |
| 993 | 1.5.10 | **PRETIL Y ACABADOS DE AZOTEA** | 19d | 2026-09-04 | 2026-09-29 |  | 2026-09-04 | 2026-09-29 | 19d | 2d |  |
| 994 | 1.5.10.1 | Castillo K1 | 5d | 2026-09-07 | 2026-09-12 | 996SS+2d | 2026-09-07 | 2026-09-12 | 5d | 2d | 0d |
| 995 | 1.5.10.2 | Dala de cerramiento en pretil | 4d | 2026-09-10 | 2026-09-15 | 994FS-2d, 996FS-2d | 2026-09-10 | 2026-09-15 | 4d | 2d | 0d |
| 996 | 1.5.10.3 | Muro de block 12x15x40 | 5d | 2026-09-04 | 2026-09-10 | 990 | 2026-09-04 | 2026-09-10 | 5d | 2d | 0d |
| 997 | 1.5.10.4 | Chaflán en azotea | 4d | 2026-09-12 | 2026-09-18 | 994, 996 | 2026-09-12 | 2026-09-18 | 4d | 2d | 0d |
| 998 | 1.5.10.5 | Diamante de entortado | 4d | 2026-09-12 | 2026-09-18 | 994, 996 | 2026-09-12 | 2026-09-18 | 4d | 2d | 0d |
| 999 | 1.5.10.6 | Aplanado exterior Mortermax fino | 5d | 2026-09-15 | 2026-09-23 | 995, 997FS-2d, 998FS-2d | 2026-09-15 | 2026-09-23 | 5d | 2d | 0d |
| 1000 | 1.5.10.7 | Entortado de Losa | 4d | 2026-09-24 | 2026-09-29 | 1001 | 2026-09-24 | 2026-09-29 | 4d | 2d | 0d |
| 1001 | 1.5.10.8 | Curado de concreto | 1d | 2026-09-23 | 2026-09-24 | 997, 999 | 2026-09-23 | 2026-09-24 | 1d | 2d | 0d |
| 1002 | 1.5.11 | **PRIMERA LIMPIEZA DE OBRA** | 4d | 2026-09-04 | 2026-09-09 |  | 2026-09-04 | 2026-09-09 | 4d | 62d |  |
| 1003 | 1.5.11.1 | Primera limpieza de obra | 2d | 2026-09-04 | 2026-09-07 | 990 | 2026-09-04 | 2026-09-07 | 2d | 62d | 0d |
| 1004 | 1.5.11.2 | Primera carga y acarreo de escombro | 2d | 2026-09-07 | 2026-09-09 | 1003 | 2026-09-07 | 2026-09-09 | 2d | 62d | 1d |
| 1005 | 1.5.12 | **IMPERMEABILIZACION** | 5d | 2026-09-29 | 2026-10-05 |  | 2026-09-29 | 2026-10-05 | 5d | 2d |  |
| 1006 | 1.5.12.1 | Impermeabilización de pretil Kover 5 años | 4d | 2026-09-29 | 2026-10-03 | 1000 | 2026-09-29 | 2026-10-03 | 4d | 3d | 1d |
| 1007 | 1.5.12.2 | Impermeabilización de losa Kover 5 años | 5d | 2026-09-29 | 2026-10-05 | 1000 | 2026-09-29 | 2026-10-05 | 5d | 2d | 0d |
| 1008 | 1.5.13 | **ALBAÑILERIA** | 62d | 2026-09-10 | 2026-11-28 |  | 2026-09-10 | 2026-11-28 | 62d | 21d |  |
| 1009 | 1.5.13.1 | Lavadero de granito | 4d | 2026-10-26 | 2026-10-29 | 1045SS+8d | 2026-10-26 | 2026-10-29 | 4d | 61d |  |
| 1010 | 1.5.13.2 | Ranurado y resane general inst. en muros | 3d | 2026-10-02 | 2026-10-06 | 1007FS-2d | 2026-10-02 | 2026-10-06 | 3d | 4d | 1d |
| 1011 | 1.5.13.3 | Ranurado y resane eléctrico 1/2 a 3/4 | 3d | 2026-10-02 | 2026-10-06 | 1007FS-2d | 2026-10-02 | 2026-10-06 | 3d | 4d | 1d |
| 1012 | 1.5.13.4 | Ranurado y resane hidráulico 1/2 a 1 | 2d | 2026-10-05 | 2026-10-07 | 1007 | 2026-10-05 | 2026-10-07 | 2d | 3d | 0d |
| 1013 | 1.5.13.5 | Resane sanitario tubería 2 | 2d | 2026-10-05 | 2026-10-07 | 1007 | 2026-10-05 | 2026-10-07 | 2d | 3d | 0d |
| 1014 | 1.5.13.6 | Resane sanitario tubería 4 | 2d | 2026-10-05 | 2026-10-07 | 1007 | 2026-10-05 | 2026-10-07 | 2d | 3d | 0d |
| 1015 | 1.5.13.7 | Resane minisplit tubería 3 | 2d | 2026-10-05 | 2026-10-07 | 1007 | 2026-10-05 | 2026-10-07 | 2d | 3d | 0d |
| 1016 | 1.5.13.8 | Ramaleo hidráulico exterior CPVC 1 1/4 | 3d | 2026-10-05 | 2026-10-08 | 1006, 1007 | 2026-10-05 | 2026-10-08 | 3d | 2d | 0d |
| 1017 | 1.5.13.9 | Ramaleo hidráulico exterior CPVC 1 | 2d | 2026-10-05 | 2026-10-07 | 1016SS | 2026-10-05 | 2026-10-07 | 2d | 2d | 0d |
| 1018 | 1.5.13.10 | Ramaleo hidráulico exterior CPVC 3/4 | 2d | 2026-10-07 | 2026-10-09 | 1017 | 2026-10-07 | 2026-10-09 | 2d | 2d | 0d |
| 1019 | 1.5.13.11 | Ramaleo hidráulico exterior CPVC 1/2 | 2d | 2026-10-07 | 2026-10-09 | 1017 | 2026-10-07 | 2026-10-09 | 2d | 2d | 0d |
| 1020 | 1.5.13.12 | Prueba hidráulica | 1d | 2026-10-09 | 2026-10-12 | 1012, 1016, 1017, 1018, 1019 | 2026-10-09 | 2026-10-12 | 1d | 2d | 0d |
| 1021 | 1.5.13.13 | Ramaleo sanitario exterior PVC 4 | 4d | 2026-10-05 | 2026-10-09 | 1006, 1007 | 2026-10-05 | 2026-10-09 | 4d | 2d | 0d |
| 1022 | 1.5.13.14 | Ramaleo sanitario exterior PVC 2 | 3d | 2026-10-06 | 2026-10-09 | 1021SS+1d | 2026-10-06 | 2026-10-09 | 3d | 2d | 0d |
| 1023 | 1.5.13.15 | Prueba sanitaria | 1d | 2026-10-09 | 2026-10-12 | 1013, 1014, 1015, 1021, 1022 | 2026-10-09 | 2026-10-12 | 1d | 2d | 0d |
| 1024 | 1.5.13.16 | Centro de carga muros PB | 4d | 2026-10-08 | 2026-10-14 | 1006FS+3d, 1007FS+3d | 2026-10-08 | 2026-10-14 | 4d | 4d | 2d |
| 1025 | 1.5.13.17 | Firme de concreto 8 cm | 4d | 2026-10-12 | 2026-10-16 | 1020, 1023, 1027 | 2026-10-12 | 2026-10-16 | 4d | 55d | 0d |
| 1026 | 1.5.13.18 | Curado de concreto | 1d | 2026-10-16 | 2026-10-17 | 1025 | 2026-10-16 | 2026-10-17 | 1d | 55d | 17d |
| 1027 | 1.5.13.19 | Cisterna 2800 L con instalación | 18d | 2026-09-10 | 2026-10-03 | 996, 1003, 1004 | 2026-09-10 | 2026-10-03 | 18d | 61d | 0d |
| 1028 | 1.5.13.20 | Banqueta y huellas de concreto | 8d | 2026-10-19 | 2026-10-28 | 1020, 1023, 1070, 1138FS-2d, 1147, 1139 | 2026-10-19 | 2026-10-28 | 8d | 38d | 0d |
| 1029 | 1.5.13.21 | Curado de concreto | 1d | 2026-10-29 | 2026-10-29 | 1028 | 2026-10-29 | 2026-10-29 | 1d | 38d | 0d |
| 1030 | 1.5.13.22 | Número oficial | 1d | 2026-11-27 | 2026-11-28 | 1038, 1039 | 2026-11-27 | 2026-11-28 | 1d | 38d |  |
| 1031 | 1.5.13.23 | Detallado de rodapié exterior | 4d | 2026-10-14 | 2026-10-19 | 1036 | 2026-10-14 | 2026-10-19 | 4d | 70d |  |
| 1032 | 1.5.13.24 | Detalle de losas y volados acabado fino | 4d | 2026-10-05 | 2026-10-09 | 1006, 1007 | 2026-10-05 | 2026-10-09 | 4d | 6d | 4d |
| 1033 | 1.5.13.25 | Detalle fino en muros interiores | 5d | 2026-10-07 | 2026-10-14 | 1010, 1011, 1012, 1013, 1014, 1015 | 2026-10-07 | 2026-10-14 | 5d | 3d | 1d |
| 1034 | 1.5.13.26 | Jardín interior bajo escalera con pozo de absorción | 12d | 2026-10-05 | 2026-10-20 | 1013FS-2d, 1014FS-2d, 1015FS-2d | 2026-10-05 | 2026-10-20 | 12d | 6d | 0d |

| ID | WBS | Task | Duration | Start | Finish | Predecessors | Baseline start | Baseline finish | Baseline duration | Total slack | Free slack |
| --- | --- | --- | --- | --- | --- | --- | --- | --- | --- | --- | --- |
| 1035 | 1.5.14 | **ACABADOS EN FACHADA A** | 47d | 2026-09-29 | 2026-11-27 |  | 2026-09-29 | 2026-11-27 | 47d | 38d |  |
| 1036 | 1.5.14.1 | Aplanado grueso fachada | 12d | 2026-09-29 | 2026-10-14 | 1000 | 2026-09-29 | 2026-10-14 | 12d | 44d | 0d |
| 1037 | 1.5.14.2 | Aplanado fino estuco fachada | 10d | 2026-10-07 | 2026-10-20 | 1036SS+7d | 2026-10-07 | 2026-10-20 | 10d | 44d | 0d |
| 1038 | 1.5.14.3 | Pintura acrílica 1-0102P | 8d | 2026-11-13 | 2026-11-25 | 1026FS+5d, 1029FS+12d, 1040, 1043 | 2026-11-13 | 2026-11-25 | 8d | 40d | 2d |
| 1039 | 1.5.14.4 | Pintura acrílica 1-1404D | 10d | 2026-11-13 | 2026-11-27 | 1026FS+5d, 1029FS+12d, 1040, 1043 | 2026-11-13 | 2026-11-27 | 10d | 38d | 0d |
| 1040 | 1.5.14.5 | Cantera 40x60cm | 14d | 2026-10-20 | 2026-11-06 | 1036, 1037 | 2026-10-20 | 2026-11-06 | 14d | 44d | 6d |
| 1041 | 1.5.14.6 | Lambrin de permabase 1 cara | 3d | 2026-10-14 | 2026-10-17 | 1036 | 2026-10-14 | 2026-10-17 | 3d | 51d | 0d |
| 1042 | 1.5.14.7 | Enchapado de Permabase | 4d | 2026-10-17 | 2026-10-22 | 1041 | 2026-10-17 | 2026-10-22 | 4d | 51d | 0d |
| 1043 | 1.5.14.8 | Cubierta de Permabase | 5d | 2026-10-22 | 2026-10-28 | 1042 | 2026-10-22 | 2026-10-28 | 5d | 51d | 13d |
| 1044 | 1.5.15 | **APLANADOS Y PINTURA** | 63d | 2026-10-05 | 2026-12-23 |  | 2026-10-05 | 2026-12-23 | 63d | 4d |  |
| 1045 | 1.5.15.1 | Yeso pulido en muros | 14d | 2026-10-15 | 2026-11-02 | 1010, 1011, 1024FS-1d, 1032, 1033, 1034FS-8d, 1050FS-4d, 1116FS-2d, 1119, 1120, 1121, 1122, 1123FS-1d, 1124FS-1d, 1125FS-1d, 1126FS-1d, 1127FS-2d, 1128FS-2d, 1129FS-3d, 1132FS-1d, 1133FS-5d, 1134FS-5d, 1135FS-6d, 1136FS-2d, 1137FS-7d, 1046 | 2026-10-15 | 2026-11-02 | 14d | 2d | 0d |
| 1046 | 1.5.15.2 | Aplanado en muros enjarre grueso | 5d | 2026-10-05 | 2026-10-12 | 1006, 1007 | 2026-10-05 | 2026-10-12 | 5d | 5d | 3d |
| 1047 | 1.5.15.3 | Pintura vinílica OR-W13 SHOELACE | 13d | 2026-12-08 | 2026-12-23 | 1054FS-2d, 1055FS-2d, 1068FS-2d, 1075, 1076, 1077, 1078, 1079, 1080, 1086, 1087, 1088, 1089, 1150, 1151, 1153, 1154, 1083, 1084, 1081, 1082, 1090 | 2026-12-08 | 2026-12-23 | 13d | 2d | 0d |
| 1048 | 1.5.15.4 | Pintura vinílica PPUI5-13 Creamy M. | 10d | 2026-12-01 | 2026-12-14 | 1054, 1055, 1068, 1098, 1099, 1094, 1092 | 2026-12-01 | 2026-12-14 | 10d | 10d | 8d |
| 1049 | 1.5.15.5 | Pintura vinílica MD-06 Nano White | 8d | 2026-12-01 | 2026-12-11 | 1054, 1055, 1068, 1098, 1099, 1094, 1092 | 2026-12-01 | 2026-12-11 | 8d | 12d | 10d |
| 1050 | 1.5.15.6 | Yeso pulido en plafones | 10d | 2026-10-05 | 2026-10-17 | 1006, 1007 | 2026-10-05 | 2026-10-17 | 10d | 4d | 2d |
| 1051 | 1.5.15.7 | Perfilado de puertas y ventanas | 4d | 2026-10-20 | 2026-10-24 | 1045SS+4d | 2026-10-20 | 2026-10-24 | 4d | 65d |  |
| 1052 | 1.5.16 | **PISOS Y AZULEJOS** | 24d | 2026-10-27 | 2026-11-26 |  | 2026-10-27 | 2026-11-26 | 24d | 2d |  |
| 1053 | 1.5.16.1 | **AREA SOCIAL** | 15d | 2026-10-30 | 2026-11-19 |  | 2026-10-30 | 2026-11-19 | 15d | 2d |  |
| 1054 | 1.5.16.1.1 | Piso Adhara 44X89 | 14d | 2026-10-30 | 2026-11-18 | 1045FS-2d, 1141, 1140, 1057FS-5d | 2026-10-30 | 2026-11-18 | 14d | 2d | 0d |
| 1055 | 1.5.16.1.2 | Zoclo Adhara 44X89 | 5d | 2026-11-11 | 2026-11-19 | 1054FS-4d | 2026-11-11 | 2026-11-19 | 5d | 19d | 10d |
| 1056 | 1.5.16.2 | **RECAMARAS** | 8d | 2026-10-27 | 2026-11-05 |  | 2026-10-27 | 2026-11-05 | 8d | 2d |  |
| 1057 | 1.5.16.2.1 | Acabado aparente de pisos - pulido | 8d | 2026-10-27 | 2026-11-05 | 1045FS-5d | 2026-10-27 | 2026-11-05 | 8d | 2d | 0d |
| 1058 | 1.5.16.3 | **BAÑOS** | 17d | 2026-10-28 | 2026-11-19 |  | 2026-10-28 | 2026-11-19 | 17d | 13d |  |
| 1059 | 1.5.16.3.1 | Azulejo Mod. Ornamenta 60x30 | 5d | 2026-11-05 | 2026-11-11 | 1060FS-1d, 1130, 1131, 1141 | 2026-11-05 | 2026-11-11 | 5d | 13d | 0d |
| 1060 | 1.5.16.3.2 | Impermeabilización en regadera | 2d | 2026-11-04 | 2026-11-06 | 1045, 1064 | 2026-11-04 | 2026-11-06 | 2d | 13d | 0d |
| 1061 | 1.5.16.3.3 | Piso Mod. Valparaiso 20x20 | 4d | 2026-11-11 | 2026-11-18 | 1059 | 2026-11-11 | 2026-11-18 | 4d | 13d | 0d |
| 1062 | 1.5.16.3.4 | Zoclo Adhara 44X89 | 2d | 2026-11-17 | 2026-11-19 | 1061FS-1d | 2026-11-17 | 2026-11-19 | 2d | 46d |  |
| 1063 | 1.5.16.3.5 | Piso Adhara 44X89 | 3d | 2026-11-11 | 2026-11-17 | 1059 | 2026-11-11 | 2026-11-17 | 3d | 48d |  |
| 1064 | 1.5.16.3.6 | Fabricacion de nicho decorativo en baños | 6d | 2026-10-28 | 2026-11-04 | 1045FS-4d | 2026-10-28 | 2026-11-04 | 6d | 13d | 0d |
| 1065 | 1.5.16.3.7 | Sardinel en regadera | 4d | 2026-11-11 | 2026-11-18 | 1059 | 2026-11-11 | 2026-11-18 | 4d | 47d |  |

| ID | WBS | Task | Duration | Start | Finish | Predecessors | Baseline start | Baseline finish | Baseline duration | Total slack | Free slack |
| --- | --- | --- | --- | --- | --- | --- | --- | --- | --- | --- | --- |
| 1066 | 1.5.16.4 | **ESCALERA** | 9d | 2026-11-13 | 2026-11-26 |  | 2026-11-13 | 2026-11-26 | 9d | 2d |  |
| 1067 | 1.5.16.4.1 | Piso Adhara 44X89 | 7d | 2026-11-13 | 2026-11-24 | 933, 1045, 1054FS-2d | 2026-11-13 | 2026-11-24 | 7d | 2d | 0d |
| 1068 | 1.5.16.4.2 | Zoclo Adhara 44X89 | 4d | 2026-11-21 | 2026-11-26 | 1067FS-2d | 2026-11-21 | 2026-11-26 | 4d | 2d | 0d |
| 1069 | 1.5.17 | **EXTERIOR** | 3d | 2026-10-12 | 2026-10-15 |  | 2026-10-12 | 2026-10-15 | 3d | 7d |  |
| 1070 | 1.5.17.1 | Rastrilleo, afine y nivelado de tierra | 3d | 2026-10-12 | 2026-10-15 | 1020, 1023 | 2026-10-12 | 2026-10-15 | 3d | 7d | 0d |
| 1071 | 1.5.18 | **SEGUNDA LIMPIEZA DE OBRA** | 4d | 2026-11-26 | 2026-12-01 |  | 2026-11-26 | 2026-12-01 | 4d | 25d |  |
| 1072 | 1.5.18.1 | Segunda limpieza de obra | 2d | 2026-11-26 | 2026-11-28 | 1067, 1068 | 2026-11-26 | 2026-11-28 | 2d | 25d | 0d |
| 1073 | 1.5.18.2 | Segunda carga y acarreo de escombro | 2d | 2026-11-28 | 2026-12-01 | 1072 | 2026-11-28 | 2026-12-01 | 2d | 25d | 23d |
| 1074 | 1.5.19 | **CANCELERIA PUERTAS Y VENTANAS DE ALUMINIO** | 17d | 2026-11-13 | 2026-12-07 |  | 2026-11-13 | 2026-12-07 | 17d | 3d |  |
| 1075 | 1.5.19.1 | Fijo medidas 0.30x4.90m | 7d | 2026-11-18 | 2026-11-26 | 1045, 1054 | 2026-11-18 | 2026-11-26 | 7d | 11d | 9d |
| 1076 | 1.5.19.2 | Ventana Corrediza 1.80x1.60m | 4d | 2026-11-13 | 2026-11-20 | 1045FS+10d | 2026-11-13 | 2026-11-20 | 4d | 16d | 14d |
| 1077 | 1.5.19.3 | Ventana Corrediza 0.60x0.40m | 4d | 2026-11-18 | 2026-11-23 | 1045FS+12d | 2026-11-18 | 2026-11-23 | 4d | 14d | 12d |
| 1078 | 1.5.19.4 | Ventana Corrediza 1.54x0.50m | 4d | 2026-11-18 | 2026-11-23 | 1045FS+12d | 2026-11-18 | 2026-11-23 | 4d | 14d | 12d |
| 1079 | 1.5.19.5 | Fijo medidas 1.40x2.50m | 4d | 2026-11-21 | 2026-11-26 | 1045FS+10d, 1054FS+3d | 2026-11-21 | 2026-11-26 | 4d | 5d | 0d |
| 1080 | 1.5.19.6 | Ventana Corrediza 1.80x1.50m | 4d | 2026-11-24 | 2026-11-28 | 1045FS+7d, 1054FS+2d, 1067 | 2026-11-24 | 2026-11-28 | 4d | 3d | 0d |
| 1081 | 1.5.19.7 | Ventana Corrediza 1.40x1.60m | 4d | 2026-11-24 | 2026-11-28 | 1045, 1054, 1067 | 2026-11-24 | 2026-11-28 | 4d | 3d | 0d |
| 1082 | 1.5.19.8 | Ventana Corrediza 0.95x0.40m | 4d | 2026-11-24 | 2026-11-28 | 1045, 1054, 1067 | 2026-11-24 | 2026-11-28 | 4d | 3d | 0d |
| 1083 | 1.5.19.9 | Puerta corrediza 3.85x2.10m | 6d | 2026-11-26 | 2026-12-03 | 1079 | 2026-11-26 | 2026-12-03 | 6d | 5d | 3d |
| 1084 | 1.5.19.10 | Barandal de Cristal Templado | 6d | 2026-11-28 | 2026-12-07 | 1080, 1081, 1082 | 2026-11-28 | 2026-12-07 | 6d | 3d | 1d |
| 1085 | 1.5.20 | **CARPINTERIA, PUERTAS EXTERIORES E INTERIORES** | 9d | 2026-11-26 | 2026-12-08 |  | 2026-11-26 | 2026-12-08 | 9d | 2d |  |
| 1086 | 1.5.20.1 | Puerta P-01 de seguridad | 5d | 2026-11-26 | 2026-12-02 | 1068 | 2026-11-26 | 2026-12-02 | 5d | 6d | 4d |
| 1087 | 1.5.20.2 | Puerta P-01 interior | 8d | 2026-11-26 | 2026-12-07 | 1068 | 2026-11-26 | 2026-12-07 | 8d | 3d | 1d |
| 1088 | 1.5.20.3 | Puerta P-02 interior | 8d | 2026-11-26 | 2026-12-07 | 1068 | 2026-11-26 | 2026-12-07 | 8d | 3d | 1d |
| 1089 | 1.5.20.4 | Puerta P-03 interior | 4d | 2026-12-02 | 2026-12-08 | 1068FS+5d | 2026-12-02 | 2026-12-08 | 4d | 2d | 0d |
| 1090 | 1.5.20.5 | Puerta P-04 interior | 4d | 2026-12-02 | 2026-12-08 | 1068FS+5d | 2026-12-02 | 2026-12-08 | 4d | 2d | 0d |

| ID | WBS | Task | Duration | Start | Finish | Predecessors | Baseline start | Baseline finish | Baseline duration | Total slack | Free slack |
| --- | --- | --- | --- | --- | --- | --- | --- | --- | --- | --- | --- |
| 1091 | 1.5.21 | **VOLADOS, BARANDAL Y ESCALERA** | 33d | 2026-10-20 | 2026-12-01 |  | 2026-10-20 | 2026-12-01 | 33d | 10d |  |
| 1092 | 1.5.21.1 | Barandal de Herreria en escalera | 4d | 2026-11-06 | 2026-11-11 | 1093FS-4d | 2026-11-06 | 2026-11-11 | 4d | 25d | 15d |
| 1093 | 1.5.21.2 | Escalera de herreria | 18d | 2026-10-20 | 2026-11-11 | 1034 | 2026-10-20 | 2026-11-11 | 18d | 10d | 0d |
| 1094 | 1.5.21.3 | Techumbre en acceso Principal | 14d | 2026-11-05 | 2026-11-24 | 1093FS-5d | 2026-11-05 | 2026-11-24 | 14d | 16d | 6d |
| 1095 | 1.5.21.4 | Techumbre en 1.80x0.50m | 7d | 2026-11-05 | 2026-11-13 | 1093FS-5d | 2026-11-05 | 2026-11-13 | 7d | 10d | 0d |
| 1096 | 1.5.21.5 | Techumbre en 1.40x0.50m | 7d | 2026-11-13 | 2026-11-24 | 1095 | 2026-11-13 | 2026-11-24 | 7d | 10d | 0d |
| 1097 | 1.5.21.6 | Imper con manto prefabricado | 5d | 2026-11-19 | 2026-11-25 | 1095, 1096FS-4d | 2026-11-19 | 2026-11-25 | 5d | 10d | 0d |
| 1098 | 1.5.21.7 | Plafon hoja tablaroca std | 5d | 2026-11-25 | 2026-12-01 | 1097 | 2026-11-25 | 2026-12-01 | 5d | 10d | 0d |
| 1099 | 1.5.21.8 | Acabado Woodstock en parte inf. Cubierta | 5d | 2026-11-25 | 2026-12-01 | 1097 | 2026-11-25 | 2026-12-01 | 5d | 10d | 0d |
| 1100 | 1.5.22 | **INSTALACION ELECTRICA** | 16d | 2026-10-28 | 2026-11-18 |  | 2026-10-28 | 2026-11-18 | 16d | 31d |  |
| 1101 | 1.5.22.1 | Alimentación eléctrica base a centro de carga | 5d | 2026-11-02 | 2026-11-07 | 1024, 1045 | 2026-11-02 | 2026-11-07 | 5d | 35d | 0d |
| 1102 | 1.5.22.2 | Interruptor termomagnético 1x20 A | 1d | 2026-11-07 | 2026-11-09 | 1101 | 2026-11-07 | 2026-11-09 | 1d | 35d | 4d |
| 1103 | 1.5.22.3 | Interruptor termomagnético 2x20 A | 1d | 2026-11-07 | 2026-11-09 | 1101 | 2026-11-07 | 2026-11-09 | 1d | 35d | 4d |
| 1104 | 1.5.22.4 | Salida para apagador 3 vías | 4d | 2026-10-28 | 2026-11-02 | 1006, 1045FS-4d | 2026-10-28 | 2026-11-02 | 4d | 31d | 0d |
| 1105 | 1.5.22.5 | Salida para apagador doble | 3d | 2026-11-02 | 2026-11-05 | 1104 | 2026-11-02 | 2026-11-05 | 3d | 33d | 0d |
| 1106 | 1.5.22.6 | Salida para apagador sencillo | 3d | 2026-11-02 | 2026-11-05 | 1104 | 2026-11-02 | 2026-11-05 | 3d | 33d | 0d |
| 1107 | 1.5.22.7 | Salida de alumbrado en losa | 5d | 2026-11-02 | 2026-11-07 | 1104 | 2026-11-02 | 2026-11-07 | 5d | 31d | 0d |
| 1108 | 1.5.22.8 | Salida para contacto exterior doble | 2d | 2026-11-02 | 2026-11-04 | 1104 | 2026-11-02 | 2026-11-04 | 2d | 34d | 3d |
| 1109 | 1.5.22.9 | Salida para contacto 220 V | 3d | 2026-11-04 | 2026-11-07 | 1104FS+2d | 2026-11-04 | 2026-11-07 | 3d | 31d | 0d |
| 1110 | 1.5.22.10 | Salida para contacto doble | 5d | 2026-11-04 | 2026-11-10 | 1104FS+2d | 2026-11-04 | 2026-11-10 | 5d | 34d | 3d |
| 1111 | 1.5.22.11 | Salida para contacto doble área húmeda | 2d | 2026-11-07 | 2026-11-10 | 1108, 1109 | 2026-11-07 | 2026-11-10 | 2d | 34d | 3d |
| 1112 | 1.5.22.12 | Salida TV / telefonía / intercom | 4d | 2026-11-07 | 2026-11-12 | 1108, 1109 | 2026-11-07 | 2026-11-12 | 4d | 32d | 1d |
| 1113 | 1.5.22.13 | Extractor 4 baño | 5d | 2026-11-07 | 2026-11-13 | 1108, 1109 | 2026-11-07 | 2026-11-13 | 5d | 31d | 0d |
| 1114 | 1.5.22.14 | Prueba eléctrica | 2d | 2026-11-13 | 2026-11-18 | 1101, 1102, 1103, 1104, 1105, 1106, 1107, 1108, 1109, 1110, 1111, 1112, 1113, 1167, 1168, 1174, 1169, 1170, 1172, 1173, 1176, 1178 | 2026-11-13 | 2026-11-18 | 2d | 31d | 29d |

| ID | WBS | Task | Duration | Start | Finish | Predecessors | Baseline start | Baseline finish | Baseline duration | Total slack | Free slack |
| --- | --- | --- | --- | --- | --- | --- | --- | --- | --- | --- | --- |
| 1115 | 1.5.23 | **INSTALACIÓN HIDRO-SANITARIA** | 11d | 2026-10-12 | 2026-10-24 |  | 2026-10-12 | 2026-10-24 | 11d | 2d |  |
| 1116 | 1.5.23.1 | Tubería condensados PVC 1 | 5d | 2026-10-12 | 2026-10-17 | 1020 | 2026-10-12 | 2026-10-17 | 5d | 2d | 0d |
| 1117 | 1.5.23.2 | Tubería sanitaria PVC 4 | 5d | 2026-10-12 | 2026-10-17 | 1023 | 2026-10-12 | 2026-10-17 | 5d | 10d | 0d |
| 1118 | 1.5.23.3 | Coladera H-444 | 1d | 2026-10-17 | 2026-10-19 | 1117 | 2026-10-17 | 2026-10-19 | 1d | 10d | 4d |
| 1119 | 1.5.23.4 | Caja PVC para lavadora | 3d | 2026-10-12 | 2026-10-15 | 1020 | 2026-10-12 | 2026-10-15 | 3d | 2d | 0d |
| 1120 | 1.5.23.5 | Salida para secadora PVC 4 | 3d | 2026-10-12 | 2026-10-15 | 1023 | 2026-10-12 | 2026-10-15 | 3d | 2d | 0d |
| 1121 | 1.5.23.6 | Salida hidráulica para boiler | 2d | 2026-10-12 | 2026-10-14 | 1020 | 2026-10-12 | 2026-10-14 | 2d | 3d | 1d |
| 1122 | 1.5.23.7 | Salida hidráulica para llave de jardín | 3d | 2026-10-12 | 2026-10-15 | 1020 | 2026-10-12 | 2026-10-15 | 3d | 2d | 0d |
| 1123 | 1.5.23.8 | Salida hidráulica para lavabo | 4d | 2026-10-12 | 2026-10-16 | 1020 | 2026-10-12 | 2026-10-16 | 4d | 2d | 0d |
| 1124 | 1.5.23.9 | Salida hidráulica para purificación | 4d | 2026-10-12 | 2026-10-16 | 1020 | 2026-10-12 | 2026-10-16 | 4d | 2d | 0d |
| 1125 | 1.5.23.10 | Salida sanitaria para lavabo | 2d | 2026-10-14 | 2026-10-16 | 1020FS+2d | 2026-10-14 | 2026-10-16 | 2d | 2d | 0d |
| 1126 | 1.5.23.11 | Salida hidráulica para lavadero | 2d | 2026-10-14 | 2026-10-16 | 1020FS+2d | 2026-10-14 | 2026-10-16 | 2d | 2d | 0d |
| 1127 | 1.5.23.12 | Salida sanitaria para lavadero | 2d | 2026-10-15 | 2026-10-17 | 1020FS+3d | 2026-10-15 | 2026-10-17 | 2d | 2d | 0d |
| 1128 | 1.5.23.13 | Salida hidráulica para lavadora | 2d | 2026-10-15 | 2026-10-17 | 1020FS+3d | 2026-10-15 | 2026-10-17 | 2d | 2d | 0d |
| 1129 | 1.5.23.14 | Salida sanitaria para lavadora | 2d | 2026-10-16 | 2026-10-19 | 1023FS+4d | 2026-10-16 | 2026-10-19 | 2d | 2d | 0d |
| 1130 | 1.5.23.15 | Salida hidráulica para regadera | 5d | 2026-10-16 | 2026-10-22 | 1020FS+4d | 2026-10-16 | 2026-10-22 | 5d | 7d | 0d |
| 1131 | 1.5.23.16 | Salida sanitaria para regadera | 4d | 2026-10-16 | 2026-10-21 | 1023FS+4d | 2026-10-16 | 2026-10-21 | 4d | 8d | 2d |
| 1132 | 1.5.23.17 | Salida hidráulica para WC | 2d | 2026-10-14 | 2026-10-16 | 1023FS+2d | 2026-10-14 | 2026-10-16 | 2d | 2d | 0d |
| 1133 | 1.5.23.18 | Salida sanitaria para WC | 4d | 2026-10-16 | 2026-10-21 | 1023FS+4d | 2026-10-16 | 2026-10-21 | 4d | 2d | 0d |
| 1134 | 1.5.23.19 | Salida hidráulica para zinc | 4d | 2026-10-16 | 2026-10-21 | 1023FS+4d | 2026-10-16 | 2026-10-21 | 4d | 2d | 0d |
| 1135 | 1.5.23.20 | Salida sanitaria para zinc | 3d | 2026-10-19 | 2026-10-22 | 1023FS+6d | 2026-10-19 | 2026-10-22 | 3d | 2d | 0d |
| 1136 | 1.5.23.21 | Tubo para ventila de baño 2 | 5d | 2026-10-12 | 2026-10-17 | 1116SS | 2026-10-12 | 2026-10-17 | 5d | 2d | 0d |
| 1137 | 1.5.23.22 | Tubo para minisplit PVC 3 | 5d | 2026-10-17 | 2026-10-23 | 1136 | 2026-10-17 | 2026-10-23 | 5d | 2d | 0d |
| 1138 | 1.5.23.23 | Cuadro de medición | 5d | 2026-10-15 | 2026-10-21 | 1070 | 2026-10-15 | 2026-10-21 | 5d | 7d | 0d |
| 1139 | 1.5.23.24 | Pozo de absorción 0.50x0.50x0.50 | 3d | 2026-10-15 | 2026-10-19 | 1070 | 2026-10-15 | 2026-10-19 | 3d | 10d | 0d |
| 1140 | 1.5.23.25 | Prueba sanitaria final | 1d | 2026-10-23 | 2026-10-24 | 1116, 1117, 1118, 1120, 1125, 1127, 1129, 1131, 1133, 1136, 1137 | 2026-10-23 | 2026-10-24 | 1d | 6d | 4d |
| 1141 | 1.5.23.26 | Prueba hidrostática final | 1d | 2026-10-22 | 2026-10-23 | 1121, 1122, 1123, 1124, 1126, 1128, 1130, 1132, 1134, 1138, 1139, 1144, 1145, 1143, 1142 | 2026-10-22 | 2026-10-23 | 1d | 7d | 5d |
| 1142 | 1.5.23.27 | Salida válvula control 19 mm | 1d | 2026-10-21 | 2026-10-22 | 1138 | 2026-10-21 | 2026-10-22 | 1d | 7d | 0d |
| 1143 | 1.5.23.28 | Salida válvula control 13 mm | 1d | 2026-10-21 | 2026-10-22 | 1138 | 2026-10-21 | 2026-10-22 | 1d | 7d | 0d |
| 1144 | 1.5.23.29 | Salida hidráulica para tanque hidroneumático | 3d | 2026-10-15 | 2026-10-19 | 1070 | 2026-10-15 | 2026-10-19 | 3d | 10d | 3d |
| 1145 | 1.5.23.30 | Salida hidráulica para Active Driver | 3d | 2026-10-15 | 2026-10-19 | 1070 | 2026-10-15 | 2026-10-19 | 3d | 10d | 3d |

| ID | WBS | Task | Duration | Start | Finish | Predecessors | Baseline start | Baseline finish | Baseline duration | Total slack | Free slack |
| --- | --- | --- | --- | --- | --- | --- | --- | --- | --- | --- | --- |
| 1146 | 1.5.24 | **INSTALACION DE GAS** | 8d | 2026-10-08 | 2026-10-19 |  | 2026-10-08 | 2026-10-19 | 8d | 38d |  |
| 1147 | 1.5.24.1 | Ramaleo para gas 1/2 | 5d | 2026-10-13 | 2026-10-19 | 1070FS-2d, 1148 | 2026-10-13 | 2026-10-19 | 5d | 38d | 0d |
| 1148 | 1.5.24.2 | Excavación a mano material tipo B | 3d | 2026-10-08 | 2026-10-13 | 1070FF-2d | 2026-10-08 | 2026-10-13 | 3d | 38d | 0d |
| 1149 | 1.5.25 | **MUEBLES SANITARIOS** | 29d | 2026-11-18 | 2026-12-23 |  | 2026-11-18 | 2026-12-23 | 29d | 14d |  |
| 1150 | 1.5.25.1 | WC completo Austral | 2d | 2026-11-18 | 2026-11-20 | 1054, 1061, 1140, 1141 | 2026-11-18 | 2026-11-20 | 2d | 16d | 14d |
| 1151 | 1.5.25.2 | Lavabo Senna con pedestal | 4d | 2026-11-18 | 2026-11-23 | 1054, 1059, 1061, 1140, 1141 | 2026-11-18 | 2026-11-23 | 4d | 14d | 12d |
| 1152 | 1.5.25.3 | Tarja / lavabo combo Guinea 80x45 | 2d | 2026-11-18 | 2026-11-20 | 898, 1054, 1059, 1061, 1141 | 2026-11-18 | 2026-11-20 | 2d | 45d |  |
| 1153 | 1.5.25.4 | Regadera con monomando | 3d | 2026-11-20 | 2026-11-24 | 1054, 1059FS+2d, 1061FS+2d, 1140, 1141 | 2026-11-20 | 2026-11-24 | 3d | 13d | 11d |
| 1154 | 1.5.25.5 | Coladera inserto cerámico | 2d | 2026-11-21 | 2026-11-24 | 1059, 1061FS+3d, 1141 | 2026-11-21 | 2026-11-24 | 2d | 13d | 11d |
| 1155 | 1.5.25.6 | Toallero sencillo | 1d | 2026-12-23 | 2026-12-23 | 1047FS-1d | 2026-12-23 | 2026-12-23 | 1d | 2d | 0d |
| 1156 | 1.5.25.7 | Toallero barra | 1d | 2026-12-23 | 2026-12-23 | 1047FS-1d | 2026-12-23 | 2026-12-23 | 1d | 2d | 0d |
| 1157 | 1.5.25.8 | Portapapel | 1d | 2026-12-23 | 2026-12-23 | 1047FS-1d | 2026-12-23 | 2026-12-23 | 1d | 2d | 0d |
| 1158 | 1.5.25.9 | Gancho baño | 1d | 2026-12-23 | 2026-12-23 | 1047FS-1d | 2026-12-23 | 2026-12-23 | 1d | 2d | 0d |
| 1159 | 1.5.26 | **EQUIPAMIENTO** | 6d | 2026-10-02 | 2026-10-09 |  | 2026-10-02 | 2026-10-09 | 6d | 61d |  |
| 1160 | 1.5.26.1 | Electronivel Rotoplas 5 m | 2d | 2026-10-03 | 2026-10-06 | 1165 | 2026-10-03 | 2026-10-06 | 2d | 64d | 62d |
| 1161 | 1.5.26.2 | Manómetro | 1d | 2026-10-03 | 2026-10-05 | 1165 | 2026-10-03 | 2026-10-05 | 1d | 65d | 63d |
| 1162 | 1.5.26.3 | Interruptor de presión 30-50 PSI | 1d | 2026-10-03 | 2026-10-05 | 1165 | 2026-10-03 | 2026-10-05 | 1d | 65d | 63d |
| 1163 | 1.5.26.4 | Tanque hidroneumático FPS-24LX | 3d | 2026-10-03 | 2026-10-07 | 1165 | 2026-10-03 | 2026-10-07 | 3d | 61d | 0d |
| 1164 | 1.5.26.5 | Bomba sumergible Dominator 1.2 HP | 2d | 2026-10-07 | 2026-10-09 | 1163 | 2026-10-07 | 2026-10-09 | 2d | 61d | 59d |
| 1165 | 1.5.26.6 | Cisterna prefabricada 2800 L | 1d | 2026-10-02 | 2026-10-03 | 1027FF | 2026-10-02 | 2026-10-03 | 1d | 61d | 0d |
| 1166 | 1.5.27 | **LUMINARIAS** | 5d | 2026-11-07 | 2026-11-13 |  | 2026-11-07 | 2026-11-13 | 5d | 31d |  |
| 1167 | 1.5.27.1 | Roseta cerámica | 3d | 2026-11-07 | 2026-11-11 | 1107 | 2026-11-07 | 2026-11-11 | 3d | 33d | 2d |
| 1168 | 1.5.27.2 | Luminaria lagartijera LED | 3d | 2026-11-07 | 2026-11-11 | 1107 | 2026-11-07 | 2026-11-11 | 3d | 33d | 2d |
| 1169 | 1.5.27.3 | Spot 6W Tecnolite | 3d | 2026-11-07 | 2026-11-11 | 1107 | 2026-11-07 | 2026-11-11 | 3d | 33d | 2d |
| 1170 | 1.5.27.4 | Spot 7W Tecnolite | 3d | 2026-11-07 | 2026-11-11 | 1107 | 2026-11-07 | 2026-11-11 | 3d | 33d | 2d |
| 1171 | 1.5.27.5 | Arbotante exterior | 2d | 2026-11-07 | 2026-11-10 | 1107 | 2026-11-07 | 2026-11-10 | 2d | 31d | 0d |
| 1172 | 1.5.27.6 | Estaca LED exterior | 3d | 2026-11-10 | 2026-11-13 | 1171 | 2026-11-10 | 2026-11-13 | 3d | 31d | 0d |
| 1173 | 1.5.27.7 | Tira LED | 3d | 2026-11-10 | 2026-11-13 | 1171 | 2026-11-10 | 2026-11-13 | 3d | 31d | 0d |
| 1174 | 1.5.27.8 | Spot exterior 50W | 2d | 2026-11-07 | 2026-11-10 | 1107 | 2026-11-07 | 2026-11-10 | 2d | 34d | 3d |

| ID | WBS | Task | Type | Duration | Start | Finish | Predecessors | Complete | Remaining | Baseline start | Baseline finish | Baseline duration | Total slack | Free slack |
| --- | --- | --- | --- | --- | --- | --- | --- | --- | --- | --- | --- | --- | --- | --- |
| 1175 | 1.5.28 | **TIMBRE** |  | 2d | 2026-11-09 | 2026-11-11 |  |  |  | 2026-11-09 | 2026-11-11 | 2d | 33d |  |
| 1176 | 1.5.28.1 | Timbre inalámbrico con bocina |  | 2d | 2026-11-09 | 2026-11-11 | 1105FS+3d, 1106FS+3d |  |  | 2026-11-09 | 2026-11-11 | 2d | 33d | 2d |
| 1177 | 1.5.29 | **OBRA EXTERIOR - BARDA** |  | 18d | 2026-10-15 | 2026-11-06 |  |  |  | 2026-10-15 | 2026-11-06 | 18d | 39d |  |
| 1178 | 1.5.29.1 | Murete convencional |  | 5d | 2026-10-21 | 2026-10-27 | 1070FS+5d |  |  | 2026-10-21 | 2026-10-27 | 5d | 45d | 14d |
| 1179 | 1.5.29.2 | Barda de block aparente |  | 18d | 2026-10-15 | 2026-11-06 | 1070 |  |  | 2026-10-15 | 2026-11-06 | 18d | 39d | 37d |
| 1180 | 1.5.30 | **TERCER LIMPIEZA DE OBRA** |  | 16d | 2026-12-26 | 2027-01-18 |  |  |  | 2026-12-26 | 2027-01-18 | 16d | 2d |  |
| 1181 | 1.5.30.1 | Limpieza fina para entrega |  | 5d | 2026-12-26 | 2027-01-04 | 1047, 1048, 1049, 1080, 1089, 1090, 1114, 1140, 1141, 1155, 1156, 1157, 1158, 1160, 1161, 1162, 1163, 1164, 1179 |  |  | 2026-12-26 | 2027-01-04 | 5d | 2d | 0d |
| 1182 | 1.5.30.2 | Tercera limpieza de obra |  | 5d | 2027-01-04 | 2027-01-11 | 1073, 1181 |  |  | 2027-01-04 | 2027-01-11 | 5d | 2d | 0d |
| 1183 | 1.5.30.3 | Tercera carga y acarreo de escombro |  | 6d | 2027-01-11 | 2027-01-18 | 1182 |  |  | 2027-01-11 | 2027-01-18 | 6d | 2d | 0d |
| 1184 | 1.6 | **LOTE 21 M-663 CORSAC-A** |  | 181d | 2026-05-29 A | 2027-01-18 |  | 1% | 178.94d | 2026-05-29 | 2027-01-18 | 181d | 2d |  |
| 1185 | 1.6.1 | **HITOS IMPORTANTES DEL LOTE** |  | 181d | 2026-05-29 A | 2027-01-18 |  |  | 181d | 2026-05-29 | 2027-01-18 | 181d | 2d |  |
| 1186 | 1.6.1.1 | Inicio del Lote-21 M-663 Corsac-A | milestone | 0d | 2026-05-29 A | 2026-05-29 A | 8 | 100% |  | 2026-05-29 | 2026-05-29 |  |  |  |
| 1187 | 1.6.1.2 | Colado de Losa de Cimentación | milestone | 0d | 2026-06-19 | 2026-06-19 | 1218 |  |  | 2026-06-19 | 2026-06-19 |  | 166d |  |
| 1188 | 1.6.1.3 | Colado de Losa de Entrepiso | milestone | 0d | 2026-07-28 | 2026-07-28 | 1254 |  |  | 2026-07-28 | 2026-07-28 |  | 136d |  |
| 1189 | 1.6.1.4 | Colado de Losa de Azotea | milestone | 0d | 2026-09-02 | 2026-09-02 | 1294 |  |  | 2026-09-02 | 2026-09-02 |  | 106d |  |
| 1190 | 1.6.1.5 | Entrega de vivienda | milestone | 0d | 2027-01-18 | 2027-01-18 | 1486, 1487, 1488 |  |  | 2027-01-18 | 2027-01-18 |  | 2d |  |
| 1191 | 1.6.2 | **TRABAJOS PRELIMINARES** |  | 2d | 2026-05-29 A | 2026-06-02 A |  | 100% |  | 2026-05-29 | 2026-06-02 | 2d |  |  |
| 1192 | 1.6.2.1 | Trazo y nivelación |  | 2d | 2026-05-29 A | 2026-06-02 A | 1186 | 100% |  | 2026-05-29 | 2026-06-02 | 2d |  |  |
| 1193 | 1.6.3 | **EXCAVACIONES** |  | 3d | 2026-06-02 A | 2026-06-05 A |  | 100% |  | 2026-06-02 | 2026-06-05 | 3d |  |  |
| 1194 | 1.6.3.1 | Excavación a mano material tipo B |  | 3d | 2026-06-02 A | 2026-06-05 A | 1192 | 100% |  | 2026-06-02 | 2026-06-05 | 3d |  |  |
| 1195 | 1.6.3.2 | Acarreo en carretilla 20 m |  | 2d | 2026-06-03 A | 2026-06-05 A | 1194SS+1d | 100% |  | 2026-06-03 | 2026-06-05 | 2d |  |  |
| 1196 | 1.6.4 | **CIMENTACION** |  | 13d | 2026-06-05 A | 2026-06-22 |  | 10% | 11.65d | 2026-06-05 | 2026-06-22 | 13d | 2d |  |
| 1197 | 1.6.4.1 | Cimbra perimetral losa de cimentación |  | 3d | 2026-06-05 A | 2026-06-09 | 1194, 1195 | 83% | 0.5d | 2026-06-05 | 2026-06-09 | 3d | 2d | 0d |
| 1198 | 1.6.4.2 | Sistema antitermitas PVC |  | 3d | 2026-06-05 A | 2026-06-09 | 1194, 1195 | 83% | 0.5d | 2026-06-05 | 2026-06-09 | 3d | 3d | 0d |
| 1199 | 1.6.4.3 | Hule negro en cimentación |  | 1d | 2026-06-09 | 2026-06-10 | 1198 |  |  | 2026-06-09 | 2026-06-10 | 1d | 3d | 0d |
| 1200 | 1.6.4.4 | Ramaleo poliducto eléctrico cimentación |  | 2d | 2026-06-10 | 2026-06-12 | 1199 |  |  | 2026-06-10 | 2026-06-12 | 2d | 6d | 0d |
| 1201 | 1.6.4.5 | Ramaleo eléctrico base-medición a centro de carga |  | 1d | 2026-06-10 | 2026-06-11 | 1199 |  |  | 2026-06-10 | 2026-06-11 | 1d | 7d | 1d |
| 1202 | 1.6.4.6 | Ramaleo eléctrico exterior |  | 1d | 2026-06-12 | 2026-06-13 | 1200, 1201 |  |  | 2026-06-12 | 2026-06-13 | 1d | 6d | 4d |
| 1203 | 1.6.4.7 | Ramaleo para cable poliducto 3/4 |  | 1d | 2026-06-12 | 2026-06-13 | 1200, 1201 |  |  | 2026-06-12 | 2026-06-13 | 1d | 6d | 4d |
| 1204 | 1.6.4.8 | Ramaleo para TV poliducto 3/4 |  | 1d | 2026-06-12 | 2026-06-13 | 1200, 1201 |  |  | 2026-06-12 | 2026-06-13 | 1d | 6d | 4d |
| 1205 | 1.6.4.9 | Ramaleo hidráulico CPVC 1-1/4" cimentación |  | 1d | 2026-06-10 | 2026-06-11 | 1199 |  |  | 2026-06-10 | 2026-06-11 | 1d | 3d | 0d |
| 1206 | 1.6.4.10 | Ramaleo hidráulico CPVC 1 cimentación |  | 1d | 2026-06-10 | 2026-06-11 | 1199, 1205SS |  |  | 2026-06-10 | 2026-06-11 | 1d | 3d | 0d |
| 1207 | 1.6.4.11 | Ramaleo hidráulico CPVC 3/4 cimentación |  | 2d | 2026-06-11 | 2026-06-13 | 1206 |  |  | 2026-06-11 | 2026-06-13 | 2d | 3d | 0d |
| 1208 | 1.6.4.12 | Ramaleo hidráulico CPVC 1/2 cimentación |  | 2d | 2026-06-13 | 2026-06-16 | 1207 |  |  | 2026-06-13 | 2026-06-16 | 2d | 3d | 0d |
| 1209 | 1.6.4.13 | Prueba hidráulica |  | 1d | 2026-06-16 | 2026-06-17 | 1205, 1206, 1207, 1208 |  |  | 2026-06-16 | 2026-06-17 | 1d | 3d | 1d |
| 1210 | 1.6.4.14 | Ramaleo sanitario PVC 4 cimentación |  | 2d | 2026-06-11 | 2026-06-13 | 1199FS+1d |  |  | 2026-06-11 | 2026-06-13 | 2d | 4d | 0d |
| 1211 | 1.6.4.15 | Ramaleo sanitario PVC 2 cimentación |  | 1d | 2026-06-13 | 2026-06-15 | 1210 |  |  | 2026-06-13 | 2026-06-15 | 1d | 4d | 0d |
| 1212 | 1.6.4.16 | Prueba sanitaria |  | 1d | 2026-06-15 | 2026-06-16 | 1210, 1211 |  |  | 2026-06-15 | 2026-06-16 | 1d | 4d | 2d |
| 1213 | 1.6.4.17 | Acero contratrabe CT-1 |  | 4d | 2026-06-09 | 2026-06-13 | 1197 |  |  | 2026-06-09 | 2026-06-13 | 4d | 2d | 0d |
| 1214 | 1.6.4.18 | Acero contratrabe CT-2 |  | 4d | 2026-06-09 | 2026-06-13 | 1197 |  |  | 2026-06-09 | 2026-06-13 | 4d | 2d | 0d |
| 1215 | 1.6.4.19 | Malla electrosoldada 6-6/8-8 |  | 2d | 2026-06-16 | 2026-06-18 | 1213, 1214, 1216, 1217 |  |  | 2026-06-16 | 2026-06-18 | 2d | 2d | 0d |
| 1216 | 1.6.4.20 | Bastón de refuerzo LS |  | 2d | 2026-06-13 | 2026-06-16 | 1213, 1214 |  |  | 2026-06-13 | 2026-06-16 | 2d | 2d | 0d |
| 1217 | 1.6.4.21 | Bastón de refuerzo LI |  | 2d | 2026-06-13 | 2026-06-16 | 1213, 1214 |  |  | 2026-06-13 | 2026-06-16 | 2d | 2d | 0d |
| 1218 | 1.6.4.22 | Colado losa de cimentación f’c=200 |  | 1d | 2026-06-18 | 2026-06-19 | 1197, 1199, 1202, 1203, 1204, 1209, 1212, 1213, 1214, 1215, 1216, 1217, 1220, 1221 |  |  | 2026-06-18 | 2026-06-19 | 1d | 2d | 0d |
| 1219 | 1.6.4.23 | Curado de concreto |  | 1d | 2026-06-19 | 2026-06-22 | 1218 |  |  | 2026-06-19 | 2026-06-22 | 1d | 2d | 0d |
| 1220 | 1.6.4.24 | Acero zapata ZT-1 |  | 4d | 2026-06-13 | 2026-06-18 | 1213, 1214 |  |  | 2026-06-13 | 2026-06-18 | 4d | 2d | 0d |
| 1221 | 1.6.4.25 | Acero zapata ZT-2 |  | 4d | 2026-06-13 | 2026-06-18 | 1213, 1214 |  |  | 2026-06-13 | 2026-06-18 | 4d | 2d | 0d |

| ID | WBS | Task | Duration | Start | Finish | Predecessors | Baseline start | Baseline finish | Baseline duration | Total slack | Free slack |
| --- | --- | --- | --- | --- | --- | --- | --- | --- | --- | --- | --- |
| 1222 | 1.6.5 | **MUROS, PLANTA BAJA. CASTILLOS Y CERRAMIENTOS** | 20d | 2026-06-15 | 2026-07-09 |  | 2026-06-15 | 2026-07-09 | 20d | 7d |  |
| 1223 | 1.6.5.1 | Anclaje de castillos y Columnas PB | 5d | 2026-06-15 | 2026-06-22 | 1213FS+1d, 1214FS+1d | 2026-06-15 | 2026-06-22 | 5d | 153d | 0d |
| 1224 | 1.6.5.2 | Castillo K1 | 4d | 2026-06-22 | 2026-06-26 | 1219, 1223 | 2026-06-22 | 2026-06-26 | 4d | 153d | 0d |
| 1225 | 1.6.5.3 | Castillo K3 | 3d | 2026-06-24 | 2026-06-27 | 1224FS-2d | 2026-06-24 | 2026-06-27 | 3d | 153d | 0d |
| 1226 | 1.6.5.4 | Castillo K4 | 3d | 2026-06-24 | 2026-06-27 | 1224FS-2d | 2026-06-24 | 2026-06-27 | 3d | 153d | 0d |
| 1227 | 1.6.5.5 | Castillo K5 | 3d | 2026-06-26 | 2026-06-30 | 1225FS-1d, 1226FS-1d | 2026-06-26 | 2026-06-30 | 3d | 153d | 0d |
| 1228 | 1.6.5.6 | Refuerzo de muro K6 | 3d | 2026-06-27 | 2026-07-01 | 1227FS-2d | 2026-06-27 | 2026-07-01 | 3d | 153d | 0d |
| 1229 | 1.6.5.7 | Dala de cerramiento CR-1 | 4d | 2026-06-27 | 2026-07-02 | 1224, 1225 | 2026-06-27 | 2026-07-02 | 4d | 156d |  |
| 1230 | 1.6.5.8 | Dala de cerramiento CR-2 | 3d | 2026-06-27 | 2026-07-01 | 1224, 1225 | 2026-06-27 | 2026-07-01 | 3d | 157d |  |
| 1231 | 1.6.5.9 | Cadena block dala | 4d | 2026-07-01 | 2026-07-06 | 1228 | 2026-07-01 | 2026-07-06 | 4d | 153d |  |
| 1232 | 1.6.5.10 | Muro de ladrillo aparente | 15d | 2026-06-22 | 2026-07-09 | 1219 | 2026-06-22 | 2026-07-09 | 15d | 2d | 0d |
| 1233 | 1.6.5.11 | Muro de block planta baja | 13d | 2026-06-24 | 2026-07-09 | 1219FS+2d | 2026-06-24 | 2026-07-09 | 13d | 2d | 0d |
| 1234 | 1.6.5.12 | Ramaleo electrico en Muros Planta Baja | 4d | 2026-06-27 | 2026-07-02 | 1232SS+5d | 2026-06-27 | 2026-07-02 | 4d | 5d | 0d |
| 1235 | 1.6.5.13 | Ramaleo para cable poliducto 3/4 | 2d | 2026-07-02 | 2026-07-04 | 1234 | 2026-07-02 | 2026-07-04 | 2d | 5d | 0d |
| 1236 | 1.6.5.14 | Ramaleo para TV poliducto 3/4 | 3d | 2026-07-06 | 2026-07-08 | 1235 | 2026-07-06 | 2026-07-08 | 3d | 5d | 2d |
| 1237 | 1.6.6 | **ESCALERA** | 10d | 2026-07-28 | 2026-08-08 |  | 2026-07-28 | 2026-08-08 | 10d | 79d |  |
| 1238 | 1.6.6.1 | Escalera de concreto armado | 10d | 2026-07-28 | 2026-08-08 | 1254 | 2026-07-28 | 2026-08-08 | 10d | 79d | 77d |
| 1239 | 1.6.7 | **LOSA DE ENTREPISO (viegueta y caseton)** | 17d | 2026-07-08 | 2026-07-29 |  | 2026-07-08 | 2026-07-29 | 17d | 5d |  |
| 1240 | 1.6.7.1 | Dala de coronamiento 10cm | 3d | 2026-07-16 | 2026-07-20 | 1256FS-1d, 1242, 1243, 1244, 1245, 1246, 1247 | 2026-07-16 | 2026-07-20 | 3d | 5d | 3d |
| 1241 | 1.6.7.2 | Dala de coronamiento 12cm | 3d | 2026-07-17 | 2026-07-21 | 1256, 1242, 1243, 1244, 1245, 1246, 1247 | 2026-07-17 | 2026-07-21 | 3d | 4d | 2d |
| 1242 | 1.6.7.3 | Trabe TR-1 | 3d | 2026-07-08 | 2026-07-10 | 1232FS-2d, 1233FS-2d | 2026-07-08 | 2026-07-10 | 3d | 6d | 4d |
| 1243 | 1.6.7.4 | Trabe TR-2 | 4d | 2026-07-09 | 2026-07-14 | 1232FS-1d, 1233FS-1d | 2026-07-09 | 2026-07-14 | 4d | 4d | 2d |
| 1244 | 1.6.7.5 | Nervadura NR-1 | 4d | 2026-07-10 | 2026-07-15 | 1232, 1233 | 2026-07-10 | 2026-07-15 | 4d | 3d | 1d |
| 1245 | 1.6.7.6 | Nervadura NR-2 | 4d | 2026-07-11 | 2026-07-16 | 1232FS+1d, 1233FS+1d | 2026-07-11 | 2026-07-16 | 4d | 2d | 0d |
| 1246 | 1.6.7.7 | Nervadura NR-3 | 4d | 2026-07-11 | 2026-07-16 | 1232FS+1d, 1233FS+1d | 2026-07-11 | 2026-07-16 | 4d | 2d | 0d |
| 1247 | 1.6.7.8 | Nervadura NR-4 | 4d | 2026-07-11 | 2026-07-16 | 1232FS+1d, 1233FS+1d | 2026-07-11 | 2026-07-16 | 4d | 2d | 0d |
| 1248 | 1.6.7.9 | Acero de refuerzo en nervios #3 | 2d | 2026-07-16 | 2026-07-18 | 1242, 1243, 1244, 1245, 1246, 1247 | 2026-07-16 | 2026-07-18 | 2d | 2d | 0d |
| 1249 | 1.6.7.10 | Acero de refuerzo long. #3 | 3d | 2026-07-17 | 2026-07-21 | 1242, 1243, 1244, 1245, 1246, 1247, 1256 | 2026-07-17 | 2026-07-21 | 3d | 3d | 0d |
| 1250 | 1.6.7.11 | Acero de refuerzo long. #4 | 3d | 2026-07-17 | 2026-07-21 | 1249SS | 2026-07-17 | 2026-07-21 | 3d | 3d | 0d |
| 1251 | 1.6.7.12 | Malla 66-10/10 losa de compresión | 2d | 2026-07-23 | 2026-07-27 | 1240, 1241, 1248, 1261, 1264, 1253 | 2026-07-23 | 2026-07-27 | 2d | 2d | 0d |
| 1252 | 1.6.7.13 | Acero de Losa Maciza | 3d | 2026-07-16 | 2026-07-20 | 1244, 1245, 1246, 1247 | 2026-07-16 | 2026-07-20 | 3d | 7d | 5d |
| 1253 | 1.6.7.14 | Caseton de 60x60x20cm | 2d | 2026-07-16 | 2026-07-18 | 1244, 1245, 1246, 1247 | 2026-07-16 | 2026-07-18 | 2d | 6d | 4d |
| 1254 | 1.6.7.15 | Concreto losa de entrepiso f’c=200 | 1d | 2026-07-27 | 2026-07-28 | 1249, 1250, 1251, 1252, 1261, 1264, 1257, 1266 | 2026-07-27 | 2026-07-28 | 1d | 2d | 0d |
| 1255 | 1.6.7.16 | Curado de concreto | 1d | 2026-07-28 | 2026-07-29 | 1254 | 2026-07-28 | 2026-07-29 | 1d | 2d | 0d |
| 1256 | 1.6.7.17 | Cimbra losa de azotea | 5d | 2026-07-11 | 2026-07-17 | 1232FS+1d, 1233FS+1d, 1236 | 2026-07-11 | 2026-07-17 | 5d | 3d | 0d |
| 1257 | 1.6.7.18 | Cimbra exterior corta losa | 3d | 2026-07-20 | 2026-07-23 | 1249FS-1d, 1250FS-1d | 2026-07-20 | 2026-07-23 | 3d | 4d | 2d |
| 1258 | 1.6.7.19 | Ramaleo poliducto eléctrico entrepiso | 2d | 2026-07-18 | 2026-07-21 | 1248 | 2026-07-18 | 2026-07-21 | 2d | 141d |  |
| 1259 | 1.6.7.20 | Ramaleo hidráulico CPVC 3/4" | 2d | 2026-07-20 | 2026-07-22 | 1248FS+1d | 2026-07-20 | 2026-07-22 | 2d | 2d | 0d |
| 1260 | 1.6.7.21 | Ramaleo hidráulico CPVC 1/2" | 1d | 2026-07-22 | 2026-07-23 | 1259 | 2026-07-22 | 2026-07-23 | 1d | 2d | 0d |
| 1261 | 1.6.7.22 | Prueba hidráulica | 1d | 2026-07-22 | 2026-07-23 | 1259, 1260FS-1d | 2026-07-22 | 2026-07-23 | 1d | 2d | 0d |
| 1262 | 1.6.7.23 | Ramaleo sanitario PVC 4" | 2d | 2026-07-20 | 2026-07-22 | 1248FS+1d | 2026-07-20 | 2026-07-22 | 2d | 2d | 0d |
| 1263 | 1.6.7.24 | Ramaleo sanitario PVC 2" | 1d | 2026-07-22 | 2026-07-23 | 1262 | 2026-07-22 | 2026-07-23 | 1d | 2d | 0d |
| 1264 | 1.6.7.25 | Prueba sanitaria | 1d | 2026-07-22 | 2026-07-23 | 1262, 1263FS-1d | 2026-07-22 | 2026-07-23 | 1d | 2d | 0d |

| ID | WBS | Task | Duration | Start | Finish | Predecessors | Baseline start | Baseline finish | Baseline duration | Total slack | Free slack |
| --- | --- | --- | --- | --- | --- | --- | --- | --- | --- | --- | --- |
| 1265 | 1.6.8 | **MUROS EN PLANTA ALTA, CASTILLOS Y CERRM.** | 22d | 2026-07-20 | 2026-08-17 |  | 2026-07-20 | 2026-08-17 | 22d | 3d |  |
| 1266 | 1.6.8.1 | Anclaje de castillos y Columnas PA | 4d | 2026-07-20 | 2026-07-24 | 1249FS-1d, 1250FS-1d | 2026-07-20 | 2026-07-24 | 4d | 3d | 1d |
| 1267 | 1.6.8.2 | Castillo K1 | 4d | 2026-07-29 | 2026-08-03 | 1255 | 2026-07-29 | 2026-08-03 | 4d | 6d | 0d |
| 1268 | 1.6.8.3 | Castillo K2 | 4d | 2026-07-30 | 2026-08-04 | 1255FS+1d | 2026-07-30 | 2026-08-04 | 4d | 5d | 0d |
| 1269 | 1.6.8.4 | Castillo K4 | 3d | 2026-08-03 | 2026-08-06 | 1267 | 2026-08-03 | 2026-08-06 | 3d | 6d | 1d |
| 1270 | 1.6.8.5 | Castillo K5 | 3d | 2026-08-03 | 2026-08-06 | 1267 | 2026-08-03 | 2026-08-06 | 3d | 6d | 1d |
| 1271 | 1.6.8.6 | Castillo K6 | 3d | 2026-08-03 | 2026-08-06 | 1267 | 2026-08-03 | 2026-08-06 | 3d | 6d | 1d |
| 1272 | 1.6.8.7 | Refuerzo de muro | 3d | 2026-08-04 | 2026-08-07 | 1267, 1268 | 2026-08-04 | 2026-08-07 | 3d | 5d | 0d |
| 1273 | 1.6.8.8 | Dala de cerramiento CR-1 | 4d | 2026-08-07 | 2026-08-12 | 1269, 1270, 1271, 1272 | 2026-08-07 | 2026-08-12 | 4d | 5d | 0d |
| 1274 | 1.6.8.9 | Dala de cerramiento CR-2 | 4d | 2026-08-07 | 2026-08-12 | 1269, 1270, 1271, 1272 | 2026-08-07 | 2026-08-12 | 4d | 5d | 0d |
| 1275 | 1.6.8.10 | Cadena block dala | 3d | 2026-08-12 | 2026-08-17 | 1272, 1273, 1274 | 2026-08-12 | 2026-08-17 | 3d | 5d | 0d |
| 1276 | 1.6.8.11 | Muro de ladrillo aparente | 15d | 2026-07-29 | 2026-08-17 | 1255 | 2026-07-29 | 2026-08-17 | 15d | 2d | 0d |
| 1277 | 1.6.8.12 | Muro de block planta alta | 14d | 2026-07-30 | 2026-08-17 | 1255FS+1d | 2026-07-30 | 2026-08-17 | 14d | 2d | 0d |
| 1278 | 1.6.8.13 | Ramaleo electrico en Muros Planta Alta | 4d | 2026-08-07 | 2026-08-12 | 1276SS+8d | 2026-08-07 | 2026-08-12 | 4d | 13d | 3d |
| 1279 | 1.6.9 | **LOSA AZOTEA** | 15d | 2026-08-17 | 2026-09-03 |  | 2026-08-17 | 2026-09-03 | 15d | 2d |  |
| 1280 | 1.6.9.1 | Cortalosa CL-1 | 2d | 2026-08-31 | 2026-09-01 | 1292 | 2026-08-31 | 2026-09-01 | 2d | 2d | 0d |
| 1281 | 1.6.9.2 | Cortalosa CL-2 | 2d | 2026-08-31 | 2026-09-01 | 1292 | 2026-08-31 | 2026-09-01 | 2d | 2d | 0d |
| 1282 | 1.6.9.3 | Vigueta pretensada V11-30 125 | 5d | 2026-08-17 | 2026-08-22 | 1275, 1276, 1277 | 2026-08-17 | 2026-08-22 | 5d | 5d | 3d |
| 1283 | 1.6.9.4 | Vigueta pretensada V11-30 185 | 5d | 2026-08-17 | 2026-08-22 | 1276, 1277 | 2026-08-17 | 2026-08-22 | 5d | 5d | 3d |
| 1284 | 1.6.9.5 | Vigueta pretensada V11-30 190 | 5d | 2026-08-17 | 2026-08-22 | 1276, 1277 | 2026-08-17 | 2026-08-22 | 5d | 5d | 3d |
| 1285 | 1.6.9.6 | Vigueta pretensada V11-30 205 | 5d | 2026-08-19 | 2026-08-25 | 1276FS+2d, 1277FS+2d | 2026-08-19 | 2026-08-25 | 5d | 3d | 1d |
| 1286 | 1.6.9.7 | Vigueta pretensada V11-30 215 | 5d | 2026-08-19 | 2026-08-25 | 1276FS+2d, 1277FS+2d | 2026-08-19 | 2026-08-25 | 5d | 3d | 1d |
| 1287 | 1.6.9.8 | Vigueta pretensada V11-30 260 | 5d | 2026-08-20 | 2026-08-26 | 1276FS+3d, 1277FS+3d | 2026-08-20 | 2026-08-26 | 5d | 2d | 0d |
| 1288 | 1.6.9.9 | Vigueta pretensada V11-30 285 | 5d | 2026-08-20 | 2026-08-26 | 1276FS+3d, 1277FS+3d | 2026-08-20 | 2026-08-26 | 5d | 2d | 0d |
| 1289 | 1.6.9.10 | Vigueta pretensada V11-40 330 | 5d | 2026-08-20 | 2026-08-26 | 1276FS+3d, 1277 | 2026-08-20 | 2026-08-26 | 5d | 2d | 0d |
| 1290 | 1.6.9.11 | Vigueta pretensada V11-40 335 | 5d | 2026-08-20 | 2026-08-26 | 1276FS+3d, 1277 | 2026-08-20 | 2026-08-26 | 5d | 2d | 0d |
| 1291 | 1.6.9.12 | Vigueta pretensada V11-40 505 | 5d | 2026-08-20 | 2026-08-26 | 1276FS+3d, 1277 | 2026-08-20 | 2026-08-26 | 5d | 2d | 0d |
| 1292 | 1.6.9.13 | Bovedilla poliestireno azotea | 3d | 2026-08-26 | 2026-08-29 | 1282, 1283, 1284, 1285, 1286, 1287, 1288, 1289, 1290, 1291 | 2026-08-26 | 2026-08-29 | 3d | 2d | 0d |
| 1293 | 1.6.9.14 | Malla 66-10/10 losa de compresión | 2d | 2026-08-31 | 2026-09-01 | 1292 | 2026-08-31 | 2026-09-01 | 2d | 2d | 0d |
| 1294 | 1.6.9.15 | Concreto losa de azotea f’c=200 | 1d | 2026-09-02 | 2026-09-02 | 1280, 1281, 1292, 1293, 1297, 1296 | 2026-09-02 | 2026-09-02 | 1d | 2d | 0d |
| 1295 | 1.6.9.16 | Curado de concreto | 1d | 2026-09-03 | 2026-09-03 | 1294 | 2026-09-03 | 2026-09-03 | 1d | 2d | 0d |
| 1296 | 1.6.9.17 | Cimbra losa de azotea | 5d | 2026-08-17 | 2026-08-22 | 1276, 1277, 1278 | 2026-08-17 | 2026-08-22 | 5d | 10d | 8d |
| 1297 | 1.6.9.18 | Ramaleo de poliducto para inst. electrica en azotea | 2d | 2026-08-31 | 2026-09-01 | 1292 | 2026-08-31 | 2026-09-01 | 2d | 2d | 0d |

| ID | WBS | Task | Duration | Start | Finish | Predecessors | Baseline start | Baseline finish | Baseline duration | Total slack | Free slack |
| --- | --- | --- | --- | --- | --- | --- | --- | --- | --- | --- | --- |
| 1298 | 1.6.10 | **PRETIL Y ACABADOS DE AZOTEA** | 19d | 2026-09-04 | 2026-09-29 |  | 2026-09-04 | 2026-09-29 | 19d | 2d |  |
| 1299 | 1.6.10.1 | Castillo K1 | 5d | 2026-09-07 | 2026-09-12 | 1301SS+2d | 2026-09-07 | 2026-09-12 | 5d | 2d | 0d |
| 1300 | 1.6.10.2 | Dala de cerramiento en pretil | 4d | 2026-09-10 | 2026-09-15 | 1299FS-2d, 1301FS-2d | 2026-09-10 | 2026-09-15 | 4d | 2d | 0d |
| 1301 | 1.6.10.3 | Muro de block 12x15x40 | 5d | 2026-09-04 | 2026-09-10 | 1295 | 2026-09-04 | 2026-09-10 | 5d | 2d | 0d |
| 1302 | 1.6.10.4 | Chaflán en azotea | 4d | 2026-09-12 | 2026-09-18 | 1299, 1301 | 2026-09-12 | 2026-09-18 | 4d | 2d | 0d |
| 1303 | 1.6.10.5 | Diamante de entortado | 4d | 2026-09-12 | 2026-09-18 | 1299, 1301 | 2026-09-12 | 2026-09-18 | 4d | 2d | 0d |
| 1304 | 1.6.10.6 | Aplanado exterior Mortermax fino | 5d | 2026-09-15 | 2026-09-23 | 1300, 1302FS-2d, 1303FS-2d | 2026-09-15 | 2026-09-23 | 5d | 2d | 0d |
| 1305 | 1.6.10.7 | Entortado de Losa | 4d | 2026-09-24 | 2026-09-29 | 1306 | 2026-09-24 | 2026-09-29 | 4d | 2d | 0d |
| 1306 | 1.6.10.8 | Curado de concreto | 1d | 2026-09-23 | 2026-09-24 | 1302, 1304 | 2026-09-23 | 2026-09-24 | 1d | 2d | 0d |
| 1307 | 1.6.11 | **PRIMERA LIMPIEZA DE OBRA** | 4d | 2026-09-04 | 2026-09-09 |  | 2026-09-04 | 2026-09-09 | 4d | 62d |  |
| 1308 | 1.6.11.1 | Primera limpieza de obra | 2d | 2026-09-04 | 2026-09-07 | 1295 | 2026-09-04 | 2026-09-07 | 2d | 62d | 0d |
| 1309 | 1.6.11.2 | Primera carga y acarreo de escombro | 2d | 2026-09-07 | 2026-09-09 | 1308 | 2026-09-07 | 2026-09-09 | 2d | 62d | 1d |
| 1310 | 1.6.12 | **IMPERMEABILIZACION** | 5d | 2026-09-29 | 2026-10-05 |  | 2026-09-29 | 2026-10-05 | 5d | 2d |  |
| 1311 | 1.6.12.1 | Impermeabilización de pretil Kover 5 años | 4d | 2026-09-29 | 2026-10-03 | 1305 | 2026-09-29 | 2026-10-03 | 4d | 3d | 1d |
| 1312 | 1.6.12.2 | Impermeabilización de losa Kover 5 años | 5d | 2026-09-29 | 2026-10-05 | 1305 | 2026-09-29 | 2026-10-05 | 5d | 2d | 0d |
| 1313 | 1.6.13 | **ALBAÑILERIA** | 62d | 2026-09-10 | 2026-11-28 |  | 2026-09-10 | 2026-11-28 | 62d | 21d |  |
| 1314 | 1.6.13.1 | Lavadero de granito | 4d | 2026-10-26 | 2026-10-29 | 1350SS+8d | 2026-10-26 | 2026-10-29 | 4d | 61d |  |
| 1315 | 1.6.13.2 | Ranurado y resane general inst. en muros | 3d | 2026-10-02 | 2026-10-06 | 1312FS-2d | 2026-10-02 | 2026-10-06 | 3d | 4d | 1d |
| 1316 | 1.6.13.3 | Ranurado y resane eléctrico 1/2 a 3/4 | 3d | 2026-10-02 | 2026-10-06 | 1312FS-2d | 2026-10-02 | 2026-10-06 | 3d | 4d | 1d |
| 1317 | 1.6.13.4 | Ranurado y resane hidráulico 1/2 a 1 | 2d | 2026-10-05 | 2026-10-07 | 1312 | 2026-10-05 | 2026-10-07 | 2d | 3d | 0d |
| 1318 | 1.6.13.5 | Resane sanitario tubería 2 | 2d | 2026-10-05 | 2026-10-07 | 1312 | 2026-10-05 | 2026-10-07 | 2d | 3d | 0d |
| 1319 | 1.6.13.6 | Resane sanitario tubería 4 | 2d | 2026-10-05 | 2026-10-07 | 1312 | 2026-10-05 | 2026-10-07 | 2d | 3d | 0d |
| 1320 | 1.6.13.7 | Resane minisplit tubería 3 | 2d | 2026-10-05 | 2026-10-07 | 1312 | 2026-10-05 | 2026-10-07 | 2d | 3d | 0d |
| 1321 | 1.6.13.8 | Ramaleo hidráulico exterior CPVC 1 1/4 | 3d | 2026-10-05 | 2026-10-08 | 1311, 1312 | 2026-10-05 | 2026-10-08 | 3d | 2d | 0d |
| 1322 | 1.6.13.9 | Ramaleo hidráulico exterior CPVC 1 | 2d | 2026-10-05 | 2026-10-07 | 1321SS | 2026-10-05 | 2026-10-07 | 2d | 2d | 0d |
| 1323 | 1.6.13.10 | Ramaleo hidráulico exterior CPVC 3/4 | 2d | 2026-10-07 | 2026-10-09 | 1322 | 2026-10-07 | 2026-10-09 | 2d | 2d | 0d |
| 1324 | 1.6.13.11 | Ramaleo hidráulico exterior CPVC 1/2 | 2d | 2026-10-07 | 2026-10-09 | 1322 | 2026-10-07 | 2026-10-09 | 2d | 2d | 0d |
| 1325 | 1.6.13.12 | Prueba hidráulica | 1d | 2026-10-09 | 2026-10-12 | 1317, 1321, 1322, 1323, 1324 | 2026-10-09 | 2026-10-12 | 1d | 2d | 0d |
| 1326 | 1.6.13.13 | Ramaleo sanitario exterior PVC 4 | 4d | 2026-10-05 | 2026-10-09 | 1311, 1312 | 2026-10-05 | 2026-10-09 | 4d | 2d | 0d |
| 1327 | 1.6.13.14 | Ramaleo sanitario exterior PVC 2 | 3d | 2026-10-06 | 2026-10-09 | 1326SS+1d | 2026-10-06 | 2026-10-09 | 3d | 2d | 0d |
| 1328 | 1.6.13.15 | Prueba sanitaria | 1d | 2026-10-09 | 2026-10-12 | 1318, 1319, 1320, 1326, 1327 | 2026-10-09 | 2026-10-12 | 1d | 2d | 0d |
| 1329 | 1.6.13.16 | Centro de carga muros PB | 4d | 2026-10-08 | 2026-10-14 | 1311FS+3d, 1312FS+3d | 2026-10-08 | 2026-10-14 | 4d | 4d | 2d |
| 1330 | 1.6.13.17 | Firme de concreto 8 cm | 4d | 2026-10-12 | 2026-10-16 | 1325, 1328, 1332 | 2026-10-12 | 2026-10-16 | 4d | 55d | 0d |
| 1331 | 1.6.13.18 | Curado de concreto | 1d | 2026-10-16 | 2026-10-17 | 1330 | 2026-10-16 | 2026-10-17 | 1d | 55d | 17d |
| 1332 | 1.6.13.19 | Cisterna 2800 L con instalación | 18d | 2026-09-10 | 2026-10-03 | 1301, 1308, 1309 | 2026-09-10 | 2026-10-03 | 18d | 61d | 0d |
| 1333 | 1.6.13.20 | Banqueta y huellas de concreto | 8d | 2026-10-19 | 2026-10-28 | 1325, 1328, 1375, 1443FS-2d, 1452, 1444 | 2026-10-19 | 2026-10-28 | 8d | 38d | 0d |
| 1334 | 1.6.13.21 | Curado de concreto | 1d | 2026-10-29 | 2026-10-29 | 1333 | 2026-10-29 | 2026-10-29 | 1d | 38d | 0d |
| 1335 | 1.6.13.22 | Número oficial | 1d | 2026-11-27 | 2026-11-28 | 1343, 1344 | 2026-11-27 | 2026-11-28 | 1d | 38d |  |
| 1336 | 1.6.13.23 | Detallado de rodapié exterior | 4d | 2026-10-14 | 2026-10-19 | 1341 | 2026-10-14 | 2026-10-19 | 4d | 70d |  |
| 1337 | 1.6.13.24 | Detalle de losas y volados acabado fino | 4d | 2026-10-05 | 2026-10-09 | 1311, 1312 | 2026-10-05 | 2026-10-09 | 4d | 6d | 4d |
| 1338 | 1.6.13.25 | Detalle fino en muros interiores | 5d | 2026-10-07 | 2026-10-14 | 1315, 1316, 1317, 1318, 1319, 1320 | 2026-10-07 | 2026-10-14 | 5d | 3d | 1d |
| 1339 | 1.6.13.26 | Jardín interior bajo escalera con pozo de absorción | 12d | 2026-10-05 | 2026-10-20 | 1318FS-2d, 1319FS-2d, 1320FS-2d | 2026-10-05 | 2026-10-20 | 12d | 6d | 0d |

| ID | WBS | Task | Duration | Start | Finish | Predecessors | Baseline start | Baseline finish | Baseline duration | Total slack | Free slack |
| --- | --- | --- | --- | --- | --- | --- | --- | --- | --- | --- | --- |
| 1340 | 1.6.14 | **ACABADOS EN FACHADA A** | 47d | 2026-09-29 | 2026-11-27 |  | 2026-09-29 | 2026-11-27 | 47d | 38d |  |
| 1341 | 1.6.14.1 | Aplanado grueso fachada | 12d | 2026-09-29 | 2026-10-14 | 1305 | 2026-09-29 | 2026-10-14 | 12d | 44d | 0d |
| 1342 | 1.6.14.2 | Aplanado fino estuco fachada | 10d | 2026-10-07 | 2026-10-20 | 1341SS+7d | 2026-10-07 | 2026-10-20 | 10d | 44d | 0d |
| 1343 | 1.6.14.3 | Pintura acrílica 1-0102P | 8d | 2026-11-13 | 2026-11-25 | 1331FS+5d, 1334FS+12d, 1345, 1348 | 2026-11-13 | 2026-11-25 | 8d | 40d | 2d |
| 1344 | 1.6.14.4 | Pintura acrílica 1-1404D | 10d | 2026-11-13 | 2026-11-27 | 1331FS+5d, 1334FS+12d, 1345, 1348 | 2026-11-13 | 2026-11-27 | 10d | 38d | 0d |
| 1345 | 1.6.14.5 | Cantera 40x60cm | 14d | 2026-10-20 | 2026-11-06 | 1341, 1342 | 2026-10-20 | 2026-11-06 | 14d | 44d | 6d |
| 1346 | 1.6.14.6 | Lambrin de permabase 1 cara | 3d | 2026-10-14 | 2026-10-17 | 1341 | 2026-10-14 | 2026-10-17 | 3d | 51d | 0d |
| 1347 | 1.6.14.7 | Enchapado de Permabase | 4d | 2026-10-17 | 2026-10-22 | 1346 | 2026-10-17 | 2026-10-22 | 4d | 51d | 0d |
| 1348 | 1.6.14.8 | Cubierta de Permabase | 5d | 2026-10-22 | 2026-10-28 | 1347 | 2026-10-22 | 2026-10-28 | 5d | 51d | 13d |
| 1349 | 1.6.15 | **APLANADOS Y PINTURA** | 63d | 2026-10-05 | 2026-12-23 |  | 2026-10-05 | 2026-12-23 | 63d | 4d |  |
| 1350 | 1.6.15.1 | Yeso pulido en muros | 14d | 2026-10-15 | 2026-11-02 | 1315, 1316, 1329FS-1d, 1337, 1338, 1339FS-8d, 1355FS-4d, 1421FS-2d, 1424, 1425, 1426, 1427, 1428FS-1d, 1429FS-1d, 1430FS-1d, 1431FS-1d, 1432FS-2d, 1433FS-2d, 1434FS-3d, 1437FS-1d, 1438FS-5d, 1439FS-5d, 1440FS-6d, 1441FS-2d, 1442FS-7d, 1351 | 2026-10-15 | 2026-11-02 | 14d | 2d | 0d |
| 1351 | 1.6.15.2 | Aplanado en muros enjarre grueso | 5d | 2026-10-05 | 2026-10-12 | 1311, 1312 | 2026-10-05 | 2026-10-12 | 5d | 5d | 3d |
| 1352 | 1.6.15.3 | Pintura vinílica OR-W13 SHOELACE | 13d | 2026-12-08 | 2026-12-23 | 1359FS-2d, 1360FS-2d, 1373FS-2d, 1380, 1381, 1382, 1383, 1384, 1385, 1391, 1392, 1393, 1394, 1455, 1456, 1458, 1459, 1388, 1389, 1386, 1387, 1395 | 2026-12-08 | 2026-12-23 | 13d | 2d | 0d |
| 1353 | 1.6.15.4 | Pintura vinílica PPUI5-13 Creamy M. | 10d | 2026-12-01 | 2026-12-14 | 1359, 1360, 1373, 1403, 1404, 1399, 1397 | 2026-12-01 | 2026-12-14 | 10d | 10d | 8d |
| 1354 | 1.6.15.5 | Pintura vinílica MD-06 Nano White | 8d | 2026-12-01 | 2026-12-11 | 1359, 1360, 1373, 1403, 1404, 1399, 1397 | 2026-12-01 | 2026-12-11 | 8d | 12d | 10d |
| 1355 | 1.6.15.6 | Yeso pulido en plafones | 10d | 2026-10-05 | 2026-10-17 | 1311, 1312 | 2026-10-05 | 2026-10-17 | 10d | 4d | 2d |
| 1356 | 1.6.15.7 | Perfilado de puertas y ventanas | 4d | 2026-10-20 | 2026-10-24 | 1350SS+4d | 2026-10-20 | 2026-10-24 | 4d | 65d |  |
| 1357 | 1.6.16 | **PISOS Y AZULEJOS** | 24d | 2026-10-27 | 2026-11-26 |  | 2026-10-27 | 2026-11-26 | 24d | 2d |  |
| 1358 | 1.6.16.1 | **AREA SOCIAL** | 15d | 2026-10-30 | 2026-11-19 |  | 2026-10-30 | 2026-11-19 | 15d | 2d |  |
| 1359 | 1.6.16.1.1 | Piso Adhara 44X89 | 14d | 2026-10-30 | 2026-11-18 | 1350FS-2d, 1446, 1445, 1362FS-5d | 2026-10-30 | 2026-11-18 | 14d | 2d | 0d |
| 1360 | 1.6.16.1.2 | Zoclo Adhara 44X89 | 5d | 2026-11-11 | 2026-11-19 | 1359FS-4d | 2026-11-11 | 2026-11-19 | 5d | 19d | 10d |
| 1361 | 1.6.16.2 | **RECAMARAS** | 8d | 2026-10-27 | 2026-11-05 |  | 2026-10-27 | 2026-11-05 | 8d | 2d |  |
| 1362 | 1.6.16.2.1 | Acabado aparente de pisos - pulido | 8d | 2026-10-27 | 2026-11-05 | 1350FS-5d | 2026-10-27 | 2026-11-05 | 8d | 2d | 0d |
| 1363 | 1.6.16.3 | **BAÑOS** | 17d | 2026-10-28 | 2026-11-19 |  | 2026-10-28 | 2026-11-19 | 17d | 13d |  |
| 1364 | 1.6.16.3.1 | Azulejo Mod. Ornamenta 60x30 | 5d | 2026-11-05 | 2026-11-11 | 1365FS-1d, 1435, 1436, 1446 | 2026-11-05 | 2026-11-11 | 5d | 13d | 0d |
| 1365 | 1.6.16.3.2 | Impermeabilización en regadera | 2d | 2026-11-04 | 2026-11-06 | 1350, 1369 | 2026-11-04 | 2026-11-06 | 2d | 13d | 0d |
| 1366 | 1.6.16.3.3 | Piso Mod. Valparaiso 20x20 | 4d | 2026-11-11 | 2026-11-18 | 1364 | 2026-11-11 | 2026-11-18 | 4d | 13d | 0d |
| 1367 | 1.6.16.3.4 | Zoclo Adhara 44X89 | 2d | 2026-11-17 | 2026-11-19 | 1366FS-1d | 2026-11-17 | 2026-11-19 | 2d | 46d |  |
| 1368 | 1.6.16.3.5 | Piso Adhara 44X89 | 3d | 2026-11-11 | 2026-11-17 | 1364 | 2026-11-11 | 2026-11-17 | 3d | 48d |  |
| 1369 | 1.6.16.3.6 | Fabricacion de nicho decorativo en baños | 6d | 2026-10-28 | 2026-11-04 | 1350FS-4d | 2026-10-28 | 2026-11-04 | 6d | 13d | 0d |
| 1370 | 1.6.16.3.7 | Sardinel en regadera | 4d | 2026-11-11 | 2026-11-18 | 1364 | 2026-11-11 | 2026-11-18 | 4d | 47d |  |

| ID | WBS | Task | Duration | Start | Finish | Predecessors | Baseline start | Baseline finish | Baseline duration | Total slack | Free slack |
| --- | --- | --- | --- | --- | --- | --- | --- | --- | --- | --- | --- |
| 1371 | 1.6.16.4 | **ESCALERA** | 9d | 2026-11-13 | 2026-11-26 |  | 2026-11-13 | 2026-11-26 | 9d | 2d |  |
| 1372 | 1.6.16.4.1 | Piso Adhara 44X89 | 7d | 2026-11-13 | 2026-11-24 | 1238, 1350, 1359FS-2d | 2026-11-13 | 2026-11-24 | 7d | 2d | 0d |
| 1373 | 1.6.16.4.2 | Zoclo Adhara 44X89 | 4d | 2026-11-21 | 2026-11-26 | 1372FS-2d | 2026-11-21 | 2026-11-26 | 4d | 2d | 0d |
| 1374 | 1.6.17 | **EXTERIOR** | 3d | 2026-10-12 | 2026-10-15 |  | 2026-10-12 | 2026-10-15 | 3d | 7d |  |
| 1375 | 1.6.17.1 | Rastrilleo, afine y nivelado de tierra | 3d | 2026-10-12 | 2026-10-15 | 1325, 1328 | 2026-10-12 | 2026-10-15 | 3d | 7d | 0d |
| 1376 | 1.6.18 | **SEGUNDA LIMPIEZA DE OBRA** | 4d | 2026-11-26 | 2026-12-01 |  | 2026-11-26 | 2026-12-01 | 4d | 25d |  |
| 1377 | 1.6.18.1 | Segunda limpieza de obra | 2d | 2026-11-26 | 2026-11-28 | 1372, 1373 | 2026-11-26 | 2026-11-28 | 2d | 25d | 0d |
| 1378 | 1.6.18.2 | Segunda carga y acarreo de escombro | 2d | 2026-11-28 | 2026-12-01 | 1377 | 2026-11-28 | 2026-12-01 | 2d | 25d | 23d |
| 1379 | 1.6.19 | **CANCELERIA PUERTAS Y VENTANAS DE ALUMINIO** | 17d | 2026-11-13 | 2026-12-07 |  | 2026-11-13 | 2026-12-07 | 17d | 3d |  |
| 1380 | 1.6.19.1 | Fijo medidas 0.30x4.90m | 7d | 2026-11-18 | 2026-11-26 | 1350, 1359 | 2026-11-18 | 2026-11-26 | 7d | 11d | 9d |
| 1381 | 1.6.19.2 | Ventana Corrediza 1.80x1.60m | 4d | 2026-11-13 | 2026-11-20 | 1350FS+10d | 2026-11-13 | 2026-11-20 | 4d | 16d | 14d |
| 1382 | 1.6.19.3 | Ventana Corrediza 0.60x0.40m | 4d | 2026-11-18 | 2026-11-23 | 1350FS+12d | 2026-11-18 | 2026-11-23 | 4d | 14d | 12d |
| 1383 | 1.6.19.4 | Ventana Corrediza 1.54x0.50m | 4d | 2026-11-18 | 2026-11-23 | 1350FS+12d | 2026-11-18 | 2026-11-23 | 4d | 14d | 12d |
| 1384 | 1.6.19.5 | Fijo medidas 1.40x2.50m | 4d | 2026-11-21 | 2026-11-26 | 1350FS+10d, 1359FS+3d | 2026-11-21 | 2026-11-26 | 4d | 5d | 0d |
| 1385 | 1.6.19.6 | Ventana Corrediza 1.80x1.50m | 4d | 2026-11-24 | 2026-11-28 | 1350FS+7d, 1359FS+2d, 1372 | 2026-11-24 | 2026-11-28 | 4d | 3d | 0d |
| 1386 | 1.6.19.7 | Ventana Corrediza 1.40x1.60m | 4d | 2026-11-24 | 2026-11-28 | 1350, 1359, 1372 | 2026-11-24 | 2026-11-28 | 4d | 3d | 0d |
| 1387 | 1.6.19.8 | Ventana Corrediza 0.95x0.40m | 4d | 2026-11-24 | 2026-11-28 | 1350, 1359, 1372 | 2026-11-24 | 2026-11-28 | 4d | 3d | 0d |
| 1388 | 1.6.19.9 | Puerta corrediza 3.85x2.10m | 6d | 2026-11-26 | 2026-12-03 | 1384 | 2026-11-26 | 2026-12-03 | 6d | 5d | 3d |
| 1389 | 1.6.19.10 | Barandal de Cristal Templado | 6d | 2026-11-28 | 2026-12-07 | 1385, 1386, 1387 | 2026-11-28 | 2026-12-07 | 6d | 3d | 1d |
| 1390 | 1.6.20 | **CARPINTERIA, PUERTAS EXTERIORES E INTERIORES** | 9d | 2026-11-26 | 2026-12-08 |  | 2026-11-26 | 2026-12-08 | 9d | 2d |  |
| 1391 | 1.6.20.1 | Puerta P-01 de seguridad | 5d | 2026-11-26 | 2026-12-02 | 1373 | 2026-11-26 | 2026-12-02 | 5d | 6d | 4d |
| 1392 | 1.6.20.2 | Puerta P-01 interior | 8d | 2026-11-26 | 2026-12-07 | 1373 | 2026-11-26 | 2026-12-07 | 8d | 3d | 1d |
| 1393 | 1.6.20.3 | Puerta P-02 interior | 8d | 2026-11-26 | 2026-12-07 | 1373 | 2026-11-26 | 2026-12-07 | 8d | 3d | 1d |
| 1394 | 1.6.20.4 | Puerta P-03 interior | 4d | 2026-12-02 | 2026-12-08 | 1373FS+5d | 2026-12-02 | 2026-12-08 | 4d | 2d | 0d |
| 1395 | 1.6.20.5 | Puerta P-04 interior | 4d | 2026-12-02 | 2026-12-08 | 1373FS+5d | 2026-12-02 | 2026-12-08 | 4d | 2d | 0d |

| ID | WBS | Task | Duration | Start | Finish | Predecessors | Baseline start | Baseline finish | Baseline duration | Total slack | Free slack |
| --- | --- | --- | --- | --- | --- | --- | --- | --- | --- | --- | --- |
| 1396 | 1.6.21 | **VOLADOS, BARANDAL Y ESCALERA** | 33d | 2026-10-20 | 2026-12-01 |  | 2026-10-20 | 2026-12-01 | 33d | 10d |  |
| 1397 | 1.6.21.1 | Barandal de Herreria en escalera | 4d | 2026-11-06 | 2026-11-11 | 1398FS-4d | 2026-11-06 | 2026-11-11 | 4d | 25d | 15d |
| 1398 | 1.6.21.2 | Escalera de herreria | 18d | 2026-10-20 | 2026-11-11 | 1339 | 2026-10-20 | 2026-11-11 | 18d | 10d | 0d |
| 1399 | 1.6.21.3 | Techumbre en acceso Principal | 14d | 2026-11-05 | 2026-11-24 | 1398FS-5d | 2026-11-05 | 2026-11-24 | 14d | 16d | 6d |
| 1400 | 1.6.21.4 | Techumbre en 1.80x0.50m | 7d | 2026-11-05 | 2026-11-13 | 1398FS-5d | 2026-11-05 | 2026-11-13 | 7d | 10d | 0d |
| 1401 | 1.6.21.5 | Techumbre en 1.40x0.50m | 7d | 2026-11-13 | 2026-11-24 | 1400 | 2026-11-13 | 2026-11-24 | 7d | 10d | 0d |
| 1402 | 1.6.21.6 | Imper con manto prefabricado | 5d | 2026-11-19 | 2026-11-25 | 1400, 1401FS-4d | 2026-11-19 | 2026-11-25 | 5d | 10d | 0d |
| 1403 | 1.6.21.7 | Plafon hoja tablaroca std | 5d | 2026-11-25 | 2026-12-01 | 1402 | 2026-11-25 | 2026-12-01 | 5d | 10d | 0d |
| 1404 | 1.6.21.8 | Acabado Woodstock en parte inf. Cubierta | 5d | 2026-11-25 | 2026-12-01 | 1402 | 2026-11-25 | 2026-12-01 | 5d | 10d | 0d |
| 1405 | 1.6.22 | **INSTALACION ELECTRICA** | 16d | 2026-10-28 | 2026-11-18 |  | 2026-10-28 | 2026-11-18 | 16d | 31d |  |
| 1406 | 1.6.22.1 | Alimentación eléctrica base a centro de carga | 5d | 2026-11-02 | 2026-11-07 | 1329, 1350 | 2026-11-02 | 2026-11-07 | 5d | 35d | 0d |
| 1407 | 1.6.22.2 | Interruptor termomagnético 1x20 A | 1d | 2026-11-07 | 2026-11-09 | 1406 | 2026-11-07 | 2026-11-09 | 1d | 35d | 4d |
| 1408 | 1.6.22.3 | Interruptor termomagnético 2x20 A | 1d | 2026-11-07 | 2026-11-09 | 1406 | 2026-11-07 | 2026-11-09 | 1d | 35d | 4d |
| 1409 | 1.6.22.4 | Salida para apagador 3 vías | 4d | 2026-10-28 | 2026-11-02 | 1311, 1350FS-4d | 2026-10-28 | 2026-11-02 | 4d | 31d | 0d |
| 1410 | 1.6.22.5 | Salida para apagador doble | 3d | 2026-11-02 | 2026-11-05 | 1409 | 2026-11-02 | 2026-11-05 | 3d | 33d | 0d |
| 1411 | 1.6.22.6 | Salida para apagador sencillo | 3d | 2026-11-02 | 2026-11-05 | 1409 | 2026-11-02 | 2026-11-05 | 3d | 33d | 0d |
| 1412 | 1.6.22.7 | Salida de alumbrado en losa | 5d | 2026-11-02 | 2026-11-07 | 1409 | 2026-11-02 | 2026-11-07 | 5d | 31d | 0d |
| 1413 | 1.6.22.8 | Salida para contacto exterior doble | 2d | 2026-11-02 | 2026-11-04 | 1409 | 2026-11-02 | 2026-11-04 | 2d | 34d | 3d |
| 1414 | 1.6.22.9 | Salida para contacto 220 V | 3d | 2026-11-04 | 2026-11-07 | 1409FS+2d | 2026-11-04 | 2026-11-07 | 3d | 31d | 0d |
| 1415 | 1.6.22.10 | Salida para contacto doble | 5d | 2026-11-04 | 2026-11-10 | 1409FS+2d | 2026-11-04 | 2026-11-10 | 5d | 34d | 3d |
| 1416 | 1.6.22.11 | Salida para contacto doble área húmeda | 2d | 2026-11-07 | 2026-11-10 | 1413, 1414 | 2026-11-07 | 2026-11-10 | 2d | 34d | 3d |
| 1417 | 1.6.22.12 | Salida TV / telefonía / intercom | 4d | 2026-11-07 | 2026-11-12 | 1413, 1414 | 2026-11-07 | 2026-11-12 | 4d | 32d | 1d |
| 1418 | 1.6.22.13 | Extractor 4 baño | 5d | 2026-11-07 | 2026-11-13 | 1413, 1414 | 2026-11-07 | 2026-11-13 | 5d | 31d | 0d |
| 1419 | 1.6.22.14 | Prueba eléctrica | 2d | 2026-11-13 | 2026-11-18 | 1406, 1407, 1408, 1409, 1410, 1411, 1412, 1413, 1414, 1415, 1416, 1417, 1418, 1472, 1473, 1479, 1474, 1475, 1477, 1478, 1481, 1483 | 2026-11-13 | 2026-11-18 | 2d | 31d | 29d |

| ID | WBS | Task | Duration | Start | Finish | Predecessors | Baseline start | Baseline finish | Baseline duration | Total slack | Free slack |
| --- | --- | --- | --- | --- | --- | --- | --- | --- | --- | --- | --- |
| 1420 | 1.6.23 | **INSTALACIÓN HIDRO-SANITARIA** | 11d | 2026-10-12 | 2026-10-24 |  | 2026-10-12 | 2026-10-24 | 11d | 2d |  |
| 1421 | 1.6.23.1 | Tubería condensados PVC 1 | 5d | 2026-10-12 | 2026-10-17 | 1325 | 2026-10-12 | 2026-10-17 | 5d | 2d | 0d |
| 1422 | 1.6.23.2 | Tubería sanitaria PVC 4 | 5d | 2026-10-12 | 2026-10-17 | 1328 | 2026-10-12 | 2026-10-17 | 5d | 10d | 0d |
| 1423 | 1.6.23.3 | Coladera H-444 | 1d | 2026-10-17 | 2026-10-19 | 1422 | 2026-10-17 | 2026-10-19 | 1d | 10d | 4d |
| 1424 | 1.6.23.4 | Caja PVC para lavadora | 3d | 2026-10-12 | 2026-10-15 | 1325 | 2026-10-12 | 2026-10-15 | 3d | 2d | 0d |
| 1425 | 1.6.23.5 | Salida para secadora PVC 4 | 3d | 2026-10-12 | 2026-10-15 | 1328 | 2026-10-12 | 2026-10-15 | 3d | 2d | 0d |
| 1426 | 1.6.23.6 | Salida hidráulica para boiler | 2d | 2026-10-12 | 2026-10-14 | 1325 | 2026-10-12 | 2026-10-14 | 2d | 3d | 1d |
| 1427 | 1.6.23.7 | Salida hidráulica para llave de jardín | 3d | 2026-10-12 | 2026-10-15 | 1325 | 2026-10-12 | 2026-10-15 | 3d | 2d | 0d |
| 1428 | 1.6.23.8 | Salida hidráulica para lavabo | 4d | 2026-10-12 | 2026-10-16 | 1325 | 2026-10-12 | 2026-10-16 | 4d | 2d | 0d |
| 1429 | 1.6.23.9 | Salida hidráulica para purificación | 4d | 2026-10-12 | 2026-10-16 | 1325 | 2026-10-12 | 2026-10-16 | 4d | 2d | 0d |
| 1430 | 1.6.23.10 | Salida sanitaria para lavabo | 2d | 2026-10-14 | 2026-10-16 | 1325FS+2d | 2026-10-14 | 2026-10-16 | 2d | 2d | 0d |
| 1431 | 1.6.23.11 | Salida hidráulica para lavadero | 2d | 2026-10-14 | 2026-10-16 | 1325FS+2d | 2026-10-14 | 2026-10-16 | 2d | 2d | 0d |
| 1432 | 1.6.23.12 | Salida sanitaria para lavadero | 2d | 2026-10-15 | 2026-10-17 | 1325FS+3d | 2026-10-15 | 2026-10-17 | 2d | 2d | 0d |
| 1433 | 1.6.23.13 | Salida hidráulica para lavadora | 2d | 2026-10-15 | 2026-10-17 | 1325FS+3d | 2026-10-15 | 2026-10-17 | 2d | 2d | 0d |
| 1434 | 1.6.23.14 | Salida sanitaria para lavadora | 2d | 2026-10-16 | 2026-10-19 | 1328FS+4d | 2026-10-16 | 2026-10-19 | 2d | 2d | 0d |
| 1435 | 1.6.23.15 | Salida hidráulica para regadera | 5d | 2026-10-16 | 2026-10-22 | 1325FS+4d | 2026-10-16 | 2026-10-22 | 5d | 7d | 0d |
| 1436 | 1.6.23.16 | Salida sanitaria para regadera | 4d | 2026-10-16 | 2026-10-21 | 1328FS+4d | 2026-10-16 | 2026-10-21 | 4d | 8d | 2d |
| 1437 | 1.6.23.17 | Salida hidráulica para WC | 2d | 2026-10-14 | 2026-10-16 | 1328FS+2d | 2026-10-14 | 2026-10-16 | 2d | 2d | 0d |
| 1438 | 1.6.23.18 | Salida sanitaria para WC | 4d | 2026-10-16 | 2026-10-21 | 1328FS+4d | 2026-10-16 | 2026-10-21 | 4d | 2d | 0d |
| 1439 | 1.6.23.19 | Salida hidráulica para zinc | 4d | 2026-10-16 | 2026-10-21 | 1328FS+4d | 2026-10-16 | 2026-10-21 | 4d | 2d | 0d |
| 1440 | 1.6.23.20 | Salida sanitaria para zinc | 3d | 2026-10-19 | 2026-10-22 | 1328FS+6d | 2026-10-19 | 2026-10-22 | 3d | 2d | 0d |
| 1441 | 1.6.23.21 | Tubo para ventila de baño 2 | 5d | 2026-10-12 | 2026-10-17 | 1421SS | 2026-10-12 | 2026-10-17 | 5d | 2d | 0d |
| 1442 | 1.6.23.22 | Tubo para minisplit PVC 3 | 5d | 2026-10-17 | 2026-10-23 | 1441 | 2026-10-17 | 2026-10-23 | 5d | 2d | 0d |
| 1443 | 1.6.23.23 | Cuadro de medición | 5d | 2026-10-15 | 2026-10-21 | 1375 | 2026-10-15 | 2026-10-21 | 5d | 7d | 0d |
| 1444 | 1.6.23.24 | Pozo de absorción 0.50x0.50x0.50 | 3d | 2026-10-15 | 2026-10-19 | 1375 | 2026-10-15 | 2026-10-19 | 3d | 10d | 0d |
| 1445 | 1.6.23.25 | Prueba sanitaria final | 1d | 2026-10-23 | 2026-10-24 | 1421, 1422, 1423, 1425, 1430, 1432, 1434, 1436, 1438, 1441, 1442 | 2026-10-23 | 2026-10-24 | 1d | 6d | 4d |
| 1446 | 1.6.23.26 | Prueba hidrostática final | 1d | 2026-10-22 | 2026-10-23 | 1426, 1427, 1428, 1429, 1431, 1433, 1435, 1437, 1439, 1443, 1444, 1449, 1450, 1448, 1447 | 2026-10-22 | 2026-10-23 | 1d | 7d | 5d |
| 1447 | 1.6.23.27 | Salida válvula control 19 mm | 1d | 2026-10-21 | 2026-10-22 | 1443 | 2026-10-21 | 2026-10-22 | 1d | 7d | 0d |
| 1448 | 1.6.23.28 | Salida válvula control 13 mm | 1d | 2026-10-21 | 2026-10-22 | 1443 | 2026-10-21 | 2026-10-22 | 1d | 7d | 0d |
| 1449 | 1.6.23.29 | Salida hidráulica para tanque hidroneumático | 3d | 2026-10-15 | 2026-10-19 | 1375 | 2026-10-15 | 2026-10-19 | 3d | 10d | 3d |
| 1450 | 1.6.23.30 | Salida hidráulica para Active Driver | 3d | 2026-10-15 | 2026-10-19 | 1375 | 2026-10-15 | 2026-10-19 | 3d | 10d | 3d |

| ID | WBS | Task | Duration | Start | Finish | Predecessors | Baseline start | Baseline finish | Baseline duration | Total slack | Free slack |
| --- | --- | --- | --- | --- | --- | --- | --- | --- | --- | --- | --- |
| 1451 | 1.6.24 | **INSTALACION DE GAS** | 8d | 2026-10-08 | 2026-10-19 |  | 2026-10-08 | 2026-10-19 | 8d | 38d |  |
| 1452 | 1.6.24.1 | Ramaleo para gas 1/2 | 5d | 2026-10-13 | 2026-10-19 | 1375FS-2d, 1453 | 2026-10-13 | 2026-10-19 | 5d | 38d | 0d |
| 1453 | 1.6.24.2 | Excavación a mano material tipo B | 3d | 2026-10-08 | 2026-10-13 | 1375FF-2d | 2026-10-08 | 2026-10-13 | 3d | 38d | 0d |
| 1454 | 1.6.25 | **MUEBLES SANITARIOS** | 29d | 2026-11-18 | 2026-12-23 |  | 2026-11-18 | 2026-12-23 | 29d | 14d |  |
| 1455 | 1.6.25.1 | WC completo Austral | 2d | 2026-11-18 | 2026-11-20 | 1359, 1366, 1445, 1446 | 2026-11-18 | 2026-11-20 | 2d | 16d | 14d |
| 1456 | 1.6.25.2 | Lavabo Senna con pedestal | 4d | 2026-11-18 | 2026-11-23 | 1359, 1364, 1366, 1445, 1446 | 2026-11-18 | 2026-11-23 | 4d | 14d | 12d |
| 1457 | 1.6.25.3 | Tarja / lavabo combo Guinea 80x45 | 2d | 2026-11-18 | 2026-11-20 | 1203, 1359, 1364, 1366, 1446 | 2026-11-18 | 2026-11-20 | 2d | 45d |  |
| 1458 | 1.6.25.4 | Regadera con monomando | 3d | 2026-11-20 | 2026-11-24 | 1359, 1364FS+2d, 1366FS+2d, 1445, 1446 | 2026-11-20 | 2026-11-24 | 3d | 13d | 11d |
| 1459 | 1.6.25.5 | Coladera inserto cerámico | 2d | 2026-11-21 | 2026-11-24 | 1364, 1366FS+3d, 1446 | 2026-11-21 | 2026-11-24 | 2d | 13d | 11d |
| 1460 | 1.6.25.6 | Toallero sencillo | 1d | 2026-12-23 | 2026-12-23 | 1352FS-1d | 2026-12-23 | 2026-12-23 | 1d | 2d | 0d |
| 1461 | 1.6.25.7 | Toallero barra | 1d | 2026-12-23 | 2026-12-23 | 1352FS-1d | 2026-12-23 | 2026-12-23 | 1d | 2d | 0d |
| 1462 | 1.6.25.8 | Portapapel | 1d | 2026-12-23 | 2026-12-23 | 1352FS-1d | 2026-12-23 | 2026-12-23 | 1d | 2d | 0d |
| 1463 | 1.6.25.9 | Gancho baño | 1d | 2026-12-23 | 2026-12-23 | 1352FS-1d | 2026-12-23 | 2026-12-23 | 1d | 2d | 0d |
| 1464 | 1.6.26 | **EQUIPAMIENTO** | 6d | 2026-10-02 | 2026-10-09 |  | 2026-10-02 | 2026-10-09 | 6d | 61d |  |
| 1465 | 1.6.26.1 | Electronivel Rotoplas 5 m | 2d | 2026-10-03 | 2026-10-06 | 1470 | 2026-10-03 | 2026-10-06 | 2d | 64d | 62d |
| 1466 | 1.6.26.2 | Manómetro | 1d | 2026-10-03 | 2026-10-05 | 1470 | 2026-10-03 | 2026-10-05 | 1d | 65d | 63d |
| 1467 | 1.6.26.3 | Interruptor de presión 30-50 PSI | 1d | 2026-10-03 | 2026-10-05 | 1470 | 2026-10-03 | 2026-10-05 | 1d | 65d | 63d |
| 1468 | 1.6.26.4 | Tanque hidroneumático FPS-24LX | 3d | 2026-10-03 | 2026-10-07 | 1470 | 2026-10-03 | 2026-10-07 | 3d | 61d | 0d |
| 1469 | 1.6.26.5 | Bomba sumergible Dominator 1.2 HP | 2d | 2026-10-07 | 2026-10-09 | 1468 | 2026-10-07 | 2026-10-09 | 2d | 61d | 59d |
| 1470 | 1.6.26.6 | Cisterna prefabricada 2800 L | 1d | 2026-10-02 | 2026-10-03 | 1332FF | 2026-10-02 | 2026-10-03 | 1d | 61d | 0d |
| 1471 | 1.6.27 | **LUMINARIAS** | 5d | 2026-11-07 | 2026-11-13 |  | 2026-11-07 | 2026-11-13 | 5d | 31d |  |
| 1472 | 1.6.27.1 | Roseta cerámica | 3d | 2026-11-07 | 2026-11-11 | 1412 | 2026-11-07 | 2026-11-11 | 3d | 33d | 2d |
| 1473 | 1.6.27.2 | Luminaria lagartijera LED | 3d | 2026-11-07 | 2026-11-11 | 1412 | 2026-11-07 | 2026-11-11 | 3d | 33d | 2d |
| 1474 | 1.6.27.3 | Spot 6W Tecnolite | 3d | 2026-11-07 | 2026-11-11 | 1412 | 2026-11-07 | 2026-11-11 | 3d | 33d | 2d |
| 1475 | 1.6.27.4 | Spot 7W Tecnolite | 3d | 2026-11-07 | 2026-11-11 | 1412 | 2026-11-07 | 2026-11-11 | 3d | 33d | 2d |
| 1476 | 1.6.27.5 | Arbotante exterior | 2d | 2026-11-07 | 2026-11-10 | 1412 | 2026-11-07 | 2026-11-10 | 2d | 31d | 0d |
| 1477 | 1.6.27.6 | Estaca LED exterior | 3d | 2026-11-10 | 2026-11-13 | 1476 | 2026-11-10 | 2026-11-13 | 3d | 31d | 0d |
| 1478 | 1.6.27.7 | Tira LED | 3d | 2026-11-10 | 2026-11-13 | 1476 | 2026-11-10 | 2026-11-13 | 3d | 31d | 0d |
| 1479 | 1.6.27.8 | Spot exterior 50W | 2d | 2026-11-07 | 2026-11-10 | 1412 | 2026-11-07 | 2026-11-10 | 2d | 34d | 3d |

| ID | WBS | Task | Type | Duration | Start | Finish | Predecessors | Baseline start | Baseline finish | Baseline duration | Total slack | Free slack |
| --- | --- | --- | --- | --- | --- | --- | --- | --- | --- | --- | --- | --- |
| 1480 | 1.6.28 | **TIMBRE** |  | 2d | 2026-11-09 | 2026-11-11 |  | 2026-11-09 | 2026-11-11 | 2d | 33d |  |
| 1481 | 1.6.28.1 | Timbre inalámbrico con bocina |  | 2d | 2026-11-09 | 2026-11-11 | 1410FS+3d, 1411FS+3d | 2026-11-09 | 2026-11-11 | 2d | 33d | 2d |
| 1482 | 1.6.29 | **OBRA EXTERIOR - BARDA** |  | 18d | 2026-10-15 | 2026-11-06 |  | 2026-10-15 | 2026-11-06 | 18d | 39d |  |
| 1483 | 1.6.29.1 | Murete convencional |  | 5d | 2026-10-21 | 2026-10-27 | 1375FS+5d | 2026-10-21 | 2026-10-27 | 5d | 45d | 14d |
| 1484 | 1.6.29.2 | Barda de block aparente |  | 18d | 2026-10-15 | 2026-11-06 | 1375 | 2026-10-15 | 2026-11-06 | 18d | 39d | 37d |
| 1485 | 1.6.30 | **TERCER LIMPIEZA DE OBRA** |  | 16d | 2026-12-26 | 2027-01-18 |  | 2026-12-26 | 2027-01-18 | 16d | 2d |  |
| 1486 | 1.6.30.1 | Limpieza fina para entrega |  | 5d | 2026-12-26 | 2027-01-04 | 1352, 1353, 1354, 1385, 1394, 1395, 1419, 1445, 1446, 1460, 1461, 1462, 1463, 1465, 1466, 1467, 1468, 1469, 1484 | 2026-12-26 | 2027-01-04 | 5d | 2d | 0d |
| 1487 | 1.6.30.2 | Tercera limpieza de obra |  | 5d | 2027-01-04 | 2027-01-11 | 1378, 1486 | 2027-01-04 | 2027-01-11 | 5d | 2d | 0d |
| 1488 | 1.6.30.3 | Tercera carga y acarreo de escombro |  | 6d | 2027-01-11 | 2027-01-18 | 1487 | 2027-01-11 | 2027-01-18 | 6d | 2d | 0d |
| 1489 | 1.7 | **LOTE 22 M-663 CORSAC-B** |  | 174d | 2026-06-10 | 2027-01-20 |  | 2026-06-10 | 2027-01-20 | 174d | 0d |  |
| 1490 | 1.7.1 | **HITOS IMPORTANTES DEL LOTE** |  | 174d | 2026-06-10 | 2027-01-20 |  | 2026-06-10 | 2027-01-20 | 174d | 0d |  |
| 1491 | 1.7.1.1 | Inicio del Lote-22 M-663 Corsac-B | milestone | 0d | 2026-06-10 | 2026-06-10 | 9 | 2026-06-10 | 2026-06-10 |  | 0d |  |
| 1492 | 1.7.1.2 | Colado de Losa de Cimentación | milestone | 0d | 2026-07-01 | 2026-07-01 | 1522 | 2026-07-01 | 2026-07-01 |  | 157d |  |
| 1493 | 1.7.1.3 | Colado de Losa de Entrepiso | milestone | 0d | 2026-08-08 | 2026-08-08 | 1559 | 2026-08-08 | 2026-08-08 |  | 126d |  |
| 1494 | 1.7.1.4 | Colado de Losa de Azotea | milestone | 0d | 2026-09-15 | 2026-09-15 | 1594 | 2026-09-15 | 2026-09-15 |  | 96d |  |
| 1495 | 1.7.1.5 | Entrega de vivienda | milestone | 0d | 2027-01-20 | 2027-01-20 | 1743, 1744, 1745 | 2027-01-20 | 2027-01-20 |  | 0d |  |
| 1496 | 1.7.2 | **TRABAJOS PRELIMINARES** |  | 2d | 2026-06-10 | 2026-06-12 |  | 2026-06-10 | 2026-06-12 | 2d | 0d |  |
| 1497 | 1.7.2.1 | Trazo y nivelación |  | 2d | 2026-06-10 | 2026-06-12 | 1491 | 2026-06-10 | 2026-06-12 | 2d | 0d |  |
| 1498 | 1.7.3 | **EXCAVACIONES** |  | 3d | 2026-06-12 | 2026-06-16 |  | 2026-06-12 | 2026-06-16 | 3d | 0d |  |
| 1499 | 1.7.3.1 | Excavación a mano material tipo B |  | 3d | 2026-06-12 | 2026-06-16 | 1497 | 2026-06-12 | 2026-06-16 | 3d | 0d |  |
| 1500 | 1.7.3.2 | Acarreo en carretilla 20 m |  | 2d | 2026-06-13 | 2026-06-16 | 1499SS+1d | 2026-06-13 | 2026-06-16 | 2d | 0d |  |
| 1501 | 1.7.4 | **CIMENTACION** |  | 13d | 2026-06-16 | 2026-07-02 |  | 2026-06-16 | 2026-07-02 | 13d | 0d |  |
| 1502 | 1.7.4.1 | Cimbra perimetral losa de cimentación |  | 3d | 2026-06-16 | 2026-06-19 | 1499, 1500 | 2026-06-16 | 2026-06-19 | 3d | 0d |  |
| 1503 | 1.7.4.2 | Sistema antitermitas PVC |  | 3d | 2026-06-16 | 2026-06-19 | 1499, 1500 | 2026-06-16 | 2026-06-19 | 3d | 1d | 0d |
| 1504 | 1.7.4.3 | Hule negro en cimentación |  | 1d | 2026-06-19 | 2026-06-22 | 1503 | 2026-06-19 | 2026-06-22 | 1d | 1d | 0d |
| 1505 | 1.7.4.4 | Ramaleo poliducto eléctrico cimentación |  | 2d | 2026-06-22 | 2026-06-24 | 1504 | 2026-06-22 | 2026-06-24 | 2d | 4d | 0d |
| 1506 | 1.7.4.5 | Ramaleo eléctrico base-medición a centro de carga |  | 1d | 2026-06-22 | 2026-06-23 | 1504 | 2026-06-22 | 2026-06-23 | 1d | 5d | 1d |
| 1507 | 1.7.4.6 | Ramaleo eléctrico exterior |  | 1d | 2026-06-24 | 2026-06-25 | 1505, 1506 | 2026-06-24 | 2026-06-25 | 1d | 4d |  |
| 1508 | 1.7.4.7 | Ramaleo para cable poliducto 3/4 |  | 1d | 2026-06-24 | 2026-06-25 | 1505, 1506 | 2026-06-24 | 2026-06-25 | 1d | 4d |  |
| 1509 | 1.7.4.8 | Ramaleo para TV poliducto 3/4 |  | 1d | 2026-06-24 | 2026-06-25 | 1505, 1506 | 2026-06-24 | 2026-06-25 | 1d | 4d |  |
| 1510 | 1.7.4.9 | Ramaleo hidráulico CPVC 1 cimentación |  | 1d | 2026-06-22 | 2026-06-23 | 1504 | 2026-06-22 | 2026-06-23 | 1d | 1d | 0d |
| 1511 | 1.7.4.10 | Ramaleo hidráulico CPVC 3/4 cimentación |  | 2d | 2026-06-23 | 2026-06-25 | 1510 | 2026-06-23 | 2026-06-25 | 2d | 1d | 0d |
| 1512 | 1.7.4.11 | Ramaleo hidráulico CPVC 1/2 cimentación |  | 2d | 2026-06-25 | 2026-06-27 | 1511 | 2026-06-25 | 2026-06-27 | 2d | 1d | 0d |
| 1513 | 1.7.4.12 | Prueba hidráulica |  | 1d | 2026-06-27 | 2026-06-29 | 1510, 1511, 1512 | 2026-06-27 | 2026-06-29 | 1d | 1d |  |
| 1514 | 1.7.4.13 | Ramaleo sanitario PVC 4 cimentación |  | 2d | 2026-06-23 | 2026-06-25 | 1504FS+1d | 2026-06-23 | 2026-06-25 | 2d | 2d | 0d |
| 1515 | 1.7.4.14 | Ramaleo sanitario PVC 2 cimentación |  | 1d | 2026-06-25 | 2026-06-26 | 1514 | 2026-06-25 | 2026-06-26 | 1d | 2d | 0d |
| 1516 | 1.7.4.15 | Prueba sanitaria |  | 1d | 2026-06-26 | 2026-06-27 | 1514, 1515 | 2026-06-26 | 2026-06-27 | 1d | 2d |  |
| 1517 | 1.7.4.16 | Acero contratrabe CT-1 |  | 4d | 2026-06-19 | 2026-06-25 | 1502 | 2026-06-19 | 2026-06-25 | 4d | 0d |  |
| 1518 | 1.7.4.17 | Acero contratrabe CT-2 |  | 4d | 2026-06-19 | 2026-06-25 | 1502 | 2026-06-19 | 2026-06-25 | 4d | 0d |  |
| 1519 | 1.7.4.18 | Malla electrosoldada 6-6/8-8 |  | 2d | 2026-06-27 | 2026-06-30 | 1517, 1518, 1520, 1521 | 2026-06-27 | 2026-06-30 | 2d | 0d |  |
| 1520 | 1.7.4.19 | Bastón de refuerzo LS |  | 2d | 2026-06-25 | 2026-06-27 | 1517, 1518 | 2026-06-25 | 2026-06-27 | 2d | 0d |  |
| 1521 | 1.7.4.20 | Bastón de refuerzo LI |  | 2d | 2026-06-25 | 2026-06-27 | 1517, 1518 | 2026-06-25 | 2026-06-27 | 2d | 0d |  |
| 1522 | 1.7.4.21 | Colado losa de cimentación f’c=200 |  | 1d | 2026-06-30 | 2026-07-01 | 1502, 1504, 1507, 1508, 1509, 1513, 1516, 1517, 1518, 1519, 1520, 1521 | 2026-06-30 | 2026-07-01 | 1d | 0d |  |
| 1523 | 1.7.4.22 | Curado de concreto |  | 1d | 2026-07-01 | 2026-07-02 | 1522 | 2026-07-01 | 2026-07-02 | 1d | 0d |  |
| 1524 | 1.7.4.23 | Acero zapata ZT-1 |  | 4d | 2026-06-25 | 2026-06-30 | 1517, 1518 | 2026-06-25 | 2026-06-30 | 4d | 156d | 0d |
| 1525 | 1.7.4.24 | Acero zapata ZT-2 |  | 4d | 2026-06-25 | 2026-06-30 | 1517, 1518 | 2026-06-25 | 2026-06-30 | 4d | 156d | 0d |
| 1526 | 1.7.4.25 | Colado zapatas aisladas f’c=200 |  | 1d | 2026-07-01 | 2026-07-02 | 1527 | 2026-07-01 | 2026-07-02 | 1d | 156d |  |
| 1527 | 1.7.4.26 | Cimbra frontera zapatas |  | 3d | 2026-06-27 | 2026-07-01 | 1524FS-2d, 1525FS-2d | 2026-06-27 | 2026-07-01 | 3d | 156d | 0d |

| ID | WBS | Task | Duration | Start | Finish | Predecessors | Baseline start | Baseline finish | Baseline duration | Total slack | Free slack |
| --- | --- | --- | --- | --- | --- | --- | --- | --- | --- | --- | --- |
| 1528 | 1.7.5 | **MUROS, PLANTA BAJA. CASTILLOS Y CERRAMIENTOS** | 20d | 2026-06-26 | 2026-07-21 |  | 2026-06-26 | 2026-07-21 | 20d | 5d |  |
| 1529 | 1.7.5.1 | Anclaje de castillos y Columnas PB | 5d | 2026-06-26 | 2026-07-02 | 1517FS+1d, 1518FS+1d | 2026-06-26 | 2026-07-02 | 5d | 144d | 0d |
| 1530 | 1.7.5.2 | Castillo K1 | 4d | 2026-07-02 | 2026-07-07 | 1523, 1529 | 2026-07-02 | 2026-07-07 | 4d | 144d | 0d |
| 1531 | 1.7.5.3 | Castillo K2 | 4d | 2026-07-02 | 2026-07-07 | 1523, 1529 | 2026-07-02 | 2026-07-07 | 4d | 148d | 1d |
| 1532 | 1.7.5.4 | Castillo K3 | 3d | 2026-07-06 | 2026-07-08 | 1530FS-2d | 2026-07-06 | 2026-07-08 | 3d | 144d | 0d |
| 1533 | 1.7.5.5 | Castillo K4 | 3d | 2026-07-06 | 2026-07-08 | 1530FS-2d | 2026-07-06 | 2026-07-08 | 3d | 144d | 0d |
| 1534 | 1.7.5.6 | Castillo K5 | 3d | 2026-07-08 | 2026-07-10 | 1532FS-1d, 1533FS-1d | 2026-07-08 | 2026-07-10 | 3d | 144d | 0d |
| 1535 | 1.7.5.7 | Refuerzo de muro K6 | 3d | 2026-07-09 | 2026-07-13 | 1534FS-2d | 2026-07-09 | 2026-07-13 | 3d | 144d | 0d |
| 1536 | 1.7.5.8 | Columna C1 | 4d | 2026-07-02 | 2026-07-07 | 1523, 1529 | 2026-07-02 | 2026-07-07 | 4d | 148d | 0d |
| 1537 | 1.7.5.9 | Columna C2 | 4d | 2026-07-08 | 2026-07-13 | 1536 | 2026-07-08 | 2026-07-13 | 4d | 148d |  |
| 1538 | 1.7.5.10 | Dala de cerramiento CR-1 | 4d | 2026-07-09 | 2026-07-14 | 1530, 1531, 1532 | 2026-07-09 | 2026-07-14 | 4d | 147d |  |
| 1539 | 1.7.5.11 | Dala de cerramiento CR-2 | 3d | 2026-07-09 | 2026-07-13 | 1530, 1531, 1532 | 2026-07-09 | 2026-07-13 | 3d | 148d |  |
| 1540 | 1.7.5.12 | Cadena block dala | 4d | 2026-07-13 | 2026-07-17 | 1535 | 2026-07-13 | 2026-07-17 | 4d | 144d |  |
| 1541 | 1.7.5.13 | Muro de ladrillo aparente | 15d | 2026-07-02 | 2026-07-21 | 1523 | 2026-07-02 | 2026-07-21 | 15d | 0d |  |
| 1542 | 1.7.5.14 | Muro de block planta baja | 13d | 2026-07-06 | 2026-07-21 | 1523FS+2d | 2026-07-06 | 2026-07-21 | 13d | 0d |  |
| 1543 | 1.7.6 | **ESCALERA** | 14d | 2026-08-08 | 2026-08-26 |  | 2026-08-08 | 2026-08-26 | 14d | 112d |  |
| 1544 | 1.7.6.1 | Escalera de concreto armado | 14d | 2026-08-08 | 2026-08-26 | 1559 | 2026-08-08 | 2026-08-26 | 14d | 112d |  |
| 1545 | 1.7.7 | **LOSA DE ENTREPISO (viegueta y caseton)** | 18d | 2026-07-18 | 2026-08-10 |  | 2026-07-18 | 2026-08-10 | 18d | 3d |  |
| 1546 | 1.7.7.1 | Vigueta pretensada 1.40 m | 3d | 2026-07-18 | 2026-07-22 | 1541FS-2d, 1542FS-2d | 2026-07-18 | 2026-07-22 | 3d | 5d | 4d |
| 1547 | 1.7.7.2 | Vigueta pretensada 1.95 m | 4d | 2026-07-20 | 2026-07-24 | 1541FS-1d, 1542FS-1d | 2026-07-20 | 2026-07-24 | 4d | 3d | 2d |
| 1548 | 1.7.7.3 | Vigueta pretensada 3.35 m | 4d | 2026-07-21 | 2026-07-27 | 1541, 1542 | 2026-07-21 | 2026-07-27 | 4d | 2d | 1d |
| 1549 | 1.7.7.4 | Vigueta pretensada 3.50 m | 4d | 2026-07-22 | 2026-07-28 | 1541FS+1d, 1542FS+1d | 2026-07-22 | 2026-07-28 | 4d | 1d | 0d |
| 1550 | 1.7.7.5 | Vigueta pretensada 3.75 m | 4d | 2026-07-22 | 2026-07-28 | 1541FS+1d, 1542FS+1d | 2026-07-22 | 2026-07-28 | 4d | 1d | 0d |
| 1551 | 1.7.7.6 | Vigueta pretensada 3.90 m | 4d | 2026-07-22 | 2026-07-28 | 1541FS+1d, 1542FS+1d | 2026-07-22 | 2026-07-28 | 4d | 1d | 0d |
| 1552 | 1.7.7.7 | Bovedilla poliestireno entrepiso | 2d | 2026-07-28 | 2026-07-30 | 1546, 1547, 1548, 1549, 1550, 1551 | 2026-07-28 | 2026-07-30 | 2d | 1d | 0d |
| 1553 | 1.7.7.8 | Dala de coronamiento | 3d | 2026-07-28 | 2026-07-31 | 1546, 1547, 1548, 1549, 1550, 1551, 1558FS-1d | 2026-07-28 | 2026-07-31 | 3d | 4d | 3d |
| 1554 | 1.7.7.9 | Nervadura NR-1 | 3d | 2026-07-29 | 2026-08-01 | 1546, 1547, 1548, 1549, 1550, 1551, 1558 | 2026-07-29 | 2026-08-01 | 3d | 0d |  |
| 1555 | 1.7.7.10 | Nervadura NR-2 | 3d | 2026-07-29 | 2026-08-01 | 1554SS | 2026-07-29 | 2026-08-01 | 3d | 2d | 0d |
| 1556 | 1.7.7.11 | Trabe TR-1 | 5d | 2026-07-29 | 2026-08-04 | 1554SS | 2026-07-29 | 2026-08-04 | 5d | 0d |  |
| 1557 | 1.7.7.12 | Malla 66-10/10 losa de compresión | 2d | 2026-08-04 | 2026-08-06 | 1552, 1553, 1567, 1570 | 2026-08-04 | 2026-08-06 | 2d | 1d |  |
| 1558 | 1.7.7.13 | Cimbra losa de azotea | 5d | 2026-07-22 | 2026-07-29 | 1541FS+1d, 1542FS+1d | 2026-07-22 | 2026-07-29 | 5d | 0d |  |
| 1559 | 1.7.7.14 | Concreto losa de entrepiso f’c=200 | 1d | 2026-08-07 | 2026-08-08 | 1554, 1555, 1556, 1557, 1564, 1567, 1570, 1561, 1572 | 2026-08-07 | 2026-08-08 | 1d | 0d |  |
| 1560 | 1.7.7.15 | Curado de concreto | 1d | 2026-08-08 | 2026-08-10 | 1559 | 2026-08-08 | 2026-08-10 | 1d | 0d |  |
| 1561 | 1.7.7.16 | Cimbra exterior corta losa | 3d | 2026-07-31 | 2026-08-04 | 1554FS-1d, 1555FS-1d | 2026-07-31 | 2026-08-04 | 3d | 3d |  |
| 1562 | 1.7.7.17 | Ramaleo poliducto eléctrico entrepiso | 2d | 2026-07-30 | 2026-08-01 | 1552 | 2026-07-30 | 2026-08-01 | 2d | 4d | 0d |
| 1563 | 1.7.7.18 | Ramaleo para cable poliducto 3/4 | 1d | 2026-07-30 | 2026-07-31 | 1552 | 2026-07-30 | 2026-07-31 | 1d | 133d |  |
| 1564 | 1.7.7.19 | Ramaleo para TV poliducto 3/4 | 1d | 2026-08-01 | 2026-08-03 | 1562 | 2026-08-01 | 2026-08-03 | 1d | 4d |  |
| 1565 | 1.7.7.20 | Ramaleo hidráulico CPVC 3/4 | 2d | 2026-07-31 | 2026-08-03 | 1552FS+1d | 2026-07-31 | 2026-08-03 | 2d | 1d | 0d |
| 1566 | 1.7.7.21 | Ramaleo hidráulico CPVC 1/2 | 1d | 2026-08-03 | 2026-08-04 | 1565 | 2026-08-03 | 2026-08-04 | 1d | 1d | 0d |
| 1567 | 1.7.7.22 | Prueba hidráulica | 1d | 2026-08-03 | 2026-08-04 | 1565, 1566FS-1d | 2026-08-03 | 2026-08-04 | 1d | 1d | 0d |
| 1568 | 1.7.7.23 | Ramaleo sanitario PVC 4 | 2d | 2026-07-31 | 2026-08-03 | 1552FS+1d | 2026-07-31 | 2026-08-03 | 2d | 1d | 0d |
| 1569 | 1.7.7.24 | Ramaleo sanitario PVC 2 | 1d | 2026-08-03 | 2026-08-04 | 1568 | 2026-08-03 | 2026-08-04 | 1d | 1d | 0d |
| 1570 | 1.7.7.25 | Prueba sanitaria | 1d | 2026-08-03 | 2026-08-04 | 1568, 1569FS-1d | 2026-08-03 | 2026-08-04 | 1d | 1d | 0d |

| ID | WBS | Task | Duration | Start | Finish | Predecessors | Baseline start | Baseline finish | Baseline duration | Total slack | Free slack |
| --- | --- | --- | --- | --- | --- | --- | --- | --- | --- | --- | --- |
| 1571 | 1.7.8 | **MUROS EN PLANTA ALTA, CASTILLOS Y CERRM.** | 21d | 2026-08-03 | 2026-08-28 |  | 2026-08-03 | 2026-08-28 | 21d | 0d |  |
| 1572 | 1.7.8.1 | Anclaje de castillos y Columnas PA | 4d | 2026-08-03 | 2026-08-07 | 1554FS-1d, 1555FS-1d, 1556FS-1d | 2026-08-03 | 2026-08-07 | 4d | 0d |  |
| 1573 | 1.7.8.2 | Castillo K1 | 4d | 2026-08-10 | 2026-08-14 | 1560 | 2026-08-10 | 2026-08-14 | 4d | 4d | 0d |
| 1574 | 1.7.8.3 | Castillo K2 | 4d | 2026-08-11 | 2026-08-17 | 1560FS+1d | 2026-08-11 | 2026-08-17 | 4d | 3d | 0d |
| 1575 | 1.7.8.4 | Castillo K3 | 3d | 2026-08-12 | 2026-08-17 | 1560FS+2d | 2026-08-12 | 2026-08-17 | 3d | 3d | 0d |
| 1576 | 1.7.8.5 | Castillo K4 | 3d | 2026-08-14 | 2026-08-19 | 1573 | 2026-08-14 | 2026-08-19 | 3d | 4d | 1d |
| 1577 | 1.7.8.6 | Castillo K5 | 3d | 2026-08-14 | 2026-08-19 | 1573 | 2026-08-14 | 2026-08-19 | 3d | 4d | 1d |
| 1578 | 1.7.8.7 | Refuerzo de muro K6 | 3d | 2026-08-17 | 2026-08-20 | 1573, 1574, 1575 | 2026-08-17 | 2026-08-20 | 3d | 3d | 0d |
| 1579 | 1.7.8.8 | Dala de cerramiento CR-1 | 4d | 2026-08-20 | 2026-08-25 | 1576, 1577, 1578 | 2026-08-20 | 2026-08-25 | 4d | 3d | 0d |
| 1580 | 1.7.8.9 | Cadena block dala | 3d | 2026-08-25 | 2026-08-28 | 1578, 1579 | 2026-08-25 | 2026-08-28 | 3d | 3d | 0d |
| 1581 | 1.7.8.10 | Muro de ladrillo aparente | 15d | 2026-08-10 | 2026-08-28 | 1560 | 2026-08-10 | 2026-08-28 | 15d | 0d |  |
| 1582 | 1.7.8.11 | Muro de block planta alta | 14d | 2026-08-11 | 2026-08-28 | 1560FS+1d | 2026-08-11 | 2026-08-28 | 14d | 0d |  |
| 1583 | 1.7.9 | **LOSA AZOTEA** | 15d | 2026-08-28 | 2026-09-17 |  | 2026-08-28 | 2026-09-17 | 15d | 0d |  |
| 1584 | 1.7.9.1 | Cortalosa CL-1 | 2d | 2026-09-11 | 2026-09-14 | 1592 | 2026-09-11 | 2026-09-14 | 2d | 0d |  |
| 1585 | 1.7.9.2 | Vigueta pretensada V11-40 390 | 5d | 2026-08-28 | 2026-09-03 | 1580, 1581, 1582 | 2026-08-28 | 2026-09-03 | 5d | 3d |  |
| 1586 | 1.7.9.3 | Vigueta pretensada V11-30 280 | 5d | 2026-08-28 | 2026-09-03 | 1581, 1582 | 2026-08-28 | 2026-09-03 | 5d | 3d |  |
| 1587 | 1.7.9.4 | Vigueta pretensada V11-30 285 | 5d | 2026-08-28 | 2026-09-03 | 1581, 1582 | 2026-08-28 | 2026-09-03 | 5d | 3d |  |
| 1588 | 1.7.9.5 | Vigueta pretensada V11-30 220 | 5d | 2026-09-01 | 2026-09-07 | 1581FS+2d, 1582FS+2d | 2026-09-01 | 2026-09-07 | 5d | 1d |  |
| 1589 | 1.7.9.6 | Vigueta pretensada V11-40 75 | 5d | 2026-09-01 | 2026-09-07 | 1581FS+2d, 1582FS+2d | 2026-09-01 | 2026-09-07 | 5d | 1d |  |
| 1590 | 1.7.9.7 | Vigueta pretensada V11-40 195 | 5d | 2026-09-02 | 2026-09-08 | 1581FS+3d, 1582FS+3d | 2026-09-02 | 2026-09-08 | 5d | 0d |  |
| 1591 | 1.7.9.8 | Vigueta pretensada V11-50 450 | 5d | 2026-09-02 | 2026-09-08 | 1581FS+3d, 1582FS+3d | 2026-09-02 | 2026-09-08 | 5d | 0d |  |
| 1592 | 1.7.9.9 | Bovedilla poliestireno azotea | 3d | 2026-09-08 | 2026-09-11 | 1585, 1586, 1587, 1588, 1589, 1590, 1591 | 2026-09-08 | 2026-09-11 | 3d | 0d |  |
| 1593 | 1.7.9.10 | Malla 66-10/10 losa de compresión | 2d | 2026-09-11 | 2026-09-14 | 1592 | 2026-09-11 | 2026-09-14 | 2d | 0d |  |
| 1594 | 1.7.9.11 | Concreto losa de azotea f’c=200 | 1d | 2026-09-14 | 2026-09-15 | 1584, 1592, 1593, 1597, 1596 | 2026-09-14 | 2026-09-15 | 1d | 0d |  |
| 1595 | 1.7.9.12 | Curado de concreto | 1d | 2026-09-15 | 2026-09-17 | 1594 | 2026-09-15 | 2026-09-17 | 1d | 0d |  |
| 1596 | 1.7.9.13 | Cimbra losa de azotea | 5d | 2026-08-28 | 2026-09-03 | 1581, 1582 | 2026-08-28 | 2026-09-03 | 5d | 8d |  |
| 1597 | 1.7.9.14 | Ramaleo de poliducto para inst. electrica en azotea | 2d | 2026-09-11 | 2026-09-14 | 1592 | 2026-09-11 | 2026-09-14 | 2d | 0d |  |

| ID | WBS | Task | Duration | Start | Finish | Predecessors | Baseline start | Baseline finish | Baseline duration | Total slack | Free slack |
| --- | --- | --- | --- | --- | --- | --- | --- | --- | --- | --- | --- |
| 1598 | 1.7.10 | **PRETIL Y ACABADOS DE AZOTEA** | 19d | 2026-09-17 | 2026-10-12 |  | 2026-09-17 | 2026-10-12 | 19d | 0d |  |
| 1599 | 1.7.10.1 | Castillo K1 | 5d | 2026-09-21 | 2026-09-26 | 1601SS+2d | 2026-09-21 | 2026-09-26 | 5d | 0d |  |
| 1600 | 1.7.10.2 | Dala de cerramiento en pretil | 4d | 2026-09-24 | 2026-09-29 | 1599FS-2d, 1601FS-2d | 2026-09-24 | 2026-09-29 | 4d | 0d |  |
| 1601 | 1.7.10.3 | Muro de block 12x15x40 | 5d | 2026-09-17 | 2026-09-24 | 1595 | 2026-09-17 | 2026-09-24 | 5d | 0d |  |
| 1602 | 1.7.10.4 | Chaflán en azotea | 4d | 2026-09-26 | 2026-10-01 | 1599, 1601 | 2026-09-26 | 2026-10-01 | 4d | 0d |  |
| 1603 | 1.7.10.5 | Aplanado exterior Mortermax fino | 5d | 2026-09-29 | 2026-10-05 | 1600, 1602FS-2d | 2026-09-29 | 2026-10-05 | 5d | 0d |  |
| 1604 | 1.7.10.6 | Acabado de azotea para impermeabilizar | 4d | 2026-10-06 | 2026-10-12 | 1605 | 2026-10-06 | 2026-10-12 | 4d | 0d |  |
| 1605 | 1.7.10.7 | Curado de concreto | 1d | 2026-10-05 | 2026-10-06 | 1602, 1603 | 2026-10-05 | 2026-10-06 | 1d | 0d |  |
| 1606 | 1.7.11 | **PRIMERA LIMPIEZA DE OBRA** | 4d | 2026-09-17 | 2026-09-23 |  | 2026-09-17 | 2026-09-23 | 4d | 52d |  |
| 1607 | 1.7.11.1 | Primera limpieza de obra | 2d | 2026-09-17 | 2026-09-21 | 1595 | 2026-09-17 | 2026-09-21 | 2d | 52d | 0d |
| 1608 | 1.7.11.2 | Primera carga y acarreo de escombro | 2d | 2026-09-21 | 2026-09-23 | 1607 | 2026-09-21 | 2026-09-23 | 2d | 52d | 1d |
| 1609 | 1.7.12 | **IMPERMEABILIZACION** | 5d | 2026-10-12 | 2026-10-17 |  | 2026-10-12 | 2026-10-17 | 5d | 0d |  |
| 1610 | 1.7.12.1 | Impermeabilización de pretil Kover 5 años | 4d | 2026-10-12 | 2026-10-16 | 1604 | 2026-10-12 | 2026-10-16 | 4d | 1d |  |
| 1611 | 1.7.12.2 | Impermeabilización de losa Kover 5 años | 5d | 2026-10-12 | 2026-10-17 | 1604 | 2026-10-12 | 2026-10-17 | 5d | 0d |  |
| 1612 | 1.7.13 | **ALBAÑILERIA** | 62d | 2026-09-24 | 2026-12-11 |  | 2026-09-24 | 2026-12-11 | 62d | 19d |  |
| 1613 | 1.7.13.1 | Lavadero de granito | 4d | 2026-11-06 | 2026-11-11 | 1637SS+8d | 2026-11-06 | 2026-11-11 | 4d | 51d |  |
| 1614 | 1.7.13.2 | Ramaleo hidráulico exterior CPVC 1 1/4 | 3d | 2026-10-17 | 2026-10-21 | 1610, 1611 | 2026-10-17 | 2026-10-21 | 3d | 0d |  |
| 1615 | 1.7.13.3 | Ramaleo hidráulico exterior CPVC 1 | 2d | 2026-10-17 | 2026-10-20 | 1614SS | 2026-10-17 | 2026-10-20 | 2d | 0d |  |
| 1616 | 1.7.13.4 | Ramaleo hidráulico exterior CPVC 3/4 | 2d | 2026-10-20 | 2026-10-22 | 1615 | 2026-10-20 | 2026-10-22 | 2d | 0d |  |
| 1617 | 1.7.13.5 | Ramaleo hidráulico exterior CPVC 1/2 | 2d | 2026-10-20 | 2026-10-22 | 1615 | 2026-10-20 | 2026-10-22 | 2d | 0d |  |
| 1618 | 1.7.13.6 | Prueba hidráulica | 1d | 2026-10-22 | 2026-10-23 | 1614, 1615, 1616, 1617 | 2026-10-22 | 2026-10-23 | 1d | 0d |  |
| 1619 | 1.7.13.7 | Ramaleo sanitario exterior PVC 4 | 4d | 2026-10-17 | 2026-10-22 | 1610, 1611 | 2026-10-17 | 2026-10-22 | 4d | 0d |  |
| 1620 | 1.7.13.8 | Ramaleo sanitario exterior PVC 2 | 3d | 2026-10-19 | 2026-10-22 | 1619SS+1d | 2026-10-19 | 2026-10-22 | 3d | 0d |  |
| 1621 | 1.7.13.9 | Prueba sanitaria | 1d | 2026-10-22 | 2026-10-23 | 1619, 1620 | 2026-10-22 | 2026-10-23 | 1d | 0d |  |
| 1622 | 1.7.13.10 | Centro de carga muros PB | 4d | 2026-10-21 | 2026-10-26 | 1610FS+3d, 1611FS+3d | 2026-10-21 | 2026-10-26 | 4d | 2d |  |
| 1623 | 1.7.13.11 | Firme de concreto 8 cm | 4d | 2026-10-23 | 2026-10-28 | 1618, 1621, 1625 | 2026-10-23 | 2026-10-28 | 4d | 45d | 0d |
| 1624 | 1.7.13.12 | Curado de concreto | 1d | 2026-10-29 | 2026-10-29 | 1623 | 2026-10-29 | 2026-10-29 | 1d | 45d | 17d |
| 1625 | 1.7.13.13 | Cisterna 2800 L con instalación | 18d | 2026-09-24 | 2026-10-16 | 1601, 1607, 1608 | 2026-09-24 | 2026-10-16 | 18d | 51d | 0d |
| 1626 | 1.7.13.14 | Banqueta y huellas de concreto | 8d | 2026-10-31 | 2026-11-10 | 1618, 1621, 1659, 1714FS-2d, 1720 | 2026-10-31 | 2026-11-10 | 8d | 28d | 0d |
| 1627 | 1.7.13.15 | Curado de concreto | 1d | 2026-11-10 | 2026-11-11 | 1626 | 2026-11-10 | 2026-11-11 | 1d | 28d | 0d |
| 1628 | 1.7.13.16 | Número oficial | 1d | 2026-12-10 | 2026-12-11 | 1634, 1635 | 2026-12-10 | 2026-12-11 | 1d | 28d |  |
| 1629 | 1.7.13.17 | Detallado de rodapié exterior | 4d | 2026-10-27 | 2026-10-30 | 1632 | 2026-10-27 | 2026-10-30 | 4d | 60d |  |
| 1630 | 1.7.13.18 | Detallado de muros interiores | 4d | 2026-10-17 | 2026-10-22 | 1610, 1611 | 2026-10-17 | 2026-10-22 | 4d | 4d |  |

| ID | WBS | Task | Duration | Start | Finish | Predecessors | Baseline start | Baseline finish | Baseline duration | Total slack | Free slack |
| --- | --- | --- | --- | --- | --- | --- | --- | --- | --- | --- | --- |
| 1631 | 1.7.14 | **ACABADOS EN FACHADA A** | 47d | 2026-10-12 | 2026-12-10 |  | 2026-10-12 | 2026-12-10 | 47d | 29d |  |
| 1632 | 1.7.14.1 | Aplanado grueso fachada | 12d | 2026-10-12 | 2026-10-26 | 1604 | 2026-10-12 | 2026-10-26 | 12d | 59d | 0d |
| 1633 | 1.7.14.2 | Aplanado fino estuco fachada | 10d | 2026-10-20 | 2026-11-02 | 1632SS+7d | 2026-10-20 | 2026-11-02 | 10d | 59d |  |
| 1634 | 1.7.14.3 | Pintura acrílica 1-0102P | 8d | 2026-11-27 | 2026-12-08 | 1624FS+5d, 1627FS+12d | 2026-11-27 | 2026-12-08 | 8d | 30d | 2d |
| 1635 | 1.7.14.4 | Pintura acrílica 1-1404D | 10d | 2026-11-27 | 2026-12-10 | 1624FS+5d, 1627FS+12d | 2026-11-27 | 2026-12-10 | 10d | 28d | 0d |
| 1636 | 1.7.15 | **APLANADOS Y PINTURA** | 63d | 2026-10-17 | 2027-01-11 |  | 2026-10-17 | 2027-01-11 | 63d | 2d |  |
| 1637 | 1.7.15.1 | Yeso pulido en muros | 14d | 2026-10-28 | 2026-11-13 | 1622FS-1d, 1630, 1640FS-4d, 1694FS-2d, 1695, 1696, 1697, 1698, 1699FS-1d, 1700FS-1d, 1701FS-1d, 1702FS-1d, 1703FS-2d, 1704FS-2d, 1705FS-3d, 1708FS-1d, 1709FS-5d, 1710FS-5d, 1711FS-6d, 1712FS-2d, 1713FS-7d | 2026-10-28 | 2026-11-13 | 14d | 0d |  |
| 1638 | 1.7.15.2 | Pintura vinílica 699 Cottage White | 13d | 2026-12-21 | 2027-01-11 | 1645FS-2d, 1646FS-2d, 1657FS-2d, 1664, 1665, 1666, 1667, 1668, 1669, 1671, 1672, 1673, 1674, 1723, 1724, 1725, 1726 | 2026-12-21 | 2027-01-11 | 13d | 0d |  |
| 1639 | 1.7.15.3 | Pintura vinílica 691 Pacific Bungalow | 10d | 2026-12-09 | 2026-12-21 | 1645, 1646, 1657 | 2026-12-09 | 2026-12-21 | 10d | 20d |  |
| 1640 | 1.7.15.4 | Yeso pulido en plafones | 10d | 2026-10-17 | 2026-10-29 | 1610, 1611 | 2026-10-17 | 2026-10-29 | 10d | 2d |  |
| 1641 | 1.7.15.5 | Pintura vinílica Nano White | 7d | 2026-12-12 | 2026-12-21 | 1645FS+3d, 1646FS+3d, 1657FS+3d | 2026-12-12 | 2026-12-21 | 7d | 20d |  |
| 1642 | 1.7.15.6 | Perfilado de puertas y ventanas | 4d | 2026-11-02 | 2026-11-06 | 1637SS+4d | 2026-11-02 | 2026-11-06 | 4d | 55d |  |
| 1643 | 1.7.16 | **PISOS Y AZULEJOS** | 23d | 2026-11-09 | 2026-12-09 |  | 2026-11-09 | 2026-12-09 | 23d | 2d |  |
| 1644 | 1.7.16.1 | **AREA SOCIAL** | 15d | 2026-11-11 | 2026-12-01 |  | 2026-11-11 | 2026-12-01 | 15d | 0d |  |
| 1645 | 1.7.16.1.1 | Piso Moonside Crema 60x60 | 14d | 2026-11-11 | 2026-11-30 | 1637FS-2d, 1716, 1715 | 2026-11-11 | 2026-11-30 | 14d | 0d |  |
| 1646 | 1.7.16.1.2 | Zoclo piso 60x60 Moonside Crema | 5d | 2026-11-25 | 2026-12-01 | 1645FS-4d | 2026-11-25 | 2026-12-01 | 5d | 17d | 6d |
| 1647 | 1.7.16.2 | **BAÑOS** | 17d | 2026-11-09 | 2026-12-01 |  | 2026-11-09 | 2026-12-01 | 17d | 11d |  |
| 1648 | 1.7.16.2.1 | Piso Moonside Crema 60x60 | 4d | 2026-11-25 | 2026-11-30 | 1652 | 2026-11-25 | 2026-11-30 | 4d | 11d | 0d |
| 1649 | 1.7.16.2.2 | Zoclo piso 60x60 Moonside Crema | 2d | 2026-11-28 | 2026-12-01 | 1648FS-1d | 2026-11-28 | 2026-12-01 | 2d | 36d |  |
| 1650 | 1.7.16.2.3 | Piso porcelánico Acali 20x20 beige | 3d | 2026-11-25 | 2026-11-28 | 1652 | 2026-11-25 | 2026-11-28 | 3d | 38d |  |
| 1651 | 1.7.16.2.4 | Impermeabilización en regadera | 2d | 2026-11-18 | 2026-11-20 | 1637, 1653 | 2026-11-18 | 2026-11-20 | 2d | 11d | 0d |
| 1652 | 1.7.16.2.5 | Azulejo Moonside Crema 60x60 | 5d | 2026-11-19 | 2026-11-25 | 1651FS-1d, 1706, 1707, 1716 | 2026-11-19 | 2026-11-25 | 5d | 11d | 0d |
| 1653 | 1.7.16.2.6 | Fabricacion de nicho decorativo en baños | 6d | 2026-11-09 | 2026-11-18 | 1637FS-4d | 2026-11-09 | 2026-11-18 | 6d | 11d | 0d |
| 1654 | 1.7.16.2.7 | Sardinel en regadera | 4d | 2026-11-25 | 2026-11-30 | 1652 | 2026-11-25 | 2026-11-30 | 4d | 37d |  |

| ID | WBS | Task | Duration | Start | Finish | Predecessors | Baseline start | Baseline finish | Baseline duration | Total slack | Free slack |
| --- | --- | --- | --- | --- | --- | --- | --- | --- | --- | --- | --- |
| 1655 | 1.7.16.3 | **ESCALERA** | 9d | 2026-11-27 | 2026-12-09 |  | 2026-11-27 | 2026-12-09 | 9d | 0d |  |
| 1656 | 1.7.16.3.1 | Piso Moonside Crema 60x60 | 7d | 2026-11-27 | 2026-12-07 | 1637, 1645FS-2d | 2026-11-27 | 2026-12-07 | 7d | 0d |  |
| 1657 | 1.7.16.3.2 | Zoclo piso 60x60 Moonside Crema | 4d | 2026-12-03 | 2026-12-09 | 1656FS-2d | 2026-12-03 | 2026-12-09 | 4d | 0d |  |
| 1658 | 1.7.17 | **EXTERIOR** | 3d | 2026-10-23 | 2026-10-27 |  | 2026-10-23 | 2026-10-27 | 3d | 6d |  |
| 1659 | 1.7.17.1 | Rastrilleo, afine y nivelado de tierra | 3d | 2026-10-23 | 2026-10-27 | 1618, 1621 | 2026-10-23 | 2026-10-27 | 3d | 6d | 0d |
| 1660 | 1.7.18 | **SEGUNDA LIMPIEZA DE OBRA** | 4d | 2026-12-09 | 2026-12-14 |  | 2026-12-09 | 2026-12-14 | 4d | 18d |  |
| 1661 | 1.7.18.1 | Segunda limpieza de obra | 2d | 2026-12-09 | 2026-12-11 | 1656, 1657 | 2026-12-09 | 2026-12-11 | 2d | 18d | 0d |
| 1662 | 1.7.18.2 | Segunda carga y acarreo de escombro | 2d | 2026-12-11 | 2026-12-14 | 1661 | 2026-12-11 | 2026-12-14 | 2d | 18d |  |
| 1663 | 1.7.19 | **CANCELERIA PUERTAS Y VENTANAS DE ALUMINIO** | 13d | 2026-11-27 | 2026-12-14 |  | 2026-11-27 | 2026-12-14 | 13d | 5d |  |
| 1664 | 1.7.19.1 | Puerta ventana P-05 corrediza | 7d | 2026-11-30 | 2026-12-09 | 1637, 1645 | 2026-11-30 | 2026-12-09 | 7d | 9d |  |
| 1665 | 1.7.19.2 | Ventana corrediza V-01 | 4d | 2026-11-27 | 2026-12-02 | 1637FS+10d | 2026-11-27 | 2026-12-02 | 4d | 14d |  |
| 1666 | 1.7.19.3 | Ventana corrediza V-03 | 4d | 2026-11-30 | 2026-12-04 | 1637FS+12d | 2026-11-30 | 2026-12-04 | 4d | 12d |  |
| 1667 | 1.7.19.4 | Ventana corrediza V-05 | 4d | 2026-11-30 | 2026-12-04 | 1637FS+12d | 2026-11-30 | 2026-12-04 | 4d | 12d |  |
| 1668 | 1.7.19.5 | Ventana corrediza tipo XO | 4d | 2026-12-03 | 2026-12-09 | 1637FS+10d, 1645FS+3d | 2026-12-03 | 2026-12-09 | 4d | 9d |  |
| 1669 | 1.7.19.6 | Ventana fija escalera | 6d | 2026-12-07 | 2026-12-14 | 1637FS+7d, 1645FS+2d, 1656 | 2026-12-07 | 2026-12-14 | 6d | 5d |  |
| 1670 | 1.7.20 | **CARPINTERIA, PUERTAS EXTERIORES E INTERIORES** | 9d | 2026-12-09 | 2026-12-19 |  | 2026-12-09 | 2026-12-19 | 9d | 0d |  |
| 1671 | 1.7.20.1 | Puerta P-01 de seguridad | 5d | 2026-12-09 | 2026-12-15 | 1657 | 2026-12-09 | 2026-12-15 | 5d | 4d |  |
| 1672 | 1.7.20.2 | Puerta P-03 interior | 8d | 2026-12-09 | 2026-12-18 | 1657 | 2026-12-09 | 2026-12-18 | 8d | 1d |  |
| 1673 | 1.7.20.3 | Puerta P-02 interior | 8d | 2026-12-09 | 2026-12-18 | 1657 | 2026-12-09 | 2026-12-18 | 8d | 1d |  |
| 1674 | 1.7.20.4 | Puerta exterior lavandería | 4d | 2026-12-15 | 2026-12-19 | 1657FS+5d | 2026-12-15 | 2026-12-19 | 4d | 0d |  |
| 1675 | 1.7.21 | **INSTALACION ELECTRICA** | 19d | 2026-11-05 | 2026-11-30 |  | 2026-11-05 | 2026-11-30 | 19d | 29d |  |
| 1676 | 1.7.21.1 | Alimentación eléctrica base a centro de carga | 5d | 2026-11-13 | 2026-11-21 | 1622, 1637 | 2026-11-13 | 2026-11-21 | 5d | 33d | 0d |
| 1677 | 1.7.21.2 | Interruptor termomagnético 1x15 A | 1d | 2026-11-21 | 2026-11-23 | 1676 | 2026-11-21 | 2026-11-23 | 1d | 33d | 4d |
| 1678 | 1.7.21.3 | Interruptor termomagnético 1x20 A | 1d | 2026-11-21 | 2026-11-23 | 1676 | 2026-11-21 | 2026-11-23 | 1d | 33d | 4d |
| 1679 | 1.7.21.4 | Interruptor termomagnético 2x20 A | 1d | 2026-11-21 | 2026-11-23 | 1676 | 2026-11-21 | 2026-11-23 | 1d | 33d | 4d |
| 1680 | 1.7.21.5 | Salida para apagador 3 vías | 4d | 2026-11-09 | 2026-11-13 | 1610, 1637FS-4d | 2026-11-09 | 2026-11-13 | 4d | 29d | 0d |
| 1681 | 1.7.21.6 | Salida para apagador triple | 3d | 2026-11-13 | 2026-11-19 | 1610, 1611, 1637 | 2026-11-13 | 2026-11-19 | 3d | 33d | 0d |
| 1682 | 1.7.21.7 | Salida para apagador doble | 3d | 2026-11-19 | 2026-11-23 | 1680, 1681 | 2026-11-19 | 2026-11-23 | 3d | 33d | 4d |
| 1683 | 1.7.21.8 | Salida para apagador sencillo | 3d | 2026-11-13 | 2026-11-19 | 1680 | 2026-11-13 | 2026-11-19 | 3d | 36d | 7d |
| 1684 | 1.7.21.9 | Salida de alumbrado en losa | 5d | 2026-11-13 | 2026-11-21 | 1680 | 2026-11-13 | 2026-11-21 | 5d | 31d | 0d |
| 1685 | 1.7.21.10 | Salida de alumbrado en muro | 4d | 2026-11-13 | 2026-11-20 | 1680 | 2026-11-13 | 2026-11-20 | 4d | 35d | 6d |
| 1686 | 1.7.21.11 | Salida para contacto 220 V | 3d | 2026-11-18 | 2026-11-21 | 1680FS+2d | 2026-11-18 | 2026-11-21 | 3d | 29d | 0d |
| 1687 | 1.7.21.12 | Salida para contacto doble | 5d | 2026-11-18 | 2026-11-24 | 1680FS+2d | 2026-11-18 | 2026-11-24 | 5d | 32d | 3d |
| 1688 | 1.7.21.13 | Salida para contacto doble área húmeda | 2d | 2026-11-21 | 2026-11-24 | 1686 | 2026-11-21 | 2026-11-24 | 2d | 32d | 3d |
| 1689 | 1.7.21.14 | Salida TV / telefonía / intercom | 4d | 2026-11-21 | 2026-11-26 | 1686 | 2026-11-21 | 2026-11-26 | 4d | 30d | 1d |
| 1690 | 1.7.21.15 | Extractor 4 baño | 5d | 2026-11-21 | 2026-11-27 | 1686 | 2026-11-21 | 2026-11-27 | 5d | 29d | 0d |
| 1691 | 1.7.21.16 | Prueba eléctrica | 2d | 2026-11-27 | 2026-11-30 | 1676, 1677, 1678, 1679, 1680, 1681, 1682, 1683, 1684, 1685, 1686, 1687, 1688, 1689, 1690, 1692, 1739, 1740, 1741 | 2026-11-27 | 2026-11-30 | 2d | 29d |  |
| 1692 | 1.7.21.17 | Murete convencional | 4d | 2026-11-05 | 2026-11-10 | 1626FS-4d | 2026-11-05 | 2026-11-10 | 4d | 42d | 13d |

| ID | WBS | Task | Duration | Start | Finish | Predecessors | Baseline start | Baseline finish | Baseline duration | Total slack | Free slack |
| --- | --- | --- | --- | --- | --- | --- | --- | --- | --- | --- | --- |
| 1693 | 1.7.22 | **INSTALACIÓN HIDRO-SANITARIA** | 11d | 2026-10-23 | 2026-11-06 |  | 2026-10-23 | 2026-11-06 | 11d | 0d |  |
| 1694 | 1.7.22.1 | Tubo PVC 3/4 red de condensados | 5d | 2026-10-23 | 2026-10-29 | 1618 | 2026-10-23 | 2026-10-29 | 5d | 0d |  |
| 1695 | 1.7.22.2 | Caja PVC para lavadora | 3d | 2026-10-23 | 2026-10-27 | 1618 | 2026-10-23 | 2026-10-27 | 3d | 0d |  |
| 1696 | 1.7.22.3 | Salida para secadora PVC 4 | 3d | 2026-10-23 | 2026-10-27 | 1621 | 2026-10-23 | 2026-10-27 | 3d | 0d |  |
| 1697 | 1.7.22.4 | Salida hidráulica para boiler | 2d | 2026-10-23 | 2026-10-26 | 1618 | 2026-10-23 | 2026-10-26 | 2d | 1d |  |
| 1698 | 1.7.22.5 | Salida hidráulica para llave de jardín | 3d | 2026-10-23 | 2026-10-27 | 1618 | 2026-10-23 | 2026-10-27 | 3d | 0d |  |
| 1699 | 1.7.22.6 | Salida hidráulica para lavabo | 4d | 2026-10-23 | 2026-10-28 | 1618 | 2026-10-23 | 2026-10-28 | 4d | 0d |  |
| 1700 | 1.7.22.7 | Salida hidráulica para purificación | 4d | 2026-10-23 | 2026-10-28 | 1618 | 2026-10-23 | 2026-10-28 | 4d | 0d |  |
| 1701 | 1.7.22.8 | Salida sanitaria para lavabo | 2d | 2026-10-27 | 2026-10-28 | 1618FS+2d | 2026-10-27 | 2026-10-28 | 2d | 0d |  |
| 1702 | 1.7.22.9 | Salida hidráulica para lavadero | 2d | 2026-10-27 | 2026-10-28 | 1618FS+2d | 2026-10-27 | 2026-10-28 | 2d | 0d |  |
| 1703 | 1.7.22.10 | Salida sanitaria para lavadero | 2d | 2026-10-28 | 2026-10-29 | 1618FS+3d | 2026-10-28 | 2026-10-29 | 2d | 0d |  |
| 1704 | 1.7.22.11 | Salida hidráulica para lavadora | 2d | 2026-10-28 | 2026-10-29 | 1618FS+3d | 2026-10-28 | 2026-10-29 | 2d | 0d |  |
| 1705 | 1.7.22.12 | Salida sanitaria para lavadora | 2d | 2026-10-29 | 2026-10-30 | 1621FS+4d | 2026-10-29 | 2026-10-30 | 2d | 0d |  |
| 1706 | 1.7.22.13 | Salida hidráulica para regadera | 5d | 2026-10-29 | 2026-11-04 | 1618FS+4d | 2026-10-29 | 2026-11-04 | 5d | 5d | 0d |
| 1707 | 1.7.22.14 | Salida sanitaria para regadera | 4d | 2026-10-29 | 2026-11-03 | 1621FS+4d | 2026-10-29 | 2026-11-03 | 4d | 6d | 2d |
| 1708 | 1.7.22.15 | Salida hidráulica para WC | 2d | 2026-10-27 | 2026-10-28 | 1621FS+2d | 2026-10-27 | 2026-10-28 | 2d | 0d |  |
| 1709 | 1.7.22.16 | Salida sanitaria para WC | 4d | 2026-10-29 | 2026-11-03 | 1621FS+4d | 2026-10-29 | 2026-11-03 | 4d | 0d |  |
| 1710 | 1.7.22.17 | Salida hidráulica para zinc | 4d | 2026-10-29 | 2026-11-03 | 1621FS+4d | 2026-10-29 | 2026-11-03 | 4d | 0d |  |
| 1711 | 1.7.22.18 | Salida sanitaria para zinc | 3d | 2026-10-31 | 2026-11-04 | 1621FS+6d | 2026-10-31 | 2026-11-04 | 3d | 0d |  |
| 1712 | 1.7.22.19 | Tubo para ventila de baño 2 | 5d | 2026-10-23 | 2026-10-29 | 1694SS | 2026-10-23 | 2026-10-29 | 5d | 0d |  |
| 1713 | 1.7.22.20 | Tubo para minisplit PVC 3 | 5d | 2026-10-30 | 2026-11-05 | 1712 | 2026-10-30 | 2026-11-05 | 5d | 0d |  |
| 1714 | 1.7.22.21 | Cuadro de medición | 5d | 2026-10-28 | 2026-11-03 | 1659 | 2026-10-28 | 2026-11-03 | 5d | 6d | 0d |
| 1715 | 1.7.22.22 | Prueba sanitaria | 1d | 2026-11-05 | 2026-11-06 | 1696, 1701, 1703, 1705, 1707, 1709, 1712, 1713 | 2026-11-05 | 2026-11-06 | 1d | 4d |  |
| 1716 | 1.7.22.23 | Prueba hidráulica | 1d | 2026-11-04 | 2026-11-05 | 1694, 1697, 1698, 1699, 1700, 1702, 1704, 1706, 1708, 1710, 1714, 1717, 1718 | 2026-11-04 | 2026-11-05 | 1d | 5d |  |
| 1717 | 1.7.22.24 | Salida hidráulica para tanque hidroneumático | 3d | 2026-10-28 | 2026-10-30 | 1659 | 2026-10-28 | 2026-10-30 | 3d | 8d | 3d |
| 1718 | 1.7.22.25 | Salida hidráulica para Active Driver | 3d | 2026-10-28 | 2026-10-30 | 1659 | 2026-10-28 | 2026-10-30 | 3d | 8d | 3d |

| ID | WBS | Task | Duration | Start | Finish | Predecessors | Baseline start | Baseline finish | Baseline duration | Total slack | Free slack |
| --- | --- | --- | --- | --- | --- | --- | --- | --- | --- | --- | --- |
| 1719 | 1.7.23 | **INSTALACION DE GAS** | 8d | 2026-10-21 | 2026-10-30 |  | 2026-10-21 | 2026-10-30 | 8d | 28d |  |
| 1720 | 1.7.23.1 | Ramaleo para gas 1/2 | 5d | 2026-10-26 | 2026-10-30 | 1659FS-2d, 1721 | 2026-10-26 | 2026-10-30 | 5d | 28d | 0d |
| 1721 | 1.7.23.2 | Excavación a mano material tipo B | 3d | 2026-10-21 | 2026-10-24 | 1659FF-2d | 2026-10-21 | 2026-10-24 | 3d | 28d | 0d |
| 1722 | 1.7.24 | **MUEBLES SANITARIOS** | 29d | 2026-11-30 | 2027-01-11 |  | 2026-11-30 | 2027-01-11 | 29d | 0d |  |
| 1723 | 1.7.24.1 | WC one piece Smart Corona | 2d | 2026-11-30 | 2026-12-02 | 1645, 1648, 1715, 1716 | 2026-11-30 | 2026-12-02 | 2d | 14d |  |
| 1724 | 1.7.24.2 | Lavabo Tarento Vanity | 4d | 2026-11-30 | 2026-12-04 | 1645, 1648, 1652, 1715, 1716 | 2026-11-30 | 2026-12-04 | 4d | 12d |  |
| 1725 | 1.7.24.3 | Regadera y monomando Thames | 3d | 2026-12-02 | 2026-12-07 | 1645, 1648FS+2d, 1652FS+2d, 1715, 1716 | 2026-12-02 | 2026-12-07 | 3d | 11d |  |
| 1726 | 1.7.24.4 | Coladera cuadrada para inserto cerámico | 2d | 2026-12-03 | 2026-12-07 | 1648FS+3d, 1652, 1716 | 2026-12-03 | 2026-12-07 | 2d | 11d |  |
| 1727 | 1.7.24.5 | Toallero argolla Thames | 1d | 2027-01-08 | 2027-01-11 | 1638FS-1d | 2027-01-08 | 2027-01-11 | 1d | 0d |  |
| 1728 | 1.7.24.6 | Toallero barra Thames | 1d | 2027-01-08 | 2027-01-11 | 1638FS-1d | 2027-01-08 | 2027-01-11 | 1d | 0d |  |
| 1729 | 1.7.24.7 | Portapapel Thames | 1d | 2027-01-08 | 2027-01-11 | 1638FS-1d | 2027-01-08 | 2027-01-11 | 1d | 0d |  |
| 1730 | 1.7.24.8 | Gancho percha Thames | 1d | 2027-01-08 | 2027-01-11 | 1638FS-1d | 2027-01-08 | 2027-01-11 | 1d | 0d |  |
| 1731 | 1.7.25 | **EQUIPAMIENTO** | 6d | 2026-10-15 | 2026-10-22 |  | 2026-10-15 | 2026-10-22 | 6d | 59d |  |
| 1732 | 1.7.25.1 | Electronivel Rotoplas 5 m | 2d | 2026-10-16 | 2026-10-19 | 1737 | 2026-10-16 | 2026-10-19 | 2d | 62d |  |
| 1733 | 1.7.25.2 | Manómetro | 1d | 2026-10-16 | 2026-10-17 | 1737 | 2026-10-16 | 2026-10-17 | 1d | 63d |  |
| 1734 | 1.7.25.3 | Interruptor de presión 30-50 PSI | 1d | 2026-10-16 | 2026-10-17 | 1737 | 2026-10-16 | 2026-10-17 | 1d | 63d |  |
| 1735 | 1.7.25.4 | Tanque hidroneumático FPS-24LX | 3d | 2026-10-16 | 2026-10-20 | 1737 | 2026-10-16 | 2026-10-20 | 3d | 59d | 0d |
| 1736 | 1.7.25.5 | Bomba sumergible Dominator 1.2 HP | 2d | 2026-10-20 | 2026-10-22 | 1735 | 2026-10-20 | 2026-10-22 | 2d | 59d |  |
| 1737 | 1.7.25.6 | Cisterna prefabricada 2800 L | 1d | 2026-10-15 | 2026-10-16 | 1625FF | 2026-10-15 | 2026-10-16 | 1d | 59d | 0d |
| 1738 | 1.7.26 | **LUMINARIAS** | 3d | 2026-11-21 | 2026-11-25 |  | 2026-11-21 | 2026-11-25 | 3d | 31d |  |
| 1739 | 1.7.26.1 | Roseta de cerámica para luminaria | 3d | 2026-11-21 | 2026-11-25 | 1684 | 2026-11-21 | 2026-11-25 | 3d | 31d | 2d |
| 1740 | 1.7.26.2 | Spot Brighton | 3d | 2026-11-21 | 2026-11-25 | 1684 | 2026-11-21 | 2026-11-25 | 3d | 31d | 2d |
| 1741 | 1.7.26.3 | Arbotante bidireccional 12W | 2d | 2026-11-21 | 2026-11-24 | 1684 | 2026-11-21 | 2026-11-24 | 2d | 32d | 3d |
| 1742 | 1.7.27 | **TERCER LIMPIEZA DE OBRA** | 8d | 2027-01-11 | 2027-01-20 |  | 2027-01-11 | 2027-01-20 | 8d | 0d |  |
| 1743 | 1.7.27.1 | Limpieza fina para entrega | 5d | 2027-01-11 | 2027-01-16 | 1638, 1662, 1669, 1674, 1691, 1715, 1716, 1727, 1728, 1729, 1730, 1732, 1733, 1734, 1735, 1736, 1747 | 2027-01-11 | 2027-01-16 | 5d | 0d |  |
| 1744 | 1.7.27.2 | Tercera limpieza de obra | 4d | 2027-01-13 | 2027-01-18 | 1743FS-3d | 2027-01-13 | 2027-01-18 | 4d | 0d |  |
| 1745 | 1.7.27.3 | Tercera carga y acarreo de escombro | 4d | 2027-01-15 | 2027-01-20 | 1744FS-2d | 2027-01-15 | 2027-01-20 | 4d | 0d |  |

| ID | WBS | Task | Duration | Start | Finish | Predecessors | Baseline start | Baseline finish | Baseline duration | Total slack |
| --- | --- | --- | --- | --- | --- | --- | --- | --- | --- | --- |
| 1746 | 1.7.28 | **OBRA EXTERIOR - BARDA** | 18d | 2026-10-28 | 2026-11-20 |  | 2026-10-28 | 2026-11-20 | 18d | 37d |
| 1747 | 1.7.28.1 | Barda de block aparente | 18d | 2026-10-28 | 2026-11-20 | 1659 | 2026-10-28 | 2026-11-20 | 18d | 37d |
